Schedule from MS Project, 2012-05-15 to 2012-05-28.

## Calendars

- 标准: Mon-Fri 08:00-12:00, 13:00-17:00; Sat-Sun off.

## Resources

| Resource |
| --- |
| 琦 |
| 夏 |
| 诚 |
| 庆 |
| 。2 |
| .2 |
| .3 |
| 宋文卿 |
| 余晓丽 |
| 王烨 |

## Schedule

| ID | WBS | Task | Duration | Start | Finish | Predecessors | Total slack | Free slack | Constraint | Resources | Work |
| --- | --- | --- | --- | --- | --- | --- | --- | --- | --- | --- | --- |
| 1 | 1 | **上线前优化\UI与支持** | 7.5d? | 2012-05-17 08:00 | 2012-05-28 12:00 |  | 0d |  |  |  | 318.4h |
| 2 | 1.1 | **UI表现优化** | 7.5d? | 2012-05-17 08:00 | 2012-05-28 12:00 |  | 0d |  |  |  | 318.4h |
| 3 | 1.1.1 | **佣兵面板** | 2.2d? | 2012-05-18 08:00 | 2012-05-22 09:36 |  | 4.3d |  |  |  | 13.6h |
| 4 | 1.1.1.1 | 解锁时有解锁的特效 | 0.2d | 2012-05-18 08:00 | 2012-05-18 09:36 |  | 6.1d | 1.8d | start no earlier than 2012-05-18 08:00 | 宋文卿 | 1.6h |
| 5 | 1.1.1.2 | 解雇确认面板内会有佣兵头像和一句话 | 0.2d | 2012-05-22 08:00 | 2012-05-22 09:36 | 4 | 4.3d |  | start no earlier than 2012-05-22 08:00 | 余晓丽 | 1.6h |
| 6 | 1.1.1.3 | 锁的样子修改 | 1d? | 2012-05-18 08:00 | 2012-05-18 17:00 |  | 5.5d |  | start no earlier than 2012-05-18 08:00 |  |  |
| 7 | 1.1.1.4 | 布阵面板人放入一个格子时会在该格播放一个动效 | 0.3d | 2012-05-18 08:00 | 2012-05-18 10:24 |  | 6.2d |  | start no earlier than 2012-05-18 08:00 | 宋文卿 | 2.4h |
| 8 | 1.1.1.5 | 布阵面板需要添加一个背景图 | 1d? | 2012-05-18 08:00 | 2012-05-18 17:00 |  | 5.5d |  | start no earlier than 2012-05-18 08:00 |  |  |
| 9 | 1.1.1.6 | 已出阵佣兵背景框颜色应不同 | 1d? | 2012-05-18 08:00 | 2012-05-18 17:00 |  | 5.5d |  | start no earlier than 2012-05-18 08:00 | 余晓丽 | 8h |
| 10 | 1.1.2 | **仓库、商店面板** | 1d? | 2012-05-18 08:00 | 2012-05-18 17:00 |  | 5.5d |  |  |  | 24h |
| 11 | 1.1.2.1 | 人民币道具强化 | 1d? | 2012-05-18 08:00 | 2012-05-18 17:00 |  | 5.5d |  | start no earlier than 2012-05-18 08:00 | 王烨 | 8h |
| 12 | 1.1.2.2 | 使用道具时，鼠标移到的人物面板要有区分 | 1d? | 2012-05-18 08:00 | 2012-05-18 17:00 |  | 5.5d |  | start no earlier than 2012-05-18 08:00 | 余晓丽 | 8h |
| 13 | 1.1.2.3 | 购买成功后作金币和钻石长翅膀飞掉的动画 | 1d? | 2012-05-18 08:00 | 2012-05-18 17:00 |  | 5.5d |  | start no earlier than 2012-05-18 08:00 | 宋文卿 | 8h |
| 14 | 1.1.3 | **订单** | 3d? | 2012-05-18 08:00 | 2012-05-22 17:00 |  | 3.5d |  |  |  | 13.6h |
| 15 | 1.1.3.1 | 接受订单面板：文字放大 | 0.2d | 2012-05-18 08:00 | 2012-05-18 09:36 |  | 6.3d |  | start no earlier than 2012-05-18 08:00 | 余晓丽 | 1.6h |
| 16 | 1.1.3.2 | 接受订单的特效削弱 | 0.1d | 2012-05-18 08:00 | 2012-05-18 08:48 |  | 6.4d |  | start no earlier than 2012-05-18 08:00 | 余晓丽 | 0.8h |
| 17 | 1.1.3.3 | 将主UI中订单收入面板移入我的订单（酌情修改） | 1d? | 2012-05-22 08:00 | 2012-05-22 17:00 |  | 3.5d |  | start no earlier than 2012-05-22 08:00 | 余晓丽 | 8h |
| 18 | 1.1.3.4 | 交付订单的特效 | 0.2d | 2012-05-21 08:00 | 2012-05-21 09:36 |  | 5.3d |  | start no earlier than 2012-05-21 08:00 | 宋文卿 | 1.6h |
| 19 | 1.1.3.5 | 合成完成的收取图标（静态） 制作 | 0.2d | 2012-05-18 08:00 | 2012-05-18 09:36 |  | 6.3d |  | start no earlier than 2012-05-18 08:00 | 王烨 | 1.6h |
| 20 | 1.1.4 | **战斗模块** | 2d? | 2012-05-18 08:00 | 2012-05-21 17:00 |  | 4.5d |  |  |  | 41.6h |
| 21 | 1.1.4.1 | 战斗胜利、失败动画 | 0.2d | 2012-05-21 08:00 | 2012-05-21 09:36 |  | 5.3d |  | start no earlier than 2012-05-21 08:00 | 宋文卿 | 1.6h |
| 22 | 1.1.4.2 | 战斗胜利面板头部文字改为胜利了 | 1d? | 2012-05-18 08:00 | 2012-05-18 17:00 |  | 5.5d |  | start no earlier than 2012-05-18 08:00 | 余晓丽 | 8h |
| 23 | 1.1.4.3 | 战斗胜利面板加值数字改 醒目 | 1d? | 2012-05-18 08:00 | 2012-05-18 17:00 |  | 5.5d |  | start no earlier than 2012-05-18 08:00 |  | 8h |
| 24 | 1.1.4.4 | 战斗胜利面板 顶部王冠换掉 | 1d? | 2012-05-18 08:00 | 2012-05-18 17:00 |  | 5.5d |  | start no earlier than 2012-05-18 08:00 | 余晓丽 | 8h |
| 25 | 1.1.4.5 | 进入战斗时的特效 | 1d? | 2012-05-21 08:00 | 2012-05-21 17:00 |  | 4.5d |  | start no earlier than 2012-05-21 08:00 | 宋文卿 | 8h |
| 26 | 1.1.4.6 | 战斗时的物品栏翻页按钮位置调整 | 1d? | 2012-05-18 08:00 | 2012-05-18 17:00 |  | 5.5d |  | start no earlier than 2012-05-18 08:00 | 余晓丽 | 8h |

| ID | WBS | Task | Duration | Start | Finish | Predecessors | Total slack | Free slack | Constraint | Resources | Work |
| --- | --- | --- | --- | --- | --- | --- | --- | --- | --- | --- | --- |
| 27 | 1.1.5 | **人物创建** | 2d? | 2012-05-18 08:00 | 2012-05-21 17:00 |  | 4.5d |  |  |  | 32h |
| 28 | 1.1.5.1 | 任务头像框美化 | 1d? | 2012-05-18 08:00 | 2012-05-18 17:00 |  | 4.5d | 0d | start no earlier than 2012-05-18 08:00 | 余晓丽 | 8h |
| 29 | 1.1.5.2 | 头像框选中有变化 | 1d? | 2012-05-18 08:00 | 2012-05-18 17:00 |  | 5.5d |  | start no earlier than 2012-05-18 08:00 | 余晓丽 | 8h |
| 30 | 1.1.5.3 | 头像框边线作动效 | 1d? | 2012-05-21 08:00 | 2012-05-21 17:00 | 28 | 4.5d |  | start no earlier than 2012-05-18 08:00 | 宋文卿 | 8h |
| 31 | 1.1.5.4 | “进入游戏”按钮选中时内部有效果 | 1d? | 2012-05-18 08:00 | 2012-05-18 17:00 |  | 5.5d |  | start no earlier than 2012-05-18 08:00 | 宋文卿 | 8h |
| 32 | 1.1.6 | 场景切换动画 | 0.5d | 2012-05-28 08:00 | 2012-05-28 12:00 |  | 0d |  | start no earlier than 2012-05-28 08:00 | 宋文卿 | 4h |
| 33 | 1.1.7 | **图鉴面板** | 1d? | 2012-05-18 08:00 | 2012-05-18 17:00 |  | 5.5d |  |  |  | 40h |
| 34 | 1.1.7.1 | 翻页动画（向左翻和向右翻） | 1d? | 2012-05-18 08:00 | 2012-05-18 17:00 |  | 5.5d |  | start no earlier than 2012-05-18 08:00 | 宋文卿 | 8h |
| 35 | 1.1.7.2 | “返回目录”按钮放至左侧或左下角，做成书签的形式 | 1d? | 2012-05-18 08:00 | 2012-05-18 17:00 |  | 5.5d |  | start no earlier than 2012-05-18 08:00 | 余晓丽 | 8h |
| 36 | 1.1.7.3 | 书本目录条目被选中时的色带样式与颜色变化（可透明） | 1d? | 2012-05-18 08:00 | 2012-05-18 17:00 |  | 5.5d |  | start no earlier than 2012-05-18 08:00 | 余晓丽 | 8h |
| 37 | 1.1.7.4 | 制造按钮文字改为打开工作台 | 1d? | 2012-05-18 08:00 | 2012-05-18 17:00 |  | 5.5d |  | start no earlier than 2012-05-18 08:00 | 余晓丽 | 8h |
| 38 | 1.1.7.5 | 当工作台使用中，按钮上放出现“工作台使用中的文字” | 1d? | 2012-05-18 08:00 | 2012-05-18 17:00 |  | 5.5d |  | start no earlier than 2012-05-18 08:00 | 余晓丽 | 8h |
| 39 | 1.1.8 | **合成模块** | 3d? | 2012-05-18 08:00 | 2012-05-22 17:00 |  | 3.5d |  |  |  | 37.6h |
| 40 | 1.1.8.1 | 材料足时魔法阵的转动 | 0.2d | 2012-05-18 08:00 | 2012-05-18 09:36 |  | 6.3d |  | start no earlier than 2012-05-18 08:00 | 宋文卿 | 1.6h |
| 41 | 1.1.8.2 | 开始合成时有一个动画 | 0.1d | 2012-05-18 08:00 | 2012-05-18 08:48 |  | 6.4d |  | start no earlier than 2012-05-18 08:00 | 宋文卿 | 0.8h |
| 42 | 1.1.8.3 | 合成面板中合成位置的颜色加深 | 1d? | 2012-05-22 08:00 | 2012-05-22 17:00 |  | 3.5d |  | start no earlier than 2012-05-22 08:00 | 余晓丽 | 8h |
| 43 | 1.1.8.4 | 合成中面板 ，立刻完成增加动画 | 0.2d | 2012-05-18 08:00 | 2012-05-18 09:36 |  | 6.3d |  | start no earlier than 2012-05-18 08:00 | 宋文卿 | 1.6h |
| 44 | 1.1.8.5 | 合成完成的收取图标（静态） 制作 | 0.2d | 2012-05-18 08:00 | 2012-05-18 09:36 |  | 6.3d |  | start no earlier than 2012-05-18 08:00 | 王烨 | 1.6h |
| 45 | 1.1.8.6 | 工作桌界面：立刻完成按钮加动效 | 1d? | 2012-05-18 08:00 | 2012-05-18 17:00 |  | 5.5d |  | start no earlier than 2012-05-18 08:00 | 宋文卿 | 8h |
| 46 | 1.1.8.7 | 工作桌界面：沙漏图标改明显，相关文字放大 | 1d? | 2012-05-18 08:00 | 2012-05-18 17:00 |  | 5.5d |  | start no earlier than 2012-05-18 08:00 | 余晓丽 | 8h |
| 47 | 1.1.8.8 | 工作桌界面：剩余时间前秒表图标改为敲打动画（如铁锤） | 1d? | 2012-05-18 08:00 | 2012-05-18 17:00 |  | 5.5d |  | start no earlier than 2012-05-18 08:00 | 宋文卿 | 8h |
| 48 | 1.1.9 | **招聘（酒馆）面板** | 1d? | 2012-05-18 08:00 | 2012-05-18 17:00 |  | 2d | 0d |  |  | 32h |
| 49 | 1.1.9.1 | 人物星级的星星做成动态 | 1d? | 2012-05-18 08:00 | 2012-05-18 17:00 |  | 2d |  | start no earlier than 2012-05-18 08:00 | 宋文卿 | 8h |
| 50 | 1.1.9.2 | 技能图标的位置和大小调整 | 1d? | 2012-05-18 08:00 | 2012-05-18 17:00 |  | 2d |  | start no earlier than 2012-05-18 08:00 | 余晓丽 | 8h |
| 51 | 1.1.9.3 | 台面上不要只有一个酒杯 | 1d? | 2012-05-18 08:00 | 2012-05-18 17:00 |  | 2d |  | start no earlier than 2012-05-18 08:00 | 余晓丽 | 8h |
| 52 | 1.1.9.4 | 佣兵位置刷新时间数字要加大 | 1d? | 2012-05-18 08:00 | 2012-05-18 17:00 |  | 2d |  | start no earlier than 2012-05-18 08:00 | 余晓丽 | 8h |

| ID | WBS | Task | Duration | Start | Finish | Predecessors | Total slack | Free slack | Constraint | Resources | Work |
| --- | --- | --- | --- | --- | --- | --- | --- | --- | --- | --- | --- |
| 53 | 1.1.10 | **DIY主角家** | 1d? | 2012-05-21 08:00 | 2012-05-21 17:00 | 48 | 2d | 0d |  |  | 8h |
| 54 | 1.1.10.1 | 炼金台放至到场景中做光效（同佣兵阵型）2*2 | 1d? | 2012-05-21 08:00 | 2012-05-21 17:00 |  | 2d |  | start no earlier than 2012-05-18 08:00 | 宋文卿 | 8h |
| 55 | 1.1.11 | **教堂界面** | 2d? | 2012-05-22 08:00 | 2012-05-23 17:00 | 53 | 2d | 0d |  |  | 48h |
| 56 | 1.1.11.1 | 书本改称魔法书的样子（） | 1d? | 2012-05-22 08:00 | 2012-05-22 17:00 |  | 3d |  | start no earlier than 2012-05-18 08:00 | 王烨 | 8h |
| 57 | 1.1.11.2 | 晋级图标更改（另加箭头向上的小动效） | 1d? | 2012-05-22 08:00 | 2012-05-22 17:00 |  | 3d |  | start no earlier than 2012-05-18 08:00 | 王烨 | 8h |
| 58 | 1.1.11.3 | 选项按钮鼠标移上时有变色 | 1d? | 2012-05-22 08:00 | 2012-05-22 17:00 |  | 3d |  | start no earlier than 2012-05-18 08:00 | 余晓丽 | 8h |
| 59 | 1.1.11.4 | 晋级窗口排版（决定方头像还是全身） | 1d? | 2012-05-22 08:00 | 2012-05-22 17:00 |  | 2d | 0d | start no earlier than 2012-05-18 08:00 | 余晓丽 | 8h |
| 60 | 1.1.11.5 | 成功晋级后，作围绕主角的光效 | 1d? | 2012-05-23 08:00 | 2012-05-23 17:00 | 59 | 2d |  | start no earlier than 2012-05-18 08:00 | 宋文卿 | 8h |
| 61 | 1.1.11.6 | 点击祈祷后的动效 | 1d? | 2012-05-22 08:00 | 2012-05-22 17:00 |  | 3d |  | start no earlier than 2012-05-18 08:00 | 宋文卿 | 8h |
| 62 | 1.1.12 | **场景相关** | 0.5d | 2012-05-24 08:00 | 2012-05-24 12:00 | 55 | 2d |  |  |  | 4h |
| 63 | 1.1.12.1 | 场景切换打开幕布后，显示场景名动画 | 0.5d | 2012-05-24 08:00 | 2012-05-24 12:00 |  | 2d |  | start no earlier than 2012-05-17 08:00 | 宋文卿 | 4h |
| 64 | 1.1.13 | **学习和更换技能模块** | 2d? | 2012-05-17 08:00 | 2012-05-18 17:00 |  | 5.5d |  |  |  | 9.6h |
| 65 | 1.1.13.1 | 点击学习技能时的效果 | 0.2d | 2012-05-17 08:00 | 2012-05-17 09:36 |  | 7.3d |  | start no earlier than 2012-05-17 08:00 |  | 1.6h |
| 66 | 1.1.13.2 | 学习后相应窗口变亮一下的效果 | 1d? | 2012-05-18 08:00 | 2012-05-18 17:00 |  | 5.5d |  | start no earlier than 2012-05-18 08:00 | 宋文卿 | 8h |
| 67 | 1.1.14 | **主UI** | 3d? | 2012-05-18 08:00 | 2012-05-22 17:00 |  | 3.5d |  |  |  | 10.4h |
| 68 | 1.1.14.1 | 图标重做 | 0.2d | 2012-05-18 08:00 | 2012-05-18 09:36 |  | 5.3d | 1.8d | start no earlier than 2012-05-18 08:00 | 王烨 | 1.6h |
| 69 | 1.1.14.2 | 图标位置调整（订单等） | 0.1d | 2012-05-18 08:00 | 2012-05-18 08:48 |  | 6.4d |  | start no earlier than 2012-05-18 08:00 | 余晓丽 | 0.8h |
| 70 | 1.1.14.3 | 按钮选中时效果变化 | 1d? | 2012-05-22 08:00 | 2012-05-22 17:00 | 68 | 3.5d |  | start no earlier than 2012-05-22 08:00 | 余晓丽 | 8h |
| 71 | 2 | **全局特效** | 2.6d | 2012-05-15 08:00 | 2012-05-17 13:48 |  | 6.9d |  |  |  | 4.8h |
| 72 | 2.1 | 人物升级动画 | 0.2d | 2012-05-17 08:00 | 2012-05-17 09:36 |  | 6.9d | 0d | start no earlier than 2012-05-17 08:00 | 宋文卿 | 1.6h |
| 73 | 2.2 | 所有建筑升级动画 | 0.2d | 2012-05-17 09:36 | 2012-05-17 11:12 | 72 | 6.9d | 0d | start no earlier than 2012-05-17 08:00 | 宋文卿 | 1.6h |
| 74 | 2.3 | 人物晋级完成时有动画 | 0.2d | 2012-05-17 11:12 | 2012-05-17 13:48 | 73 | 6.9d |  | start no earlier than 2012-05-17 08:00 | 宋文卿 | 1.6h |
| 75 | 2.4 | loading外壳UI更换 | 0.5d | 2012-05-15 08:00 | 2012-05-15 12:00 |  | 9d |  | start no earlier than 2012-05-15 08:00 |  |  |
