# 魔法项目进度表

Schedule from MS Project, 2012-02-06 to 2012-05-08.

## Calendars

- 标准: Mon-Fri 08:00-12:00, 13:00-17:00; Sat-Sun off.

## Resources

| Resource |
| --- |
| 柱子 |
| 李钊 |
| 张琦 |
| 大强 |
| 立军 |
| 王晔 |
| Eric |
| 文明 |
| 姜浩 |
| 章昕 |
| 夏俊杰 |
| 余颖慧 |
| 赵子敬 |
| 余晓莉 |
| 张 |
| 张诚 |
| 小庆 |
| 陈志荣 |
| E姜浩 |
| 陈志龙 |
| 张燕南 |

## Schedule

| ID | WBS | Task | Duration | Start | Finish | Predecessors | Total slack | Free slack | Constraint | Resources | Work |
| --- | --- | --- | --- | --- | --- | --- | --- | --- | --- | --- | --- |
| 1 | 1 | **策划进度安排** | 37d? | 2012-02-06 | 2012-03-27 |  | 9d |  |  |  | 1260h |
| 2 | 1.1 | **策划和前期准备** | 17d? | 2012-02-06 | 2012-02-28 |  | 50d |  |  |  | 168h |
| 3 | 1.1.1 | 策划初稿审核（概念策划） | 2d | 2012-02-06 | 2012-02-07 |  | 33.5d | 2d | start no earlier than 2012-02-06 | 姜浩 | 16h |
| 4 | 1.1.2 | 审核 | 1d | 2012-02-10 | 2012-02-10 | 3 | 53d | 3d | start no earlier than 2012-02-10 | 立军; 张琦; 姜浩 | 24h |
| 5 | 1.1.3 | 完整原型（框架策划，逻辑流程图） | 8d | 2012-02-16 | 2012-02-27 | 4 | 50d | 0d | finish no earlier than 2012-02-27 | Eric; 姜浩 | 128h |
| 6 | 1.1.4 | 审核和确认 | 1d? | 2012-02-28 | 2012-02-28 | 5 | 28.5d |  | start no earlier than 2012-02-27 |  |  |
| 7 | 1.2 | **策划模块详细** | 36d? | 2012-02-07 | 2012-03-27 |  | 8d |  |  |  | 1092h |
| 8 | 1.2.1 | **战斗模块** | 4d? | 2012-02-07 | 2012-02-10 |  | 51d |  |  | Eric | 88h |
| 9 | 1.2.1.1 | 详细策划和DEMO | 3d | 2012-02-07 | 2012-02-09 |  | 29.5d | 0d | finish no earlier than 2012-02-09 | Eric | 24h |
| 10 | 1.2.1.2 | 和美术和技术核对需求，做需求分析 | 1d? | 2012-02-10 | 2012-02-10 | 9 | 51d | 12d | start no earlier than 2012-02-10 | Eric; 大强; 立军; 张琦 | 32h |
| 11 | 1.2.2 | **合成模块** | 4d? | 2012-02-07 | 2012-02-10 |  | 8d | 5d |  | 姜浩 | 88h |
| 12 | 1.2.2.1 | 详细策划和DEMO（仓库，图鉴） | 3d | 2012-02-07 | 2012-02-09 |  | 5d | 0d | finish no earlier than 2012-02-09 | 姜浩 | 24h |
| 13 | 1.2.2.2 | 和美术和技术核对需求，做需求分析 | 1d? | 2012-02-10 | 2012-02-10 | 12 | 8d | 16d | start no earlier than 2012-02-10 | 姜浩; 大强; 立军; 张琦 | 32h |
| 14 | 1.2.3 | **主场景** | 2d? | 2012-02-23 | 2012-02-24 |  | 52d |  |  |  | 40h |
| 15 | 1.2.3.1 | 详细策划和DEMO | 1d | 2012-02-23 | 2012-02-23 |  | 30.5d | 0d | start no earlier than 2012-02-23 | Eric | 8h |
| 16 | 1.2.3.2 | 和美术和技术核对需求，做需求分析 | 1d? | 2012-02-24 | 2012-02-24 | 15 | 30.5d |  | start no earlier than 2012-02-10 | 姜浩; Eric; 立军; 张琦 | 32h |
| 17 | 1.2.4 | **经营模块** | 8d? | 2012-02-14 | 2012-02-23 |  | 44d | 0d |  | Eric | 152h |
| 18 | 1.2.4.1 | 详细策划和DEMO | 7d | 2012-02-14 | 2012-02-22 |  | 22.5d | 0d | finish no earlier than 2012-02-22 | Eric | 56h |
| 19 | 1.2.4.2 | 和美术和技术核对需求，做图量和需求分析 | 1d? | 2012-02-23 | 2012-02-23 | 18 | 44d | 0d | start no earlier than 2012-02-23 | Eric; 大强; 立军; 张琦 | 32h |
| 20 | 1.2.5 | **冒险模块** | 19d? | 2012-02-20 | 2012-03-15 | 11 | 3d | 0d |  | 姜浩 | 392h |
| 21 | 1.2.5.1 | 详细策划和DEMO | 4d | 2012-02-23 | 2012-02-28 |  | 0d |  | start no earlier than 2012-02-23 | 姜浩 | 32h |
| 22 | 1.2.5.2 | 和美术和技术核对需求，做需求分析 | 1d? | 2012-02-29 | 2012-02-29 | 21 | 0d |  | start no earlier than 2012-02-10 | 姜浩; 大强; 立军; 张琦 | 32h |
| 23 | 1.2.5.3 | 确定副本的规则 | 3d | 2012-03-01 | 2012-03-05 | 22 | 0d |  |  | 姜浩 | 24h |
| 24 | 1.2.5.4 | 素材内容和列表收集 | 12d | 2012-02-20 | 2012-03-06 |  | 6.5d | 0d | start no earlier than 2012-02-20 | 陈志荣 | 96h |
| 25 | 1.2.5.5 | 挑选和确认 | 1d | 2012-03-07 | 2012-03-07 | 24 | 1.5d | 0d |  | 姜浩 | 8h |
| 26 | 1.2.5.6 | 美术核对和制作 | 1d | 2012-03-08 | 2012-03-08 | 25 | 1.5d | 0d |  | 大强 | 8h |
| 27 | 1.2.5.7 | 地图编辑器编辑 | 5d | 2012-03-09 | 2012-03-15 | 26 | 1.5d | 0d |  | 陈志荣 | 40h |

Notes:
- 3: 包括简单策划案，简单流程图，简单DEMO，说清楚特点等
- 4: 2月12日，13日讨论2稿确定后，可以开始开发
- 8: 具体包括： 1个场景，一个人物，1个UI初稿
- 12: 仓库，图鉴，合成面板
- 23: 包括副本，任务和剧情的描述，怪物，地形块，装饰物，矿物和掉落物品的描述 / 上线先开1个主场景，和3个副本（地图），每个副本有层级。具体层级看策划描述

| ID | WBS | Task | Duration | Start | Finish | Predecessors | Total slack | Free slack | Constraint | Resources | Work |
| --- | --- | --- | --- | --- | --- | --- | --- | --- | --- | --- | --- |
| 28 | 1.2.6 | **佣兵模块** | 5.5d? | 2012-02-24 | 2012-03-02 | 17 | 44d | 0d |  | Eric | 100h |
| 29 | 1.2.6.1 | 详细策划和DEMO | 5d | 2012-02-24 | 2012-03-01 | 19 | 22.5d | 0d | finish no earlier than 2012-02-09 | Eric | 40h |
| 30 | 1.2.6.2 | 和美术和技术核对需求，做需求分析 | 0.5d? | 2012-03-02 | 2012-03-02 | 29 | 22.5d | 0d | start no earlier than 2012-02-10 | Eric; 大强; 立军; 张琦 | 16h |
| 31 | 1.2.7 | **世界地图模块** | 2.5d? | 2012-03-16 | 2012-03-20 | 20 | 6.5d | 0d |  | 姜浩 | 52h |
| 32 | 1.2.7.1 | 详细策划和DEMO | 2d | 2012-03-16 | 2012-03-19 | 27 | 1.5d | 0d | start no earlier than 2012-02-28 | 姜浩 | 16h |
| 33 | 1.2.7.2 | 和美术和技术核对需求，做需求分析 | 0.5d? | 2012-03-20 | 2012-03-20 | 32 | 1.5d | 0d | start no earlier than 2012-02-10 | 姜浩; 大强; 立军; 张琦 | 16h |
| 34 | 1.2.8 | **道具模块** | 3.5d? | 2012-03-02 | 2012-03-07 | 28 | 44d |  |  | Eric | 68h |
| 35 | 1.2.8.1 | 详细策划和DEMO | 3d | 2012-03-02 | 2012-03-07 | 30 | 22.5d | 0d | finish no earlier than 2012-02-09 | Eric | 24h |
| 36 | 1.2.8.2 | 和美术和技术核对需求，做需求分析 | 0.5d? | 2012-03-07 | 2012-03-07 | 35 | 22.5d |  | start no earlier than 2012-02-10 | Eric; 大强; 立军; 张琦 | 16h |
| 37 | 1.2.9 | **任务和剧情模块** | 3.5d? | 2012-03-20 | 2012-03-23 | 31 | 21.5d |  |  | 姜浩 | 68h |
| 38 | 1.2.9.1 | 详细策划和DEMO | 3d | 2012-03-20 | 2012-03-23 | 33 | 1.5d | 0d | start no earlier than 2012-02-22 | 姜浩 | 24h |
| 39 | 1.2.9.2 | 和美术和技术核对需求，做需求分析 | 0.5d? | 2012-03-23 | 2012-03-23 | 38 | 1.5d | 0d | start no earlier than 2012-02-10 | 姜浩; 大强; 立军; 张琦 | 16h |
| 40 | 1.2.10 | **上线前其他模块** | 2d | 2012-03-26 | 2012-03-27 |  | 21.5d |  |  |  | 44h |
| 41 | 1.2.10.1 | 详细策划和DEMO | 1.5d | 2012-03-26 | 2012-03-27 | 39 | 1.5d | 0d | finish no earlier than 2012-02-09 | Eric; 姜浩 | 24h |
| 42 | 1.2.10.2 | 和美术和技术核对需求，做需求分析 | 0.5d | 2012-03-27 | 2012-03-27 | 41 | 8.5d |  | start no earlier than 2012-02-10 | Eric; 大强; 立军; 张琦; 姜浩 | 20h |
| 44 | 2 | **任务，剧情，订单内容** | 45.5d | 2012-02-06 | 2012-04-09 |  | 21.5d |  |  | 姜浩; 陈志荣 | 976h |
| 45 | 2.1 | **策划前期准备** | 9d | 2012-02-06 | 2012-02-16 |  | 49d | 27.5d |  |  | 120h |
| 46 | 2.1.1 | 世界观确定 | 6d | 2012-02-06 | 2012-02-13 |  | 27.5d | 0d | start no earlier than 2012-02-06 | 姜浩 | 48h |
| 47 | 2.1.2 | 落实详细的任务规则(主线任务和支线任务如何穿插） | 3d | 2012-02-14 | 2012-02-16 | 46 | 27.5d |  | start no earlier than 2011-11-10 | 立军; 张琦; 姜浩 | 72h |
| 48 | 2.2 | **任务描述的详细内容** | 9d | 2012-03-27 | 2012-04-09 | 45 | 21.5d |  |  | 姜浩 | 104h |
| 49 | 2.2.1 | 主线任务文案样板 | 2d | 2012-03-27 | 2012-03-29 | 41 | 1.5d | 0d |  | 姜浩 | 16h |
| 50 | 2.2.2 | 支线任务文案样板 | 2d | 2012-03-29 | 2012-04-02 | 49 | 5d |  |  | 姜浩 | 16h |
| 51 | 2.2.3 | 对白 | 7d | 2012-03-29 | 2012-04-09 | 49 | 1.5d |  |  |  |  |
| 52 | 2.3 | 订单任务内容 | 3d | 2012-02-28 | 2012-03-01 |  | 48d |  | start no earlier than 2012-02-28 | Eric | 24h |

Notes:
- 32: 包含16个副本，1个主场景，功能包括世界地图和副本解锁和任务系统有关，拖拽功能，地图行走功能，突发事件（第一期不做，放第二期开发）
- 44: ？？？脚本可复用？
- 47: 包括任务剧情，任务触发条件，交任务条件

| ID | WBS | Task | Duration | Start | Finish | Predecessors | Total slack | Free slack | Constraint | Resources | Work |
| --- | --- | --- | --- | --- | --- | --- | --- | --- | --- | --- | --- |
| 54 | 3 | **数值和调试内容** | 11d | 2012-02-29 | 2012-03-14 |  | 39d |  |  | Eric | 256h |
| 55 | 3.1 | **策划前期准备** | 4d | 2012-02-29 | 2012-03-05 |  | 39d | 0d |  |  | 32h |
| 56 | 3.1.1 | 数值规则 | 4d | 2012-02-29 | 2012-03-05 | 10 | 39d |  | start no earlier than 2012-02-29 | Eric | 32h |
| 57 | 3.2 | **数值调试** | 7d | 2012-03-06 | 2012-03-14 | 55 | 39d |  |  | Eric | 136h |
| 58 | 3.2.1 | 战斗模块 | 4d | 2012-03-06 | 2012-03-09 |  | 17.5d | 0d |  | Eric | 32h |
| 59 | 3.2.2 | 合成模块 | 3d | 2012-03-06 | 2012-03-08 | 13 | 21.5d |  |  | 姜浩 | 24h |
| 60 | 3.2.3 | 主场景模块 | 3d | 2012-03-12 | 2012-03-14 | 58 | 17.5d |  |  | Eric | 24h |
| 62 | 4 | **美术开发** | 37d? | 2012-02-09 | 2012-03-30 |  | 27d |  |  |  | 1652h |
| 63 | 4.1 | **风格确定** | 17.5d? | 2012-02-09 | 2012-03-05 |  | 46.5d |  |  |  | 132h |
| 64 | 4.1.1 | **UI风格确定** | 5.5d? | 2012-02-27 | 2012-03-05 |  | 46.5d |  |  | 大强 | 116h |
| 65 | 4.1.1.1 | 参照产品，对比 | 3d? | 2012-02-27 | 2012-02-29 |  | 48.5d | 0d | finish no earlier than 2012-02-29 | 王晔 | 24h |
| 66 | 4.1.1.2 | 和策划讨论，确定下风格 | 0.5d | 2012-03-01 | 2012-03-01 | 65 | 48.5d |  |  | 王晔; 大强; Eric; 姜浩 | 16h |
| 67 | 4.1.1.3 | 出初稿 | 2d | 2012-03-01 | 2012-03-02 |  | 46.5d | 0d | start no earlier than 2012-03-01 | 王晔 | 16h |
| 68 | 4.1.1.4 | 审核，讨论，定稿 | 0.5d | 2012-03-05 | 2012-03-05 | 67 | 46.5d |  |  | 王晔; 大强; Eric; 姜浩 | 16h |
| 69 | 4.1.2 | 场景风格确定 | 3d | 2012-02-10 | 2012-02-14 |  | 60d |  | start no earlier than 2012-02-10 |  |  |
| 70 | 4.1.3 | 人设和道具风格确定 | 1d | 2012-02-09 | 2012-02-09 |  | 63d |  | start no earlier than 2012-02-09 | 大强; 姜浩 | 16h |
| 71 | 4.2 | **图量确定** | 36d? | 2012-02-10 | 2012-03-30 |  | 27d |  |  |  | 1520h |
| 72 | 4.2.1 | **美术前期素材（给到技术开发起步用）** | 2d | 2012-02-10 | 2012-02-13 |  | 27d | 0d |  |  | 48h |
| 73 | 4.2.1.1 | 1个场景 | 2d | 2012-02-10 | 2012-02-13 |  | 27d |  | start no earlier than 2012-02-10 | 余颖慧 | 16h |
| 74 | 4.2.1.2 | 1个人物 | 2d | 2012-02-10 | 2012-02-13 |  | 27d |  | start no earlier than 2012-02-10 | 赵子敬 | 16h |
| 75 | 4.2.1.3 | 1个UI初稿 | 2d | 2012-02-10 | 2012-02-13 |  | 27d |  | start no earlier than 2012-02-10 | 余晓莉 | 16h |
| 76 | 4.2.2 | **美术工作量** | 34d? | 2012-02-14 | 2012-03-30 | 72 | 27d |  |  |  | 1472h |
| 77 | 4.2.2.1 | 美术UI开发 | 34d? | 2012-02-14 | 2012-03-30 |  | 27d |  |  | 王晔; 余晓莉 | 544h |
| 78 | 4.2.2.2 | 美术道具开发 | 26d? | 2012-02-24 | 2012-03-30 |  | 27d |  | start no earlier than 2012-02-24 | 张燕南 | 208h |
| 79 | 4.2.2.3 | 美术人设开发 | 34d? | 2012-02-14 | 2012-03-30 |  | 27d |  |  | 赵子敬 | 272h |
| 80 | 4.2.2.4 | 动效 | 19d? | 2012-02-14 | 2012-03-09 |  | 27d | 0d |  | 大强 | 152h |
| 81 | 4.2.2.5 | 过场动画 | 15d? | 2012-03-12 | 2012-03-30 | 80 | 27d |  |  | 大强 | 120h |
| 82 | 4.2.2.6 | 场景 | 22d? | 2012-03-01 | 2012-03-30 |  | 27d |  | start no earlier than 2012-03-01 | 张燕南 | 176h |

Notes:
- 54: ？？？脚本可复用？
- 69: 2月12日，13日讨论2稿确定后，可以开始开发
- 72: 具体包括： 1个场景，一个人物，1个UI初稿
- 77: 关键操作：战斗和合成 / 主场景的经验条，按钮，上下栏，店铺的等级等，DIY，挪来挪去的箭头，日常按钮，布局，鼠标划上的效果
- 78: 副本和订单（和合成术有关），有些道具看下之前魔法是否可以复用
- 79: 佣兵这块，具体需要和大强核对
- 82: 地形块集合，上线之前完成4个副本场景（地图编辑器），还有3个战斗场景

| ID | WBS | Task | Duration | Start | Finish | Predecessors | Total slack | Free slack | Constraint | Resources | Work |
| --- | --- | --- | --- | --- | --- | --- | --- | --- | --- | --- | --- |
| 84 | 5 | **战斗功能模块开发** | 21d | 2012-02-06 | 2012-03-05 |  | 46d |  |  | 夏俊杰; 章昕 | 1360h |
| 85 | 5.1 | **策划和前期准备** | 5d | 2012-02-06 | 2012-02-10 |  | 62d |  |  |  | 200h |
| 86 | 5.1.1 | 策划初稿审核（详细策划案，原型，UI需求） | 2d | 2012-02-06 | 2012-02-07 |  | 62d | 0d | start no earlier than 2012-02-06 | Eric; 立军; 张琦; 大强; 姜浩 | 80h |
| 87 | 5.1.2 | 模块前后端需求分析，设计，定义接口 | 3d | 2012-02-08 | 2012-02-10 |  | 62d |  | finish no earlier than 2012-02-10 | 立军; 张琦; Eric | 72h |
| 88 | 5.1.3 | 美术图量分析和风格确定 | 3d | 2012-02-08 | 2012-02-10 | 86 | 62d |  |  | 大强; Eric | 48h |
| 89 | 5.2 | **开发** | 15d | 2012-02-09 | 2012-02-29 |  | 46d |  |  |  | 824h |
| 90 | 5.2.1 | **美术前期素材（给到技术开发起步用）** | 2d | 2012-02-10 | 2012-02-13 |  | 61d |  |  |  | 48h |
| 91 | 5.2.1.1 | 1个场景 | 2d | 2012-02-10 | 2012-02-13 |  | 61d |  | start no earlier than 2012-02-10 | 余颖慧 | 16h |
| 92 | 5.2.1.2 | 1个人物 | 2d | 2012-02-10 | 2012-02-13 |  | 61d |  | start no earlier than 2012-02-10 | 赵子敬 | 16h |
| 93 | 5.2.1.3 | 1个UI初稿 | 2d | 2012-02-10 | 2012-02-13 |  | 61d |  | start no earlier than 2012-02-10 | 余晓莉 | 16h |
| 94 | 5.2.2 | **前端开发** | 15d | 2012-02-09 | 2012-02-29 |  | 46d |  |  | 张琦; 夏俊杰 | 408h |
| 95 | 5.2.2.1 | 项目需求分析，模块定义，接口定义，代码设计 | 3d | 2012-02-10 | 2012-02-14 |  | 60d |  | start no earlier than 2012-02-10 | 张琦; 夏俊杰 | 48h |
| 96 | 5.2.2.2 | CODING | 15d | 2012-02-09 | 2012-02-29 |  | 46d | 0d | finish no earlier than 2012-02-29 | 夏俊杰 | 120h |
| 97 | 5.2.3 | **后端开发** | 12d | 2012-02-13 | 2012-02-28 |  | 50d |  |  | 章昕; 立军 | 192h |
| 98 | 5.2.3.1 | 项目需求分析，模块定义，接口定义，代码设计 | 2d | 2012-02-13 | 2012-02-14 |  | 60d |  | start no earlier than 2012-02-13 |  |  |
| 99 | 5.2.3.2 | CODING | 11d | 2012-02-14 | 2012-02-28 |  | 50d |  | start no earlier than 2012-02-14 |  |  |
| 100 | 5.2.4 | **美术工作** | 11d | 2012-02-15 | 2012-02-29 |  | 49d |  |  |  | 176h |
| 101 | 5.2.4.1 | 美术UI开发 | 7d | 2012-02-20 | 2012-02-28 |  | 50d |  | start no earlier than 2012-02-20 | 余晓莉 | 56h |
| 102 | 5.2.4.2 | 美术道具开发 | 4d | 2012-02-20 | 2012-02-23 |  | 53d |  | start no earlier than 2012-02-20 | 张燕南 | 32h |
| 103 | 5.2.4.3 | 美术人设开发 | 11d | 2012-02-15 | 2012-02-29 |  | 49d |  | finish no earlier than 2012-02-29 | 赵子敬 | 88h |
| 104 | 5.3 | 联调和测试 | 3d | 2012-03-01 | 2012-03-05 | 96 | 46d |  | start no earlier than 2012-02-28 |  |  |
| 106 | 6 | **合成模块开发** | 15d | 2012-02-06 | 2012-02-24 |  | 6d |  |  | 李钊; 张诚; 小庆 | 664h |
| 107 | 6.1 | **策划和前期准备** | 7d | 2012-02-06 | 2012-02-14 |  | 14d |  |  |  | 120h |
| 108 | 6.1.1 | 策划初稿审核（详细策划案，原型，UI需求） | 2d | 2012-02-06 | 2012-02-07 |  | 19d |  | start no earlier than 2012-02-06 | 姜浩 | 16h |
| 109 | 6.1.2 | 模块前后端需求分析，设计，定义接口 | 3d | 2012-02-10 | 2012-02-14 |  | 14d |  | start no earlier than 2012-02-10 | 立军; 张琦; 姜浩 | 72h |
| 110 | 6.1.3 | 美术图量分析和风格确定 | 2d | 2012-02-09 | 2012-02-10 |  | 16d |  | start no earlier than 2012-02-09 | 大强; 姜浩 | 32h |

Notes:
- 84: 3周工作日
- 90: 具体包括： 1个场景，一个人物，1个UI初稿
- 98: 接口定义：战斗开始，战斗结束 / 后端有一个验证器，验证过程。
- 101: 战斗UI
- 103: 人设和动效
- 104: 数值内容等最好先做出来
- 106: 9个工作日
- 109: 2月12日，13日讨论2稿确定后，可以开始开发

| ID | WBS | Task | Duration | Start | Finish | Predecessors | Total slack | Free slack | Constraint | Resources | Work |
| --- | --- | --- | --- | --- | --- | --- | --- | --- | --- | --- | --- |
| 111 | 6.2 | **开发** | 2d | 2012-02-22 | 2012-02-23 |  | 7d |  |  |  | 48h |
| 112 | 6.2.1 | **美术前期素材（给到技术开发起步用）** | 2d | 2012-02-22 | 2012-02-23 |  | 7d | 0d |  |  | 48h |
| 113 | 6.2.1.1 | 1个场景 | 2d | 2012-02-22 | 2012-02-23 |  | 7d |  | start no earlier than 2012-02-22 | 余颖慧 | 16h |
| 114 | 6.2.1.2 | 1个人物 | 2d | 2012-02-22 | 2012-02-23 |  | 7d |  | start no earlier than 2012-02-22 | 赵子敬 | 16h |
| 115 | 6.2.1.3 | 1个UI初稿 | 2d | 2012-02-22 | 2012-02-23 |  | 7d |  | start no earlier than 2012-02-22 | 余晓莉 | 16h |
| 116 | 6.3 | **前端开发** | 9d | 2012-02-09 | 2012-02-21 |  | 9d |  |  | 小庆 | 72h |
| 117 | 6.3.1 | 项目需求分析，模块定义，接口定义，代码设计 | 3d | 2012-02-13 | 2012-02-15 |  | 13d |  | start no earlier than 2012-02-13 |  |  |
| 118 | 6.3.2 | CODING | 9d | 2012-02-09 | 2012-02-21 |  | 9d |  | finish no earlier than 2012-02-21 |  |  |
| 119 | 6.4 | **后端开发** | 8d | 2012-02-13 | 2012-02-22 |  | 7d |  |  | 李钊 | 64h |
| 120 | 6.4.1 | 项目需求分析，模块定义，接口定义，代码设计 | 2d | 2012-02-13 | 2012-02-14 |  | 14d |  | start no earlier than 2012-02-13 |  |  |
| 121 | 6.4.2 | CODING | 7d | 2012-02-14 | 2012-02-22 |  | 6d | 0d | finish no earlier than 2012-02-22 |  |  |
| 123 | 6.5 | 联调和测试 | 2d | 2012-02-23 | 2012-02-24 | 121 | 6d |  | start no earlier than 2012-02-17 |  |  |
| 125 | 7 | **经营模块开发** | 18d | 2012-02-23 | 2012-03-19 |  | 17d | 0d |  | 小庆; 张琦; 李钊 | 896h |
| 126 | 7.1 | **策划和前期准备** | 4d | 2012-02-23 | 2012-02-28 |  | 17d |  |  |  | 96h |
| 127 | 7.1.1 | 策划初稿审核（详细策划案，原型，逻辑流程图） | 2d | 2012-02-23 | 2012-02-24 |  | 22d | 0d | start no earlier than 2012-02-23 | Eric | 16h |
| 128 | 7.1.2 | 模块前后端需求分析，设计，定义接口 | 2d | 2012-02-27 | 2012-02-28 | 127 | 22d | 0d | start no earlier than 2012-02-10 | 立军; 张琦; Eric | 48h |
| 129 | 7.1.3 | 美术图量分析和确定前置美术 | 2d | 2012-02-23 | 2012-02-24 |  | 17d | 0d | start no earlier than 2012-02-23 | 大强; Eric | 32h |
| 130 | 7.2 | **开发** | 12d | 2012-02-24 | 2012-03-12 |  | 18d |  |  |  | 368h |
| 131 | 7.2.1 | **美术前期素材（给到技术开发起步用）** | 2d | 2012-02-24 | 2012-02-27 | 112 | 32d |  |  |  | 48h |
| 132 | 7.2.1.1 | 1个场景 | 2d | 2012-02-24 | 2012-02-27 |  | 32d |  | start no earlier than 2012-02-10 | 张燕南 | 16h |
| 133 | 7.2.1.2 | 1个人物 | 2d | 2012-02-24 | 2012-02-27 |  | 32d |  | start no earlier than 2012-02-10 | 赵子敬 | 16h |
| 134 | 7.2.1.3 | 1个UI初稿 | 2d | 2012-02-24 | 2012-02-27 |  | 32d |  | start no earlier than 2012-02-10 | 王晔 | 16h |
| 135 | 7.2.2 | **前端开发** | 11d | 2012-02-27 | 2012-03-12 |  | 17d |  |  | 小庆 | 176h |
| 136 | 7.2.2.1 | 项目需求分析，模块定义，接口定义，代码设计 | 2d | 2012-02-27 | 2012-02-28 | 129 | 17d | 0d | start no earlier than 2012-02-13 | 张琦 | 16h |
| 137 | 7.2.2.2 | CODING | 9d | 2012-02-29 | 2012-03-12 | 136 | 17d | 0d | finish no earlier than 2012-02-21 | 小庆 | 72h |

Notes:
- 112: 具体包括： 1个场景，一个人物，1个UI初稿
- 117: 接口定义：战斗开始，战斗结束 / 后端有一个验证器，验证过程。
- 120: 接口定义：战斗开始，战斗结束 / 后端有一个验证器，验证过程。
- 125: 10-15个工作日，2周
- 127: 逻辑流程图需要进一步细化
- 128: 2月12日，13日讨论2稿确定后，可以开始开发
- 131: 具体包括： 1个场景，一个人物，1个UI初稿
- 136: 接口定义：战斗开始，战斗结束 / 后端有一个验证器，验证过程。

| ID | WBS | Task | Duration | Start | Finish | Predecessors | Total slack | Free slack | Constraint | Resources | Work |
| --- | --- | --- | --- | --- | --- | --- | --- | --- | --- | --- | --- |
| 138 | 7.2.3 | **后端开发** | 9d | 2012-02-29 | 2012-03-12 |  | 22d |  |  | 李钊 | 144h |
| 139 | 7.2.3.1 | 项目需求分析，模块定义，接口定义，代码设计 | 2d | 2012-02-29 | 2012-03-01 | 128 | 22d | 0d | start no earlier than 2012-02-13 | 李钊 | 16h |
| 140 | 7.2.3.2 | CODING | 7d | 2012-03-02 | 2012-03-12 | 139 | 22d |  | finish no earlier than 2012-02-21 | 李钊 | 56h |
| 142 | 7.3 | 联调和测试 | 5d | 2012-03-13 | 2012-03-19 | 137 | 17d |  | start no earlier than 2012-02-17 |  |  |
| 144 | 8 | **冒险模块开发** | 17d | 2012-03-06 | 2012-03-28 | 106 | 0d |  |  | 夏俊杰; 章昕 | 640h |
| 145 | 8.1 | **策划和前期准备** | 6d | 2012-03-06 | 2012-03-13 |  | 0d |  |  |  | 128h |
| 146 | 8.1.1 | 策划初稿审核（详细策划案，原型，UI需求） | 3d | 2012-03-06 | 2012-03-08 | 23 | 0d |  | start no earlier than 2012-02-06 | 姜浩 | 24h |
| 147 | 8.1.2 | 模块前后端需求分析，设计，定义接口 | 3d | 2012-03-09 | 2012-03-13 | 146 | 0d |  | start no earlier than 2012-02-10 | 立军; 张琦; 姜浩 | 72h |
| 148 | 8.1.3 | 美术图量分析 | 2d | 2012-03-09 | 2012-03-12 | 146 | 6d | 0d | start no earlier than 2012-02-09 | 大强; 姜浩 | 32h |
| 149 | 8.2 | **开发** | 7d | 2012-03-13 | 2012-03-21 |  | 1d |  |  |  | 240h |
| 150 | 8.2.1 | **美术前期素材（给到技术开发起步用）** | 2d | 2012-03-13 | 2012-03-14 | 148 | 10d |  |  |  | 48h |
| 151 | 8.2.1.1 | 1个场景 | 2d | 2012-03-13 | 2012-03-14 |  | 10d |  | start no earlier than 2012-02-10 | 张燕南 | 16h |
| 152 | 8.2.1.2 | 1个人物 | 2d | 2012-03-13 | 2012-03-14 |  | 10d |  | start no earlier than 2012-02-10 | 赵子敬 | 16h |
| 153 | 8.2.1.3 | 1个UI初稿 | 2d | 2012-03-13 | 2012-03-14 |  | 10d |  | start no earlier than 2012-02-10 | 余晓莉 | 16h |
| 154 | 8.2.2 | **前端开发** | 6d | 2012-03-14 | 2012-03-21 | 147 | 0d |  |  | 张琦; 夏俊杰 | 96h |
| 155 | 8.2.2.1 | 项目需求分析，模块定义，接口定义，代码设计 | 2d | 2012-03-14 | 2012-03-15 |  | 4d |  | start no earlier than 2012-02-13 |  |  |
| 156 | 8.2.2.2 | CODING | 6d | 2012-03-14 | 2012-03-21 |  | 0d |  | finish no earlier than 2012-02-21 |  |  |
| 157 | 8.2.3 | **后端开发** | 6d | 2012-03-13 | 2012-03-20 | 148 | 6d |  |  | 章昕; 立军 | 96h |
| 158 | 8.2.3.1 | 项目需求分析，模块定义，接口定义，代码设计 | 2d | 2012-03-13 | 2012-03-14 |  | 10d |  | start no earlier than 2012-02-13 |  |  |
| 159 | 8.2.3.2 | CODING | 6d | 2012-03-13 | 2012-03-20 |  | 6d |  | finish no earlier than 2012-02-21 |  |  |
| 161 | 8.3 | 联调和测试 | 5d | 2012-03-22 | 2012-03-28 | 154 | 0d |  | start no earlier than 2012-02-17 |  |  |
| 163 | 9 | **佣兵模块开发** | 16d | 2012-03-20 | 2012-04-10 | 125 | 17d | 0d |  | 小庆; 张诚; 李钊 | 744h |
| 164 | 9.1 | **策划和前期准备** | 5d | 2012-03-20 | 2012-03-26 |  | 17d |  |  |  | 120h |
| 165 | 9.1.1 | 策划初稿审核（详细策划案，原型，UI需求） | 2d | 2012-03-20 | 2012-03-21 |  | 17d | 0d | start no earlier than 2012-02-06 | 姜浩 | 16h |
| 166 | 9.1.2 | 模块前后端需求分析，设计，定义接口 | 3d | 2012-03-22 | 2012-03-26 | 165 | 17d | 0d | start no earlier than 2012-02-10 | 立军; 张琦; 姜浩 | 72h |
| 167 | 9.1.3 | 美术图量分析 | 2d | 2012-03-22 | 2012-03-23 | 165 | 25d | 0d | start no earlier than 2012-02-09 | 大强; 姜浩 | 32h |

Notes:
- 139: 接口定义：战斗开始，战斗结束 / 后端有一个验证器，验证过程。
- 144: 1周左右
- 147: 2月12日，13日讨论2稿确定后，可以开始开发
- 150: 具体包括： 1个场景，一个人物，1个UI初稿
- 155: 接口定义：战斗开始，战斗结束 / 后端有一个验证器，验证过程。
- 158: 接口定义：战斗开始，战斗结束 / 后端有一个验证器，验证过程。
- 163: 包含装备，技能？ / 1周？
- 166: 2月12日，13日讨论2稿确定后，可以开始开发

| ID | WBS | Task | Duration | Start | Finish | Predecessors | Total slack | Free slack | Constraint | Resources | Work |
| --- | --- | --- | --- | --- | --- | --- | --- | --- | --- | --- | --- |
| 168 | 9.2 | **开发** | 7d | 2012-03-26 | 2012-04-03 |  | 18d |  |  |  | 240h |
| 169 | 9.2.1 | **美术前期素材（给到技术开发起步用）** | 2d | 2012-03-26 | 2012-03-27 | 167 | 27d |  |  |  | 48h |
| 170 | 9.2.1.1 | 1个场景 | 2d | 2012-03-26 | 2012-03-27 |  | 27d |  | start no earlier than 2012-02-10 | 张燕南 | 16h |
| 171 | 9.2.1.2 | 1个人物 | 2d | 2012-03-26 | 2012-03-27 |  | 27d |  | start no earlier than 2012-02-10 | 赵子敬 | 16h |
| 172 | 9.2.1.3 | 1个UI初稿 | 2d | 2012-03-26 | 2012-03-27 |  | 27d |  | start no earlier than 2012-02-10 | 余晓莉 | 16h |
| 173 | 9.2.2 | **前端开发** | 6d | 2012-03-27 | 2012-04-03 | 166 | 17d | 0d |  | 张琦; 夏俊杰 | 96h |
| 174 | 9.2.2.1 | 项目需求分析，模块定义，接口定义，代码设计 | 2d | 2012-03-27 | 2012-03-28 |  | 21d |  | start no earlier than 2012-02-13 |  |  |
| 175 | 9.2.2.2 | CODING | 6d | 2012-03-27 | 2012-04-03 |  | 17d |  | finish no earlier than 2012-02-21 |  |  |
| 176 | 9.2.3 | **后端开发** | 6d | 2012-03-27 | 2012-04-03 | 166 | 22d |  |  | 李钊; 立军 | 96h |
| 177 | 9.2.3.1 | 项目需求分析，模块定义，接口定义，代码设计 | 2d | 2012-03-27 | 2012-03-28 |  | 26d |  | start no earlier than 2012-02-13 |  |  |
| 178 | 9.2.3.2 | CODING | 6d | 2012-03-27 | 2012-04-03 |  | 22d |  | finish no earlier than 2012-02-21 |  |  |
| 179 | 9.2.4 | **美术工作** | 4d | 2012-03-26 | 2012-03-29 | 167 | 25d |  |  |  |  |
| 180 | 9.2.4.1 | 确定美术图量和美术风格 | 4d | 2012-03-26 | 2012-03-29 |  | 25d |  |  |  |  |
| 181 | 9.2.4.2 | 美术UI开发 | 4d | 2012-03-26 | 2012-03-29 |  | 25d |  |  |  |  |
| 182 | 9.2.4.3 | 美术道具开发 | 4d | 2012-03-26 | 2012-03-29 |  | 25d |  |  |  |  |
| 183 | 9.2.4.4 | 美术人设开发 | 4d | 2012-03-26 | 2012-03-29 |  | 25d |  |  |  |  |
| 185 | 9.3 | 联调和测试 | 5d | 2012-04-04 | 2012-04-10 | 173 | 17d |  | start no earlier than 2012-02-17 |  |  |
| 187 | 10 | **世界地图模块开发** | 4d | 2012-03-29 | 2012-04-03 | 144 | 0d |  |  | 夏俊杰; 章昕 | 240h |
| 188 | 10.1 | **策划和前期准备** | 2d | 2012-03-29 | 2012-03-30 | 31 | 0d |  |  |  | 48h |
| 189 | 10.1.1 | 策划初稿审核（详细策划案，原型，UI需求） | 1d | 2012-03-29 | 2012-03-29 |  | 0d |  | start no earlier than 2012-02-06 | 姜浩 | 8h |
| 190 | 10.1.2 | 模块前后端需求分析，设计，定义接口 | 1d | 2012-03-30 | 2012-03-30 | 189 | 0d |  | start no earlier than 2012-02-10 | 立军; 张琦; 姜浩 | 24h |
| 191 | 10.1.3 | 美术图量分析和风格确定 | 1d | 2012-03-29 | 2012-03-29 |  | 3d |  | start no earlier than 2012-02-09 | 大强; 姜浩 | 16h |
| 192 | 10.2 | **开发** | 3d | 2012-03-29 | 2012-04-02 |  | 0d |  |  |  | 128h |
| 193 | 10.2.1 | **美术前期素材（给到技术开发起步用）** | 2d | 2012-03-29 | 2012-03-30 |  | 1d |  |  |  | 32h |
| 194 | 10.2.1.1 | 世界地图 | 2d | 2012-03-29 | 2012-03-30 |  | 1d |  | start no earlier than 2012-02-10 | 余颖慧 | 16h |
| 195 | 10.2.1.2 | 动效 | 2d | 2012-03-29 | 2012-03-30 |  | 1d |  | start no earlier than 2012-02-10 | 赵子敬 | 16h |

Notes:
- 169: 具体包括： 1个场景，一个人物，1个UI初稿
- 174: 接口定义：战斗开始，战斗结束 / 后端有一个验证器，验证过程。
- 177: 接口定义：战斗开始，战斗结束 / 后端有一个验证器，验证过程。
- 187: 3天左右？
- 190: 2月12日，13日讨论2稿确定后，可以开始开发
- 193: 具体包括： 1个场景，一个人物，1个UI初稿

| ID | WBS | Task | Duration | Start | Finish | Predecessors | Total slack | Constraint | Resources | Work |
| --- | --- | --- | --- | --- | --- | --- | --- | --- | --- | --- |
| 196 | 10.2.2 | **前端开发** | 3d | 2012-03-29 | 2012-04-02 |  | 0d |  | 张琦; 夏俊杰 | 48h |
| 197 | 10.2.2.1 | 项目需求分析，模块定义，接口定义，代码设计 | 1d | 2012-04-02 | 2012-04-02 | 190 | 0d | start no earlier than 2012-02-13 |  |  |
| 198 | 10.2.2.2 | CODING | 3d | 2012-03-29 | 2012-04-02 |  | 0d | finish no earlier than 2012-02-21 |  |  |
| 199 | 10.2.3 | **后端开发** | 3d | 2012-03-29 | 2012-04-02 |  | 0d |  | 章昕; 立军 | 48h |
| 200 | 10.2.3.1 | 项目需求分析，模块定义，接口定义，代码设计 | 1d | 2012-03-29 | 2012-03-29 |  | 2d | start no earlier than 2012-02-13 |  |  |
| 201 | 10.2.3.2 | CODING | 3d | 2012-03-29 | 2012-04-02 |  | 0d | finish no earlier than 2012-02-21 |  |  |
| 203 | 10.3 | 联调和测试 | 1d | 2012-04-03 | 2012-04-03 | 192 | 0d | start no earlier than 2012-02-17 |  |  |
| 205 | 11 | **道具模块开发** | 3d | 2012-04-11 | 2012-04-13 | 163 | 17d |  | 小庆; 张诚; 张琦; 李钊 | 240h |
| 206 | 11.1 | **策划和前期准备** | 1d | 2012-04-11 | 2012-04-11 |  | 19d |  |  | 32h |
| 207 | 11.1.1 | 策划初稿审核（详细策划案，原型，UI需求） | 1d | 2012-04-11 | 2012-04-11 |  | 19d | start no earlier than 2012-02-06 | Eric | 8h |
| 208 | 11.1.2 | 模块前后端需求分析，设计，定义接口 | 1d | 2012-04-11 | 2012-04-11 |  | 19d | start no earlier than 2012-02-10 | 立军; 张琦; Eric | 24h |
| 209 | 11.2 | **开发** | 3d | 2012-04-11 | 2012-04-13 |  | 17d |  |  | 112h |
| 210 | 11.2.1 | **美术前期素材（给到技术开发起步用）** | 2d | 2012-04-11 | 2012-04-12 |  | 18d |  |  | 16h |
| 211 | 11.2.1.1 | 1个UI初稿 | 2d | 2012-04-11 | 2012-04-12 |  | 18d | start no earlier than 2012-02-10 | 余晓莉 | 16h |
| 212 | 11.2.2 | **前端开发** | 3d | 2012-04-11 | 2012-04-13 |  | 17d |  | 张琦; 小庆 | 72h |
| 213 | 11.2.2.1 | 项目需求分析，模块定义，接口定义，代码设计 | 1d | 2012-04-11 | 2012-04-11 |  | 19d | start no earlier than 2012-02-13 |  |  |
| 214 | 11.2.2.2 | CODING | 3d | 2012-04-11 | 2012-04-13 |  | 17d | finish no earlier than 2012-02-21 | 小庆 | 24h |
| 215 | 11.2.3 | **后端开发** | 3d | 2012-04-11 | 2012-04-13 |  | 17d |  | 李钊 | 24h |
| 216 | 11.2.3.1 | 项目需求分析，模块定义，接口定义，代码设计 | 1d | 2012-04-11 | 2012-04-11 |  | 19d | start no earlier than 2012-02-13 |  |  |
| 217 | 11.2.3.2 | CODING | 3d | 2012-04-11 | 2012-04-13 |  | 17d | finish no earlier than 2012-02-21 |  |  |
| 219 | 11.3 | 联调和测试 | 1d | 2012-04-11 | 2012-04-11 |  | 19d | start no earlier than 2012-02-17 |  |  |
| 221 | 12 | **任务和剧情模块开发** | 10d | 2012-04-04 | 2012-04-17 | 187 | 0d |  | 张琦; 章昕 | 352h |
| 222 | 12.1 | **策划和前期准备** | 1d | 2012-04-04 | 2012-04-04 |  | 0d |  |  | 48h |
| 223 | 12.1.1 | 策划初稿审核（详细策划案，原型，UI需求） | 1d | 2012-04-04 | 2012-04-04 |  | 0d | start no earlier than 2012-02-06 | 姜浩 | 8h |
| 224 | 12.1.2 | 模块前后端需求分析，设计，定义接口 | 1d | 2012-04-04 | 2012-04-04 |  | 0d | start no earlier than 2012-02-10 | 立军; 张琦; 姜浩 | 24h |
| 225 | 12.1.3 | 美术图量分析和风格确定 | 1d | 2012-04-04 | 2012-04-04 |  | 0d | start no earlier than 2012-02-09 | 大强; 姜浩 | 16h |

Notes:
- 197: 接口定义：战斗开始，战斗结束 / 后端有一个验证器，验证过程。
- 200: 接口定义：战斗开始，战斗结束 / 后端有一个验证器，验证过程。
- 205: 商店？人民币道具系统？ / 3~5天？
- 208: 2月12日，13日讨论2稿确定后，可以开始开发
- 210: 具体包括： 1个场景，一个人物，1个UI初稿
- 213: 接口定义：战斗开始，战斗结束 / 后端有一个验证器，验证过程。
- 216: 接口定义：战斗开始，战斗结束 / 后端有一个验证器，验证过程。
- 221: ？？？脚本可复用？ 5个工作日（预测）
- 224: 2月12日，13日讨论2稿确定后，可以开始开发

| ID | WBS | Task | Duration | Start | Finish | Predecessors | Total slack | Free slack | Constraint | Resources | Work |
| --- | --- | --- | --- | --- | --- | --- | --- | --- | --- | --- | --- |
| 226 | 12.2 | **美术前期素材（给到技术开发起步用）** | 2d | 2012-04-05 | 2012-04-06 | 222 | 7d |  |  |  | 16h |
| 227 | 12.2.1 | 1个UI初稿 | 2d | 2012-04-05 | 2012-04-06 |  | 7d |  | start no earlier than 2012-02-10 | 余晓莉 | 16h |
| 228 | 12.3 | **前端开发** | 4d | 2012-04-05 | 2012-04-10 | 222 | 0d |  |  | 张琦; 夏俊杰 | 64h |
| 229 | 12.3.1 | 项目需求分析，模块定义，接口定义，代码设计 | 1d | 2012-04-05 | 2012-04-05 |  | 8d |  | start no earlier than 2012-02-13 |  |  |
| 230 | 12.3.2 | CODING | 4d | 2012-04-05 | 2012-04-10 |  | 0d |  | finish no earlier than 2012-02-21 |  |  |
| 231 | 12.4 | **后端开发** | 4d | 2012-04-05 | 2012-04-10 | 222 | 5d |  |  | 章昕; 立军 | 64h |
| 232 | 12.4.1 | 项目需求分析，模块定义，接口定义，代码设计 | 1d | 2012-04-05 | 2012-04-05 |  | 8d |  | start no earlier than 2012-02-13 |  |  |
| 233 | 12.4.2 | CODING | 4d | 2012-04-05 | 2012-04-10 |  | 5d |  | finish no earlier than 2012-02-21 |  |  |
| 235 | 12.5 | 联调和测试 | 5d | 2012-04-11 | 2012-04-17 | 230 | 0d |  | start no earlier than 2012-02-17 |  |  |
| 237 | 13 | **上线前需完成模块** | 3d? | 2012-04-18 | 2012-04-20 | 221 | 10d | 0d |  |  |  |
| 238 | 13.1 | **交互系统** | 3d | 2012-04-18 | 2012-04-20 |  | 10d |  |  |  |  |
| 239 | 13.1.1 | 策划初稿审核 | 2d | 2012-04-18 | 2012-04-19 |  | 11d |  | start no earlier than 2012-02-06 |  |  |
| 240 | 13.1.2 | 开发 | 3d | 2012-04-18 | 2012-04-20 |  | 10d |  | start no earlier than 2012-02-10 |  |  |
| 241 | 13.1.3 | 测试 | 2d | 2012-04-18 | 2012-04-19 |  | 11d |  | start no earlier than 2012-02-09 |  |  |
| 242 | 13.2 | **礼物系统** | 2d? | 2012-04-18 | 2012-04-19 |  | 11d |  |  |  |  |
| 243 | 13.2.1 | 移植 | 2d | 2012-04-18 | 2012-04-19 |  | 11d |  |  |  |  |
| 244 | 13.2.2 | 导入礼物的内容 | 2d | 2012-04-18 | 2012-04-19 |  | 11d |  |  |  |  |
| 245 | 13.2.3 | 测试 | 1d? | 2012-04-18 | 2012-04-18 |  | 12d |  |  |  |  |
| 246 | 13.3 | **消息和日志** | 2d? | 2012-04-18 | 2012-04-19 |  | 11d |  |  |  |  |
| 247 | 13.3.1 | 移植 | 2d | 2012-04-18 | 2012-04-19 |  | 11d |  |  |  |  |
| 248 | 13.3.2 | 导入礼物的内容 | 2d | 2012-04-18 | 2012-04-19 |  | 11d |  |  |  |  |
| 249 | 13.3.3 | 测试 | 1d? | 2012-04-18 | 2012-04-18 |  | 12d |  |  |  |  |
| 250 | 13.4 | **新手引导** | 2d? | 2012-04-18 | 2012-04-19 |  | 11d |  |  |  |  |
| 251 | 13.4.1 | 移植 | 2d | 2012-04-18 | 2012-04-19 |  | 11d |  |  |  |  |
| 252 | 13.4.2 | 导入礼物的内容 | 2d | 2012-04-18 | 2012-04-19 |  | 11d |  |  |  |  |
| 253 | 13.4.3 | 测试 | 1d? | 2012-04-18 | 2012-04-18 |  | 12d |  |  |  |  |

Notes:
- 226: 具体包括： 1个场景，一个人物，1个UI初稿
- 229: 接口定义：战斗开始，战斗结束 / 后端有一个验证器，验证过程。
- 232: 接口定义：战斗开始，战斗结束 / 后端有一个验证器，验证过程。
- 237: 交互系统 / 礼物系统 / 消息和日志 / 新手引导 / 每日登陆 / 数据监控
- 240: 2月12日，13日讨论2稿确定后，可以开始开发
- 243: 具体包括： 1个场景，一个人物，1个UI初稿
- 247: 具体包括： 1个场景，一个人物，1个UI初稿
- 251: 具体包括： 1个场景，一个人物，1个UI初稿

| ID | WBS | Task | Duration | Start | Finish | Predecessors | Total slack | Constraint | Resources | Work |
| --- | --- | --- | --- | --- | --- | --- | --- | --- | --- | --- |
| 254 | 13.5 | **每日登陆奖励** | 2d? | 2012-04-18 | 2012-04-19 |  | 11d |  |  |  |
| 255 | 13.5.1 | 移植 | 2d | 2012-04-18 | 2012-04-19 |  | 11d |  |  |  |
| 256 | 13.5.2 | 导入礼物的内容 | 2d | 2012-04-18 | 2012-04-19 |  | 11d |  |  |  |
| 257 | 13.5.3 | 测试 | 1d? | 2012-04-18 | 2012-04-18 |  | 12d |  |  |  |
| 259 | 14 | **后台数据监控** | 2d? | 2012-04-23 | 2012-04-24 | 237 | 10d |  |  |  |
| 260 | 14.1 | 策划 | 2d | 2012-04-23 | 2012-04-24 |  | 10d |  |  |  |
| 261 | 14.2 | 开发 | 2d | 2012-04-23 | 2012-04-24 |  | 10d |  |  |  |
| 258 | 14.3 | 测试 | 1d? | 2012-04-23 | 2012-04-23 |  | 8d |  |  |  |
| 264 | 15 | **测试** | 12d? | 2012-04-18 | 2012-05-03 | 221 | 0d |  |  |  |
| 265 | 15.1 | 测试计划 | 7d | 2012-04-18 | 2012-04-26 |  | 5d |  |  |  |
| 267 | 15.2 | 功能测试 | 2d | 2012-04-18 | 2012-04-19 |  | 10d |  |  |  |
| 268 | 15.3 | 性能测试 | 6d | 2012-04-18 | 2012-04-25 |  | 6d |  |  |  |
| 269 | 15.4 | 易用行测试 | 1d? | 2012-04-18 | 2012-04-18 |  | 11d |  |  |  |
| 272 | 16 | **上线流程** | 3d | 2012-05-04 | 2012-05-08 | 264 | 0d |  |  | 120h |
| 273 | 16.1 | **接入准备** | 3d | 2012-05-04 | 2012-05-08 |  | 0d |  |  | 120h |
| 274 | 16.1.1 | 商务合作会谈 | 2d | 2012-05-04 | 2012-05-07 |  | 1d | start no earlier than 2012-02-06 | 姜浩 | 16h |
| 275 | 16.1.2 | API接入 | 3d | 2012-05-04 | 2012-05-08 |  | 0d | start no earlier than 2012-02-10 | 立军; 张琦; 姜浩 | 72h |
| 276 | 16.1.3 | 合同签订 | 2d | 2012-05-04 | 2012-05-07 |  | 1d | start no earlier than 2012-02-09 | 大强; 姜浩 | 32h |

Notes:
- 255: 具体包括： 1个场景，一个人物，1个UI初稿
- 260: 具体包括： 1个场景，一个人物，1个UI初稿
- 264: ALPHA / BETA / 删档内测 / 正式测试上线
- 267: 具体包括： 1个场景，一个人物，1个UI初稿
- 272: ？？？脚本可复用？
- 275: 2月12日，13日讨论2稿确定后，可以开始开发
