# 魔法项目进度表20120302V

Schedule from MS Project, 2012-02-06 to 2012-05-10, A marks actual dates.

## Calendars

- 标准: Mon-Fri 08:00-12:00, 13:00-17:00; Sat-Sun off.

## Resources

| Resource |
| --- |
| 柱子 |
| 李钊 |
| 张琦 |
| 大强 |
| 立军 |
| 王晔 |
| Eric |
| 文明 |
| 姜浩 |
| 章昕 |
| 夏俊杰 |
| 余颖慧 |
| 赵子敬 |
| 余晓莉 |
| 张 |
| 张诚 |
| 小庆 |
| 陈志荣 |
| E姜浩 |
| 陈志龙 |
| 张燕南 |
| 桃子 |

## Schedule

| ID | WBS | Task | Duration | Start | Finish | Predecessors | Complete | Remaining | Total slack | Free slack | Constraint | Resources | Work | Actual work |
| --- | --- | --- | --- | --- | --- | --- | --- | --- | --- | --- | --- | --- | --- | --- |
| 1 | 1 | **策划进度安排** | 43d? | 2012-02-06 A | 2012-04-04 |  | 19% | 34.8d? | 25.5d |  |  |  | 1492h | 378.52h |
| 2 | 1.1 | **策划和前期准备** | 17d? | 2012-02-06 | 2012-02-28 |  |  |  | 51.5d |  |  |  | 168h |  |
| 3 | 1.1.1 | 策划初稿审核（概念策划） | 2d | 2012-02-06 | 2012-02-07 |  |  |  | 33.5d | 2d | start no earlier than 2012-02-06 | 姜浩 | 16h |  |
| 4 | 1.1.2 | 审核 | 1d | 2012-02-10 | 2012-02-10 | 3 |  |  | 54.5d | 3d | start no earlier than 2012-02-10 | 立军; 张琦; 姜浩 | 24h |  |
| 5 | 1.1.3 | 完整原型（框架策划，逻辑流程图） | 8d | 2012-02-16 | 2012-02-27 | 4 |  |  | 51.5d | 0d | finish no earlier than 2012-02-27 | Eric; 姜浩 | 128h |  |
| 6 | 1.1.4 | 审核和确认 | 1d? | 2012-02-28 | 2012-02-28 | 5 |  |  | 28.5d |  | start no earlier than 2012-02-27 |  |  |  |
| 7 | 1.2 | **策划模块详细** | 42d? | 2012-02-07 A | 2012-04-04 |  | 23% | 32.48d? | 25.5d |  |  |  | 1324h | 378.52h |
| 8 | 1.2.1 | **战斗模块** | 21d? | 2012-02-07 A | 2012-03-06 |  | 80% | 4.2d? | 46.5d |  |  | Eric | 224h | 190.4h |
| 9 | 1.2.1.1 | 详细策划和DEMO | 3d | 2012-02-07 A | 2012-02-09 A |  | 100% |  |  |  | finish no earlier than 2012-02-09 | Eric | 24h | 24h |
| 10 | 1.2.1.2 | 和美术和技术核对需求，做需求分析 | 1d? | 2012-02-10 A | 2012-02-10 A | 9 | 100% |  |  |  | start no earlier than 2012-02-10 | Eric; 大强; 立军; 张琦 | 32h | 32h |
| 11 | 1.2.1.3 | 模块验收 | 1d? | 2012-03-06 | 2012-03-06 | 87 |  |  | 46.5d |  |  |  |  |  |
| 12 | 1.2.2 | **合成模块** | 16d? | 2012-02-07 A | 2012-02-28 |  | 80% | 3.2d? | 51.5d |  |  | 姜浩 | 184h | 81.6h |
| 13 | 1.2.2.1 | 详细策划和DEMO（仓库，图鉴） | 3d | 2012-02-07 A | 2012-02-09 A |  | 100% |  |  |  | finish no earlier than 2012-02-09 | 姜浩 | 24h | 24h |
| 14 | 1.2.2.2 | 和美术和技术核对需求，做需求分析 | 1d? | 2012-02-10 A | 2012-02-10 A | 13 | 100% |  |  |  | start no earlier than 2012-02-10 | 姜浩; 大强; 立军; 张琦 | 32h | 32h |
| 15 | 1.2.2.3 | 模块验收 | 1d? | 2012-02-28 | 2012-02-28 | 109 |  |  | 51.5d |  |  |  |  |  |
| 16 | 1.2.3 | **主场景** | 2d? | 2012-02-23 | 2012-02-24 |  |  |  | 53.5d |  |  |  | 40h |  |
| 17 | 1.2.3.1 | 详细策划和DEMO | 1d | 2012-02-23 | 2012-02-23 |  |  |  | 30.5d | 0d | start no earlier than 2012-02-23 | Eric | 8h |  |
| 18 | 1.2.3.2 | 和美术和技术核对需求，做需求分析 | 1d? | 2012-02-24 | 2012-02-24 | 17 |  |  | 30.5d |  | start no earlier than 2012-02-10 | 姜浩; Eric; 立军; 张琦 | 32h |  |
| 19 | 1.2.4 | **经营模块** | 8d? | 2012-02-14 | 2012-02-23 |  |  |  | 45.5d | 0d |  | Eric | 152h |  |
| 20 | 1.2.4.1 | 详细策划和DEMO | 7d | 2012-02-14 | 2012-02-22 |  |  |  | 22.5d | 0d | finish no earlier than 2012-02-22 | Eric | 56h |  |
| 21 | 1.2.4.2 | 和美术和技术核对需求，做图量和需求分析 | 1d? | 2012-02-23 | 2012-02-23 | 20 |  |  | 45.5d | 0d | start no earlier than 2012-02-23 | Eric; 大强; 立军; 张琦 | 32h |  |
| 22 | 1.2.5 | **世界地图模块** | 2.5d? | 2012-02-28 A | 2012-03-01 A | 12 | 100% |  |  |  |  | 姜浩 | 52h | 52h |
| 23 | 1.2.5.1 | 详细策划和DEMO | 2d | 2012-02-28 A | 2012-02-29 A |  | 100% |  |  |  | start no earlier than 2012-02-28 | 姜浩 | 16h | 16h |
| 24 | 1.2.5.2 | 和美术和技术核对需求，做需求分析 | 0.5d? | 2012-03-01 A | 2012-03-01 A | 23 | 100% |  |  |  | start no earlier than 2012-02-10 | 姜浩; 大强; 立军; 张琦 | 16h | 16h |

Notes:
- 3: 包括简单策划案，简单流程图，简单DEMO，说清楚特点等
- 4: 2月12日，13日讨论2稿确定后，可以开始开发
- 8: 具体包括： 1个场景，一个人物，1个UI初稿
- 13: 仓库，图鉴，合成面板
- 23: 包含16个副本，1个主场景，功能包括世界地图和副本解锁和任务系统有关，拖拽功能，地图行走功能，突发事件（第一期不做，放第二期开发）

| ID | WBS | Task | Duration | Start | Finish | Predecessors | Complete | Remaining | Total slack | Free slack | Constraint | Resources | Work | Actual work |
| --- | --- | --- | --- | --- | --- | --- | --- | --- | --- | --- | --- | --- | --- | --- |
| 25 | 1.2.6 | **冒险模块** | 19d? | 2012-03-01 A | 2012-03-28 | 22 | 15% | 16.19d? | 17d | 0d |  | 姜浩 | 392h | 54.52h |
| 26 | 1.2.6.1 | 详细策划和DEMO | 4d | 2012-03-01 A | 2012-03-07 A |  | 100% |  |  |  | start no earlier than 2012-02-23 | 姜浩 | 32h | 32h |
| 27 | 1.2.6.2 | 和美术和技术核对需求，做需求分析 | 1d? | 2012-03-07 | 2012-03-08 | 26 |  |  | 0d |  | start no earlier than 2012-02-10 | 姜浩; 大强; 立军; 张琦 | 32h |  |
| 28 | 1.2.6.3 | 确定副本的规则 | 3d | 2012-03-08 | 2012-03-13 | 27 |  |  | 0d |  |  | 姜浩 | 24h |  |
| 29 | 1.2.6.4 | 素材内容和列表收集 | 12d | 2012-03-01 | 2012-03-19 |  |  |  | 17d | 0d | start no earlier than 2012-02-20 | 陈志荣 | 96h |  |
| 30 | 1.2.6.5 | 挑选和确认 | 1d | 2012-03-19 | 2012-03-20 | 29 |  |  | 17d | 0d |  | 姜浩 | 8h |  |
| 31 | 1.2.6.6 | 美术核对和制作 | 1d | 2012-03-20 | 2012-03-21 | 30 |  |  | 17d | 0d |  | 大强 | 8h |  |
| 32 | 1.2.6.7 | 地图编辑器编辑 | 5d | 2012-03-21 | 2012-03-28 | 31 |  |  | 17d |  |  | 陈志荣 | 40h |  |
| 33 | 1.2.7 | **佣兵模块** | 5.5d? | 2012-02-24 | 2012-03-02 | 19 |  |  | 45.5d | 0d |  | Eric | 100h |  |
| 34 | 1.2.7.1 | 详细策划和DEMO | 5d | 2012-02-24 | 2012-03-01 | 21 |  |  | 49.5d | 0d | finish no earlier than 2012-02-09 | Eric | 40h |  |
| 35 | 1.2.7.2 | 和美术和技术核对需求，做需求分析 | 0.5d? | 2012-03-02 | 2012-03-02 | 34 |  |  | 49.5d | 0d | start no earlier than 2012-02-10 | Eric; 大强; 立军; 张琦 | 16h |  |
| 36 | 1.2.8 | **道具模块** | 3.5d? | 2012-03-02 | 2012-03-07 | 33 |  |  | 45.5d |  |  | Eric | 68h |  |
| 37 | 1.2.8.1 | 详细策划和DEMO | 3d | 2012-03-02 | 2012-03-07 | 35 |  |  | 49.5d | 0d | finish no earlier than 2012-02-09 | Eric | 24h |  |
| 38 | 1.2.8.2 | 和美术和技术核对需求，做需求分析 | 0.5d? | 2012-03-07 | 2012-03-07 | 37 |  |  | 49.5d |  | start no earlier than 2012-02-10 | Eric; 大强; 立军; 张琦 | 16h |  |
| 39 | 1.2.9 | **任务和剧情模块** | 3.5d? | 2012-03-28 | 2012-04-02 | 25 |  |  | 17d |  |  | 姜浩 | 68h |  |
| 40 | 1.2.9.1 | 详细策划和DEMO | 3d | 2012-03-28 | 2012-04-02 |  |  |  | 17d | 0d | start no earlier than 2012-02-22 | 姜浩 | 24h |  |
| 41 | 1.2.9.2 | 和美术和技术核对需求，做需求分析 | 0.5d? | 2012-04-02 | 2012-04-02 | 40 |  |  | 17d | 0d | start no earlier than 2012-02-10 | 姜浩; 大强; 立军; 张琦 | 16h |  |
| 42 | 1.2.10 | **上线前其他模块** | 2d | 2012-04-03 | 2012-04-04 |  |  |  | 17d |  |  |  | 44h |  |
| 43 | 1.2.10.1 | 详细策划和DEMO | 1.5d | 2012-04-03 | 2012-04-04 | 41 |  |  | 17d | 0d | finish no earlier than 2012-02-09 | Eric; 姜浩 | 24h |  |
| 44 | 1.2.10.2 | 和美术和技术核对需求，做需求分析 | 0.5d | 2012-04-04 | 2012-04-04 | 43 |  |  | 29.5d |  | start no earlier than 2012-02-10 | Eric; 大强; 立军; 张琦; 姜浩 | 20h |  |
| 45 | 2 | **任务，剧情，订单内容** | 51.5d | 2012-02-06 | 2012-04-17 |  |  |  | 17d |  |  | 姜浩; 陈志荣 | 1072h |  |
| 46 | 2.1 | **策划前期准备** | 9d | 2012-02-06 | 2012-02-16 |  |  |  | 50.5d | 33.5d |  |  | 120h |  |
| 47 | 2.1.1 | 世界观确定 | 6d | 2012-02-06 | 2012-02-13 |  |  |  | 54.5d | 0d | start no earlier than 2012-02-06 | 姜浩 | 48h |  |
| 48 | 2.1.2 | 落实详细的任务规则(主线任务和支线任务如何穿插） | 3d | 2012-02-14 | 2012-02-16 | 47 |  |  | 54.5d |  | start no earlier than 2011-11-10 | 立军; 张琦; 姜浩 | 72h |  |

Notes:
- 28: 包括副本，任务和剧情的描述，怪物，地形块，装饰物，矿物和掉落物品的描述 / 上线先开1个主场景，和3个副本（地图），每个副本有层级。具体层级看策划描述
- 45: ？？？脚本可复用？
- 48: 包括任务剧情，任务触发条件，交任务条件

| ID | WBS | Task | Duration | Start | Finish | Predecessors | Total slack | Free slack | Constraint | Resources | Work |
| --- | --- | --- | --- | --- | --- | --- | --- | --- | --- | --- | --- |
| 49 | 2.2 | **任务描述的详细内容** | 9d | 2012-04-04 | 2012-04-17 | 46 | 17d |  |  | 姜浩 | 104h |
| 50 | 2.2.1 | 主线任务文案样板 | 2d | 2012-04-04 | 2012-04-06 | 43 | 17d | 0d |  | 姜浩 | 16h |
| 51 | 2.2.2 | 支线任务文案样板 | 2d | 2012-04-06 | 2012-04-10 | 50 | 26d |  |  | 姜浩 | 16h |
| 52 | 2.2.3 | 对白 | 7d | 2012-04-06 | 2012-04-17 | 50 | 17d |  |  |  |  |
| 53 | 2.3 | 订单任务内容 | 3d | 2012-02-28 | 2012-03-01 |  | 49.5d |  | start no earlier than 2012-02-28 | Eric | 24h |
| 54 | 3 | **数值和调试内容** | 11d | 2012-02-29 | 2012-03-14 |  | 40.5d |  |  | Eric | 256h |
| 55 | 3.1 | **策划前期准备** | 4d | 2012-02-29 | 2012-03-05 |  | 40.5d | 0d |  |  | 32h |
| 56 | 3.1.1 | 数值规则 | 4d | 2012-02-29 | 2012-03-05 | 10 | 40.5d |  | start no earlier than 2012-02-29 | Eric | 32h |
| 57 | 3.2 | **数值调试** | 7d | 2012-03-06 | 2012-03-14 | 55 | 40.5d |  |  | Eric | 136h |
| 58 | 3.2.1 | 战斗模块 | 4d | 2012-03-06 | 2012-03-09 |  | 40.5d | 0d |  | Eric | 32h |
| 59 | 3.2.2 | 合成模块 | 3d | 2012-03-06 | 2012-03-08 | 14 | 44.5d |  |  | 姜浩 | 24h |
| 60 | 3.2.3 | 主场景模块 | 3d | 2012-03-12 | 2012-03-14 | 58 | 40.5d |  |  | Eric | 24h |
| 61 | 4 | **美术开发** | 37d? | 2012-02-09 | 2012-03-30 |  | 28.5d |  |  | 大强 | 1780h |
| 62 | 4.1 | **风格确定** | 17.5d? | 2012-02-09 | 2012-03-05 |  | 48d |  |  |  | 132h |
| 63 | 4.1.1 | **UI风格确定** | 5.5d? | 2012-02-27 | 2012-03-05 |  | 48d |  |  | 大强 | 116h |
| 64 | 4.1.1.1 | 参照产品，对比 | 3d? | 2012-02-27 | 2012-02-29 |  | 50d | 0d | finish no earlier than 2012-02-29 | 王晔 | 24h |
| 65 | 4.1.1.2 | 和策划讨论，确定下风格 | 0.5d | 2012-03-01 | 2012-03-01 | 64 | 50d |  |  | 王晔; 大强; Eric; 姜浩 | 16h |
| 66 | 4.1.1.3 | 出初稿 | 2d | 2012-03-01 | 2012-03-02 |  | 48d | 0d | start no earlier than 2012-03-01 | 王晔 | 16h |
| 67 | 4.1.1.4 | 审核，讨论，定稿 | 0.5d | 2012-03-05 | 2012-03-05 | 66 | 48d |  |  | 王晔; 大强; Eric; 姜浩 | 16h |
| 68 | 4.1.2 | 场景风格确定 | 3d | 2012-02-10 | 2012-02-14 |  | 61.5d |  | start no earlier than 2012-02-10 |  |  |
| 69 | 4.1.3 | 人设和道具风格确定 | 1d | 2012-02-09 | 2012-02-09 |  | 64.5d |  | start no earlier than 2012-02-09 | 大强; 姜浩 | 16h |
| 70 | 4.2 | **图量确定** | 36d? | 2012-02-10 | 2012-03-30 |  | 28.5d |  |  |  | 1352h |
| 71 | 4.2.1 | **美术前期素材（给到技术开发起步用）** | 2d | 2012-02-10 | 2012-02-13 |  | 28.5d | 0d |  |  | 48h |
| 72 | 4.2.1.1 | 1个场景 | 2d | 2012-02-10 | 2012-02-13 |  | 28.5d |  | start no earlier than 2012-02-10 | 余颖慧 | 16h |
| 73 | 4.2.1.2 | 1个人物 | 2d | 2012-02-10 | 2012-02-13 |  | 28.5d |  | start no earlier than 2012-02-10 | 赵子敬 | 16h |
| 74 | 4.2.1.3 | 1个UI初稿 | 2d | 2012-02-10 | 2012-02-13 |  | 28.5d |  | start no earlier than 2012-02-10 | 余晓莉 | 16h |

Notes:
- 54: ？？？脚本可复用？
- 68: 2月12日，13日讨论2稿确定后，可以开始开发
- 71: 具体包括： 1个场景，一个人物，1个UI初稿

| ID | WBS | Task | Duration | Start | Finish | Predecessors | Complete | Remaining | Total slack | Free slack | Constraint | Resources | Work | Actual work |
| --- | --- | --- | --- | --- | --- | --- | --- | --- | --- | --- | --- | --- | --- | --- |
| 75 | 4.2.2 | **美术工作量** | 34d? | 2012-02-14 | 2012-03-30 | 71 |  |  | 28.5d |  |  |  | 1304h |  |
| 76 | 4.2.2.1 | 美术UI开发 | 34d? | 2012-02-14 | 2012-03-30 |  |  |  | 28.5d |  |  | 王晔; 余晓莉 | 544h |  |
| 77 | 4.2.2.2 | 美术道具开发 | 26d? | 2012-02-24 | 2012-03-30 |  |  |  | 28.5d |  | start no earlier than 2012-02-24 | 张燕南 | 208h |  |
| 78 | 4.2.2.3 | **美术人设开发** | 1d? | 2012-02-14 | 2012-02-14 |  |  |  | 61.5d |  |  | 赵子敬 | 8h |  |
| 79 | 4.2.2.3.1 | 人物 | 1d? | 2012-02-14 | 2012-02-14 |  |  |  | 61.5d |  |  |  |  |  |
| 80 | 4.2.2.3.2 | 怪物 | 1d? | 2012-02-14 | 2012-02-14 |  |  |  | 61.5d |  |  |  |  |  |
| 81 | 4.2.2.4 | 特效 | 19d? | 2012-02-14 | 2012-03-09 |  |  |  | 28.5d | 0d |  | 大强 | 152h |  |
| 82 | 4.2.2.5 | 过场动画 | 15d? | 2012-03-12 | 2012-03-30 | 81 |  |  | 28.5d |  |  | 大强 | 120h |  |
| 83 | 4.2.2.6 | **场景** | 9d? | 2012-02-27 | 2012-03-08 |  |  |  | 44.5d |  |  | 张燕南; 大强 | 272h |  |
| 84 | 4.2.2.6.1 | 世界地图 | 8d? | 2012-02-28 | 2012-03-08 |  |  |  | 44.5d |  | finish no earlier than 2012-03-08 | 大强 | 64h |  |
| 85 | 4.2.2.6.2 | 战斗场景 | 1d? | 2012-02-27 | 2012-02-27 |  |  |  | 52.5d |  | start no earlier than 2012-02-27 | 张燕南 | 8h |  |
| 86 | 4.2.2.6.3 | 地形块 | 7d? | 2012-02-29 | 2012-03-08 |  |  |  | 44.5d |  | finish no earlier than 2012-03-08 | 张燕南 | 56h |  |
| 87 | 5 | **战斗功能模块开发** | 21d? | 2012-02-06 A | 2012-03-05 |  | 98% | 0.32d? | 24.5d | 0d |  | 夏俊杰; 章昕 | 1376h | 1161.6h |
| 88 | 5.1 | **策划和前期准备** | 5d | 2012-02-06 A | 2012-02-10 A |  | 100% |  |  |  |  |  | 200h | 200h |
| 89 | 5.1.1 | 策划初稿审核（详细策划案，原型，UI需求） | 2d | 2012-02-06 A | 2012-02-07 A |  | 100% |  |  |  | start no earlier than 2012-02-06 | Eric; 立军; 张琦; 大强; 姜浩 | 80h | 80h |
| 90 | 5.1.2 | 模块前后端需求分析，设计，定义接口 | 3d | 2012-02-08 A | 2012-02-10 A |  | 100% |  |  |  | finish no earlier than 2012-02-10 | 立军; 张琦; Eric | 72h | 72h |
| 91 | 5.1.3 | 美术图量分析和风格确定 | 3d | 2012-02-08 A | 2012-02-10 A | 89 | 100% |  |  |  |  | 大强; Eric | 48h | 48h |
| 92 | 5.2 | **开发** | 16d | 2012-02-10 A | 2012-03-02 |  | 99% | 0d | 0d |  |  |  | 824h | 808h |
| 93 | 5.2.1 | **美术前期素材（给到技术开发起步用）** | 2d | 2012-02-10 A | 2012-02-13 A |  | 100% |  |  |  |  |  | 48h | 48h |
| 94 | 5.2.1.1 | 1个场景 | 2d | 2012-02-10 A | 2012-02-13 A |  | 100% |  |  |  | start no earlier than 2012-02-10 | 余颖慧 | 16h | 16h |
| 95 | 5.2.1.2 | 1个人物 | 2d | 2012-02-10 A | 2012-02-13 A |  | 100% |  |  |  | start no earlier than 2012-02-10 | 赵子敬 | 16h | 16h |
| 96 | 5.2.1.3 | 1个UI初稿 | 2d | 2012-02-10 A | 2012-02-13 A |  | 100% |  |  |  | start no earlier than 2012-02-10 | 余晓莉 | 16h | 16h |
| 97 | 5.2.2 | **前端开发** | 16d | 2012-02-10 A | 2012-03-02 |  | 99% | 0d | 0d |  |  | 张琦; 夏俊杰 | 408h | 392h |
| 98 | 5.2.2.1 | 项目需求分析，模块定义，接口定义，代码设计 | 3d | 2012-02-10 A | 2012-02-14 A |  | 100% |  |  |  | start no earlier than 2012-02-10 | 张琦; 夏俊杰 | 48h | 48h |
| 99 | 5.2.2.2 | CODING | 13d | 2012-02-15 A | 2012-03-02 A | 98 | 100% |  |  |  | finish no earlier than 2012-02-29 | 夏俊杰 | 104h | 104h |

Notes:
- 76: 关键操作：战斗和合成 / 主场景的经验条，按钮，上下栏，店铺的等级等，DIY，挪来挪去的箭头，日常按钮，布局，鼠标划上的效果 / 第一轮：先出UI框架初稿 （先给技术前端开发） / 第二轮：调整UI的美观和细化。（工作中不断调整） / 第三轮：美术和策划的进一步磨合（包括特效，细节等全面的调整，包括程序技术原型完成后，可以联调测试后，再调整） / 具体ＵＩ本身，先定参考风格（找一堆资料，然后和策划核对下风格，了解策划倾向的风格，然后按照ＵＩ自己的理解，做一些风格２～３个拿出来核对，然后确定一个风格，和主场景背景，还有边线，里面道具，人物等整体风格协调）
- 77: 副本和订单（和合成术有关），有些道具看下之前魔法是否可以复用 / 材料，装备，掉落的物品，血瓶，使用的物品（副本，和战斗） ４３个道具，上线１００个以上
- 78: 佣兵这块，具体需要和大强核对 / 6个人物，3个职业（每个职业一男一女），每个人物有20~22个动作，120个~130个动作 / 怪物的设计，做了7个怪物的形象，动作需求还需要进一步确定
- 81: ＋以上 / 包括３个职业，每个职业５种技能（技能不同等级无特效） / 怪的特效 / 每个场景的特效
- 82: 初始有３个大场景（城镇，翡翠洞，世界地图）
- 83: 地形块集合，上线之前完成4个副本场景（地图编辑器），还有3个战斗场景 / 世界地图由大强来做，上面的图标每天３～４个出
- 84: 包含17个图标
- 85: 战斗场景每个大概1~1.5天
- 86: 先完成3个副本场景的场景图
- 87: 3周工作日
- 93: 具体包括： 1个场景，一个人物，1个UI初稿

| ID | WBS | Task | Duration | Start | Finish | Predecessors | Complete | Remaining | Total slack | Free slack | Constraint | Resources | Work | Actual work |
| --- | --- | --- | --- | --- | --- | --- | --- | --- | --- | --- | --- | --- | --- | --- |
| 100 | 5.2.3 | **后端开发** | 12d | 2012-02-13 A | 2012-02-28 A |  | 100% |  |  |  |  | 章昕; 立军 | 192h | 192h |
| 101 | 5.2.3.1 | 项目需求分析，模块定义，接口定义，代码设计 | 2d | 2012-02-13 A | 2012-02-14 A |  | 100% |  |  |  | start no earlier than 2012-02-13 |  |  |  |
| 102 | 5.2.3.2 | CODING | 11d | 2012-02-14 A | 2012-02-28 A |  | 100% |  |  |  | start no earlier than 2012-02-14 |  |  |  |
| 103 | 5.2.4 | **美术工作** | 11d | 2012-02-15 A | 2012-02-29 A |  | 100% |  |  |  |  |  | 176h | 176h |
| 104 | 5.2.4.1 | 美术UI开发 | 7d | 2012-02-20 A | 2012-02-28 A |  | 100% |  |  |  | start no earlier than 2012-02-20 | 余晓莉 | 56h | 56h |
| 105 | 5.2.4.2 | 美术道具开发 | 4d | 2012-02-20 A | 2012-02-23 A |  | 100% |  |  |  | start no earlier than 2012-02-20 | 张燕南 | 32h | 32h |
| 106 | 5.2.4.3 | 美术人设开发 | 11d | 2012-02-15 A | 2012-02-29 A |  | 100% |  |  |  | finish no earlier than 2012-02-29 | 赵子敬 | 88h | 88h |
| 107 | 5.3 | **联调和测试** | 1d? | 2012-03-05 | 2012-03-05 | 99 |  |  | 24.5d |  |  |  | 16h |  |
| 108 | 5.3.1 | 策划和测试确认OK | 1d? | 2012-03-05 | 2012-03-05 |  |  |  | 24.5d |  |  | Eric; 桃子 | 16h |  |
| 109 | 6 | **合成模块开发** | 16d? | 2012-02-06 A | 2012-02-27 |  | 97% | 0.43d? | 10.5d | 0d |  | 李钊; 张诚; 小庆 | 688h | 634.81h |
| 110 | 6.1 | **策划和前期准备** | 7d | 2012-02-06 A | 2012-02-14 A |  | 100% |  |  |  |  |  | 120h | 120h |
| 111 | 6.1.1 | 策划初稿审核（详细策划案，原型，UI需求） | 2d | 2012-02-06 A | 2012-02-07 A |  | 100% |  |  |  | start no earlier than 2012-02-06 | 姜浩 | 16h | 16h |
| 112 | 6.1.2 | 模块前后端需求分析，设计，定义接口 | 3d | 2012-02-10 A | 2012-02-14 A |  | 100% |  |  |  | start no earlier than 2012-02-10 | 立军; 张琦; 姜浩 | 72h | 72h |
| 113 | 6.1.3 | 美术图量分析和风格确定 | 2d | 2012-02-09 A | 2012-02-10 A |  | 100% |  |  |  | start no earlier than 2012-02-09 | 大强; 姜浩 | 32h | 32h |
| 114 | 6.2 | **开发** | 2d | 2012-02-22 A | 2012-02-23 A |  | 100% |  |  |  |  |  | 48h | 48h |
| 115 | 6.2.1 | **美术前期素材（给到技术开发起步用）** | 2d | 2012-02-22 A | 2012-02-23 A |  | 100% |  |  |  |  |  | 48h | 48h |
| 116 | 6.2.1.1 | 1个场景 | 2d | 2012-02-22 A | 2012-02-23 A |  | 100% |  |  |  | start no earlier than 2012-02-22 | 余颖慧 | 16h | 16h |
| 117 | 6.2.1.2 | 1个人物 | 2d | 2012-02-22 A | 2012-02-23 A |  | 100% |  |  |  | start no earlier than 2012-02-22 | 赵子敬 | 16h | 16h |
| 118 | 6.2.1.3 | 1个UI初稿 | 2d | 2012-02-22 A | 2012-02-23 A |  | 100% |  |  |  | start no earlier than 2012-02-22 | 余晓莉 | 16h | 16h |
| 119 | 6.3 | **前端开发** | 9d | 2012-02-09 A | 2012-02-21 A |  | 100% |  |  |  |  | 小庆 | 72h | 72h |
| 120 | 6.3.1 | 项目需求分析，模块定义，接口定义，代码设计 | 3d | 2012-02-13 A | 2012-02-15 A |  | 100% |  |  |  | start no earlier than 2012-02-13 |  |  |  |
| 121 | 6.3.2 | CODING | 9d | 2012-02-09 A | 2012-02-21 A |  | 100% |  |  |  | finish no earlier than 2012-02-21 |  |  |  |
| 122 | 6.4 | **后端开发** | 8d | 2012-02-13 A | 2012-02-22 A |  | 100% |  |  |  |  | 李钊 | 64h | 64h |
| 123 | 6.4.1 | 项目需求分析，模块定义，接口定义，代码设计 | 2d | 2012-02-13 A | 2012-02-14 A |  | 100% |  |  |  | start no earlier than 2012-02-13 |  |  |  |
| 124 | 6.4.2 | CODING | 7d | 2012-02-14 A | 2012-02-22 A |  | 100% |  |  |  | finish no earlier than 2012-02-22 |  |  |  |
| 125 | 6.5 | 联调和测试 | 2d | 2012-02-23 A | 2012-02-24 A | 124 | 100% |  |  |  | start no earlier than 2012-02-17 |  |  |  |

Notes:
- 101: 接口定义：战斗开始，战斗结束 / 后端有一个验证器，验证过程。
- 104: 战斗UI
- 106: 人设和动效
- 107: 数值内容等最好先做出来
- 109: 仓库？？？ DIY？9个工作日
- 112: 2月12日，13日讨论2稿确定后，可以开始开发
- 115: 具体包括： 1个场景，一个人物，1个UI初稿
- 120: 接口定义：战斗开始，战斗结束 / 后端有一个验证器，验证过程。
- 123: 接口定义：战斗开始，战斗结束 / 后端有一个验证器，验证过程。

| ID | WBS | Task | Duration | Start | Finish | Predecessors | Complete | Remaining | Total slack | Free slack | Constraint | Resources | Work | Actual work |
| --- | --- | --- | --- | --- | --- | --- | --- | --- | --- | --- | --- | --- | --- | --- |
| 126 | 6.6 | **补充联调一次** | 1d? | 2012-02-27 | 2012-02-27 |  |  |  | 10.5d |  |  |  |  |  |
| 127 | 6.6.1 | 策划和测试确认OK | 1d? | 2012-02-27 | 2012-02-27 | 125 |  |  | 10.5d |  |  |  |  |  |
| 128 | 7 | 背包（仓库） | 3d? | 2012-03-05 | 2012-03-07 |  |  |  | 45.5d |  | finish no earlier than 2012-03-07 |  |  |  |
| 129 | 8 | 主场景及DIY | 1d | 2012-03-06 | 2012-03-06 |  |  |  | 46.5d |  | start no earlier than 2012-03-06 |  |  |  |
| 130 | 9 | **经营模块开发** | 18d | 2012-02-23 A | 2012-03-19 |  | 32% | 12.16d | 37.5d |  |  | 小庆; 张琦; 李钊 | 896h | 284.11h |
| 131 | 9.1 | **策划和前期准备** | 4d | 2012-02-23 A | 2012-02-28 A |  | 100% |  |  |  |  |  | 96h | 96h |
| 132 | 9.1.1 | 策划初稿审核（详细策划案，原型，逻辑流程图） | 2d | 2012-02-23 A | 2012-02-24 A |  | 100% |  |  |  | start no earlier than 2012-02-23 | Eric | 16h | 16h |
| 133 | 9.1.2 | 模块前后端需求分析，设计，定义接口 | 2d | 2012-02-27 A | 2012-02-28 A | 132 | 100% |  |  |  | start no earlier than 2012-02-10 | 立军; 张琦; Eric | 48h | 48h |
| 134 | 9.1.3 | 美术图量分析和确定前置美术 | 2d | 2012-02-23 A | 2012-02-24 A |  | 100% |  |  |  | start no earlier than 2012-02-23 | 大强; Eric | 32h | 32h |
| 135 | 9.2 | **开发** | 12d | 2012-02-24 A | 2012-03-12 |  | 23% | 9.23d | 42.5d |  |  |  | 368h | 48h |
| 136 | 9.2.1 | **美术前期素材（给到技术开发起步用）** | 2d | 2012-02-24 A | 2012-02-27 A | 115 | 100% |  |  |  |  |  | 48h | 48h |
| 137 | 9.2.1.1 | 1个场景 | 2d | 2012-02-24 A | 2012-02-27 A |  | 100% |  |  |  | start no earlier than 2012-02-10 | 张燕南 | 16h | 16h |
| 138 | 9.2.1.2 | 1个人物 | 2d | 2012-02-24 A | 2012-02-27 A |  | 100% |  |  |  | start no earlier than 2012-02-10 | 赵子敬 | 16h | 16h |
| 139 | 9.2.1.3 | 1个UI初稿 | 2d | 2012-02-24 A | 2012-02-27 A |  | 100% |  |  |  | start no earlier than 2012-02-10 | 王晔 | 16h | 16h |
| 140 | 9.2.2 | **前端开发** | 11d | 2012-02-27 | 2012-03-12 |  |  |  | 37.5d |  |  | 小庆 | 176h |  |
| 141 | 9.2.2.1 | 项目需求分析，模块定义，接口定义，代码设计 | 2d | 2012-02-27 | 2012-02-28 | 134 |  |  | 37.5d | 0d | start no earlier than 2012-02-13 | 张琦 | 16h |  |
| 142 | 9.2.2.2 | CODING | 9d | 2012-02-29 | 2012-03-12 | 141 |  |  | 37.5d | 0d | finish no earlier than 2012-02-21 | 小庆 | 72h |  |
| 143 | 9.2.3 | **后端开发** | 9d | 2012-02-29 | 2012-03-12 |  |  |  | 42.5d |  |  | 李钊 | 144h |  |
| 144 | 9.2.3.1 | 项目需求分析，模块定义，接口定义，代码设计 | 2d | 2012-02-29 | 2012-03-01 | 133 |  |  | 42.5d | 0d | start no earlier than 2012-02-13 | 李钊 | 16h |  |
| 145 | 9.2.3.2 | CODING | 7d | 2012-03-02 | 2012-03-12 | 144 |  |  | 42.5d |  | finish no earlier than 2012-02-21 | 李钊 | 56h |  |
| 146 | 9.3 | 联调和测试 | 5d | 2012-03-13 | 2012-03-19 | 142 |  |  | 37.5d |  | start no earlier than 2012-02-17 |  |  |  |
| 147 | 10 | **世界地图模块开发** | 4d | 2012-03-06 | 2012-03-09 | 87 |  |  | 24.5d | 0d |  | 章昕; 张诚 | 240h |  |
| 148 | 10.1 | **策划和前期准备** | 2d | 2012-03-06 | 2012-03-07 |  |  |  | 24.5d |  |  |  | 48h |  |
| 149 | 10.1.1 | 策划初稿审核（详细策划案，原型，UI需求） | 1d | 2012-03-06 | 2012-03-06 |  |  |  | 24.5d | 0d | start no earlier than 2012-02-06 | 姜浩 | 8h |  |
| 150 | 10.1.2 | 模块前后端需求分析，设计，定义接口 | 1d | 2012-03-07 | 2012-03-07 | 149 |  |  | 24.5d | 0d | start no earlier than 2012-02-10 | 立军; 张琦; 姜浩 | 24h |  |
| 151 | 10.1.3 | 美术图量分析和风格确定 | 1d | 2012-03-06 | 2012-03-06 |  |  |  | 27.5d |  | start no earlier than 2012-02-09 | 大强; 姜浩 | 16h |  |

Notes:
- 126: 换上UI和数据再次联调一次，时间待定
- 128: 完成了80%，缺少使用用品，如药水等
- 129: 完成了40%~50%，主场景完成了90%，需要进一步的DIY技术开发
- 130: 10-15个工作日，2周
- 132: 逻辑流程图需要进一步细化
- 133: 2月12日，13日讨论2稿确定后，可以开始开发
- 136: 具体包括： 1个场景，一个人物，1个UI初稿
- 141: 接口定义：战斗开始，战斗结束 / 后端有一个验证器，验证过程。
- 144: 接口定义：战斗开始，战斗结束 / 后端有一个验证器，验证过程。
- 147: 3天左右？
- 150: 2月12日，13日讨论2稿确定后，可以开始开发

| ID | WBS | Task | Duration | Start | Finish | Predecessors | Total slack | Free slack | Constraint | Resources | Work |
| --- | --- | --- | --- | --- | --- | --- | --- | --- | --- | --- | --- |
| 152 | 10.2 | **开发** | 3d | 2012-03-06 | 2012-03-08 |  | 24.5d | 0d |  |  | 128h |
| 153 | 10.2.1 | **美术前期素材（给到技术开发起步用）** | 2d | 2012-03-06 | 2012-03-07 |  | 25.5d |  |  |  | 32h |
| 154 | 10.2.1.1 | 世界地图 | 2d | 2012-03-06 | 2012-03-07 |  | 25.5d |  | start no earlier than 2012-02-10 | 余颖慧 | 16h |
| 155 | 10.2.1.2 | 动效 | 2d | 2012-03-06 | 2012-03-07 |  | 25.5d |  | start no earlier than 2012-02-10 | 赵子敬 | 16h |
| 156 | 10.2.2 | **前端开发** | 3d | 2012-03-06 | 2012-03-08 |  | 24.5d |  |  | 张琦; 张诚 | 48h |
| 157 | 10.2.2.1 | 项目需求分析，模块定义，接口定义，代码设计 | 1d | 2012-03-08 | 2012-03-08 | 150 | 24.5d |  | start no earlier than 2012-02-13 |  |  |
| 158 | 10.2.2.2 | CODING | 3d | 2012-03-06 | 2012-03-08 |  | 24.5d |  | finish no earlier than 2012-02-21 |  |  |
| 159 | 10.2.3 | **后端开发** | 3d | 2012-03-06 | 2012-03-08 |  | 24.5d |  |  | 章昕; 立军 | 48h |
| 160 | 10.2.3.1 | 项目需求分析，模块定义，接口定义，代码设计 | 1d | 2012-03-06 | 2012-03-06 |  | 26.5d |  | start no earlier than 2012-02-13 |  |  |
| 161 | 10.2.3.2 | CODING | 3d | 2012-03-06 | 2012-03-08 |  | 24.5d |  | finish no earlier than 2012-02-21 |  |  |
| 162 | 10.3 | 联调和测试 | 1d | 2012-03-09 | 2012-03-09 | 152 | 24.5d |  | start no earlier than 2012-02-17 |  |  |
| 163 | 11 | **冒险模块开发** | 17d | 2012-03-13 | 2012-04-05 | 109 | 0d |  |  | 夏俊杰; 章昕 | 640h |
| 164 | 11.1 | **策划和前期准备** | 6d | 2012-03-13 | 2012-03-21 |  | 0d |  |  |  | 128h |
| 165 | 11.1.1 | 策划初稿审核（详细策划案，原型，UI需求） | 3d | 2012-03-13 | 2012-03-16 | 28 | 0d |  | start no earlier than 2012-02-06 | 姜浩 | 24h |
| 166 | 11.1.2 | 模块前后端需求分析，设计，定义接口 | 3d | 2012-03-16 | 2012-03-21 | 165 | 0d |  | start no earlier than 2012-02-10 | 立军; 张琦; 姜浩 | 72h |
| 167 | 11.1.3 | 美术图量分析 | 2d | 2012-03-16 | 2012-03-20 | 165 | 6d | 0d | start no earlier than 2012-02-09 | 大强; 姜浩 | 32h |
| 168 | 11.2 | **开发** | 7d | 2012-03-20 | 2012-03-29 |  | 1d |  |  |  | 240h |
| 169 | 11.2.1 | **美术前期素材（给到技术开发起步用）** | 2d | 2012-03-20 | 2012-03-22 | 167 | 10d |  |  |  | 48h |
| 170 | 11.2.1.1 | 1个场景 | 2d | 2012-03-20 | 2012-03-22 |  | 10d |  | start no earlier than 2012-02-10 | 张燕南 | 16h |
| 171 | 11.2.1.2 | 1个人物 | 2d | 2012-03-20 | 2012-03-22 |  | 10d |  | start no earlier than 2012-02-10 | 赵子敬 | 16h |
| 172 | 11.2.1.3 | 1个UI初稿 | 2d | 2012-03-20 | 2012-03-22 |  | 10d |  | start no earlier than 2012-02-10 | 余晓莉 | 16h |
| 173 | 11.2.2 | **前端开发** | 6d | 2012-03-21 | 2012-03-29 | 166 | 0d |  |  | 张琦; 夏俊杰 | 96h |
| 174 | 11.2.2.1 | 项目需求分析，模块定义，接口定义，代码设计 | 2d | 2012-03-21 | 2012-03-23 |  | 4d |  | start no earlier than 2012-02-13 |  |  |
| 175 | 11.2.2.2 | CODING | 6d | 2012-03-21 | 2012-03-29 |  | 0d |  | finish no earlier than 2012-02-21 |  |  |

Notes:
- 153: 具体包括： 1个场景，一个人物，1个UI初稿
- 157: 接口定义：战斗开始，战斗结束 / 后端有一个验证器，验证过程。
- 160: 接口定义：战斗开始，战斗结束 / 后端有一个验证器，验证过程。
- 163: 1周左右
- 166: 2月12日，13日讨论2稿确定后，可以开始开发
- 169: 具体包括： 1个场景，一个人物，1个UI初稿
- 174: 接口定义：战斗开始，战斗结束 / 后端有一个验证器，验证过程。

| ID | WBS | Task | Duration | Start | Finish | Predecessors | Total slack | Free slack | Constraint | Resources | Work |
| --- | --- | --- | --- | --- | --- | --- | --- | --- | --- | --- | --- |
| 176 | 11.2.3 | **后端开发** | 6d | 2012-03-20 | 2012-03-28 | 167 | 6d |  |  | 章昕; 立军 | 96h |
| 177 | 11.2.3.1 | 项目需求分析，模块定义，接口定义，代码设计 | 2d | 2012-03-20 | 2012-03-22 |  | 10d |  | start no earlier than 2012-02-13 |  |  |
| 178 | 11.2.3.2 | CODING | 6d | 2012-03-20 | 2012-03-28 |  | 6d |  | finish no earlier than 2012-02-21 |  |  |
| 179 | 11.3 | 联调和测试 | 5d | 2012-03-29 | 2012-04-05 | 173 | 0d |  | start no earlier than 2012-02-17 |  |  |
| 180 | 12 | **佣兵模块开发** | 16d | 2012-03-12 | 2012-04-02 | 147 | 24.5d | 0d |  | 小庆; 张诚; 李钊 | 744h |
| 181 | 12.1 | **策划和前期准备** | 5d | 2012-03-12 | 2012-03-16 |  | 24.5d |  |  |  | 120h |
| 182 | 12.1.1 | 策划初稿审核（详细策划案，原型，UI需求） | 2d | 2012-03-12 | 2012-03-13 |  | 24.5d | 0d | start no earlier than 2012-02-06 | 姜浩 | 16h |
| 183 | 12.1.2 | 模块前后端需求分析，设计，定义接口 | 3d | 2012-03-14 | 2012-03-16 | 182 | 24.5d | 0d | start no earlier than 2012-02-10 | 立军; 张琦; 姜浩 | 72h |
| 184 | 12.1.3 | 美术图量分析 | 2d | 2012-03-14 | 2012-03-15 | 182 | 32.5d | 0d | start no earlier than 2012-02-09 | 大强; 姜浩 | 32h |
| 185 | 12.2 | **开发** | 7d | 2012-03-16 | 2012-03-26 |  | 25.5d |  |  |  | 240h |
| 186 | 12.2.1 | **美术前期素材（给到技术开发起步用）** | 2d | 2012-03-16 | 2012-03-19 | 184 | 34.5d |  |  |  | 48h |
| 187 | 12.2.1.1 | 1个场景 | 2d | 2012-03-16 | 2012-03-19 |  | 34.5d |  | start no earlier than 2012-02-10 | 张燕南 | 16h |
| 188 | 12.2.1.2 | 1个人物 | 2d | 2012-03-16 | 2012-03-19 |  | 34.5d |  | start no earlier than 2012-02-10 | 赵子敬 | 16h |
| 189 | 12.2.1.3 | 1个UI初稿 | 2d | 2012-03-16 | 2012-03-19 |  | 34.5d |  | start no earlier than 2012-02-10 | 余晓莉 | 16h |
| 190 | 12.2.2 | **前端开发** | 6d | 2012-03-19 | 2012-03-26 | 183 | 24.5d | 0d |  | 张琦; 夏俊杰 | 96h |
| 191 | 12.2.2.1 | 项目需求分析，模块定义，接口定义，代码设计 | 2d | 2012-03-19 | 2012-03-20 |  | 28.5d |  | start no earlier than 2012-02-13 |  |  |
| 192 | 12.2.2.2 | CODING | 6d | 2012-03-19 | 2012-03-26 |  | 24.5d |  | finish no earlier than 2012-02-21 |  |  |
| 193 | 12.2.3 | **后端开发** | 6d | 2012-03-19 | 2012-03-26 | 183 | 29.5d |  |  | 李钊; 立军 | 96h |
| 194 | 12.2.3.1 | 项目需求分析，模块定义，接口定义，代码设计 | 2d | 2012-03-19 | 2012-03-20 |  | 33.5d |  | start no earlier than 2012-02-13 |  |  |
| 195 | 12.2.3.2 | CODING | 6d | 2012-03-19 | 2012-03-26 |  | 29.5d |  | finish no earlier than 2012-02-21 |  |  |
| 196 | 12.2.4 | **美术工作** | 4d | 2012-03-16 | 2012-03-21 | 184 | 32.5d |  |  |  |  |
| 197 | 12.2.4.1 | 确定美术图量和美术风格 | 4d | 2012-03-16 | 2012-03-21 |  | 32.5d |  |  |  |  |
| 198 | 12.2.4.2 | 美术UI开发 | 4d | 2012-03-16 | 2012-03-21 |  | 32.5d |  |  |  |  |
| 199 | 12.2.4.3 | 美术道具开发 | 4d | 2012-03-16 | 2012-03-21 |  | 32.5d |  |  |  |  |
| 200 | 12.2.4.4 | 美术人设开发 | 4d | 2012-03-16 | 2012-03-21 |  | 32.5d |  |  |  |  |
| 201 | 12.3 | 联调和测试 | 5d | 2012-03-27 | 2012-04-02 | 190 | 24.5d |  | start no earlier than 2012-02-17 |  |  |

Notes:
- 177: 接口定义：战斗开始，战斗结束 / 后端有一个验证器，验证过程。
- 180: 包含装备，技能？ / 1周？
- 183: 2月12日，13日讨论2稿确定后，可以开始开发
- 186: 具体包括： 1个场景，一个人物，1个UI初稿
- 191: 接口定义：战斗开始，战斗结束 / 后端有一个验证器，验证过程。
- 194: 接口定义：战斗开始，战斗结束 / 后端有一个验证器，验证过程。

| ID | WBS | Task | Duration | Start | Finish | Predecessors | Total slack | Constraint | Resources | Work |
| --- | --- | --- | --- | --- | --- | --- | --- | --- | --- | --- |
| 202 | 13 | **道具模块开发** | 3d | 2012-04-03 | 2012-04-05 | 180 | 24.5d |  | 小庆; 张诚; 张琦; 李钊 | 240h |
| 203 | 13.1 | **策划和前期准备** | 1d | 2012-04-03 | 2012-04-03 |  | 26.5d |  |  | 32h |
| 204 | 13.1.1 | 策划初稿审核（详细策划案，原型，UI需求） | 1d | 2012-04-03 | 2012-04-03 |  | 26.5d | start no earlier than 2012-02-06 | Eric | 8h |
| 205 | 13.1.2 | 模块前后端需求分析，设计，定义接口 | 1d | 2012-04-03 | 2012-04-03 |  | 26.5d | start no earlier than 2012-02-10 | 立军; 张琦; Eric | 24h |
| 206 | 13.2 | **开发** | 3d | 2012-04-03 | 2012-04-05 |  | 24.5d |  |  | 112h |
| 207 | 13.2.1 | **美术前期素材（给到技术开发起步用）** | 2d | 2012-04-03 | 2012-04-04 |  | 25.5d |  |  | 16h |
| 208 | 13.2.1.1 | 1个UI初稿 | 2d | 2012-04-03 | 2012-04-04 |  | 25.5d | start no earlier than 2012-02-10 | 余晓莉 | 16h |
| 209 | 13.2.2 | **前端开发** | 3d | 2012-04-03 | 2012-04-05 |  | 24.5d |  | 张琦; 小庆 | 72h |
| 210 | 13.2.2.1 | 项目需求分析，模块定义，接口定义，代码设计 | 1d | 2012-04-03 | 2012-04-03 |  | 26.5d | start no earlier than 2012-02-13 |  |  |
| 211 | 13.2.2.2 | CODING | 3d | 2012-04-03 | 2012-04-05 |  | 24.5d | finish no earlier than 2012-02-21 | 小庆 | 24h |
| 212 | 13.2.3 | **后端开发** | 3d | 2012-04-03 | 2012-04-05 |  | 24.5d |  | 李钊 | 24h |
| 213 | 13.2.3.1 | 项目需求分析，模块定义，接口定义，代码设计 | 1d | 2012-04-03 | 2012-04-03 |  | 26.5d | start no earlier than 2012-02-13 |  |  |
| 214 | 13.2.3.2 | CODING | 3d | 2012-04-03 | 2012-04-05 |  | 24.5d | finish no earlier than 2012-02-21 |  |  |
| 215 | 13.3 | 联调和测试 | 1d | 2012-04-03 | 2012-04-03 |  | 26.5d | start no earlier than 2012-02-17 |  |  |
| 216 | 14 | **任务和剧情模块开发** | 10d | 2012-04-05 | 2012-04-19 | 163 | 0d |  | 张琦; 章昕 | 352h |
| 217 | 14.1 | **策划和前期准备** | 1d | 2012-04-05 | 2012-04-06 |  | 0d |  |  | 48h |
| 218 | 14.1.1 | 策划初稿审核（详细策划案，原型，UI需求） | 1d | 2012-04-05 | 2012-04-06 |  | 0d | start no earlier than 2012-02-06 | 姜浩 | 8h |
| 219 | 14.1.2 | 模块前后端需求分析，设计，定义接口 | 1d | 2012-04-05 | 2012-04-06 |  | 0d | start no earlier than 2012-02-10 | 立军; 张琦; 姜浩 | 24h |
| 220 | 14.1.3 | 美术图量分析和风格确定 | 1d | 2012-04-05 | 2012-04-06 |  | 0d | start no earlier than 2012-02-09 | 大强; 姜浩 | 16h |
| 221 | 14.2 | **美术前期素材（给到技术开发起步用）** | 2d | 2012-04-06 | 2012-04-10 | 217 | 7d |  |  | 16h |
| 222 | 14.2.1 | 1个UI初稿 | 2d | 2012-04-06 | 2012-04-10 |  | 7d | start no earlier than 2012-02-10 | 余晓莉 | 16h |
| 223 | 14.3 | **前端开发** | 4d | 2012-04-06 | 2012-04-12 | 217 | 0d |  | 张琦; 夏俊杰 | 64h |
| 224 | 14.3.1 | 项目需求分析，模块定义，接口定义，代码设计 | 1d | 2012-04-06 | 2012-04-09 |  | 8d | start no earlier than 2012-02-13 |  |  |
| 225 | 14.3.2 | CODING | 4d | 2012-04-06 | 2012-04-12 |  | 0d | finish no earlier than 2012-02-21 |  |  |

Notes:
- 202: 商店？人民币道具系统？ / 3~5天？
- 205: 2月12日，13日讨论2稿确定后，可以开始开发
- 207: 具体包括： 1个场景，一个人物，1个UI初稿
- 210: 接口定义：战斗开始，战斗结束 / 后端有一个验证器，验证过程。
- 213: 接口定义：战斗开始，战斗结束 / 后端有一个验证器，验证过程。
- 216: ？？？脚本可复用？ 5个工作日（预测）
- 219: 2月12日，13日讨论2稿确定后，可以开始开发
- 221: 具体包括： 1个场景，一个人物，1个UI初稿
- 224: 接口定义：战斗开始，战斗结束 / 后端有一个验证器，验证过程。

| ID | WBS | Task | Duration | Start | Finish | Predecessors | Total slack | Free slack | Constraint | Resources | Work |
| --- | --- | --- | --- | --- | --- | --- | --- | --- | --- | --- | --- |
| 226 | 14.4 | **后端开发** | 4d | 2012-04-06 | 2012-04-12 | 217 | 5d |  |  | 章昕; 立军 | 64h |
| 227 | 14.4.1 | 项目需求分析，模块定义，接口定义，代码设计 | 1d | 2012-04-06 | 2012-04-09 |  | 8d |  | start no earlier than 2012-02-13 |  |  |
| 228 | 14.4.2 | CODING | 4d | 2012-04-06 | 2012-04-12 |  | 5d |  | finish no earlier than 2012-02-21 |  |  |
| 229 | 14.5 | 联调和测试 | 5d | 2012-04-12 | 2012-04-19 | 225 | 0d |  | start no earlier than 2012-02-17 |  |  |
| 230 | 15 | **上线前需完成模块** | 3d? | 2012-04-19 | 2012-04-24 | 216 | 10d | 0d |  |  |  |
| 231 | 15.1 | **交互系统** | 3d | 2012-04-19 | 2012-04-24 |  | 10d |  |  |  |  |
| 232 | 15.1.1 | 策划初稿审核 | 2d | 2012-04-19 | 2012-04-23 |  | 11d |  | start no earlier than 2012-02-06 |  |  |
| 233 | 15.1.2 | 开发 | 3d | 2012-04-19 | 2012-04-24 |  | 10d |  | start no earlier than 2012-02-10 |  |  |
| 234 | 15.1.3 | 测试 | 2d | 2012-04-19 | 2012-04-23 |  | 11d |  | start no earlier than 2012-02-09 |  |  |
| 235 | 15.2 | **礼物系统** | 2d? | 2012-04-19 | 2012-04-23 |  | 11d |  |  |  |  |
| 236 | 15.2.1 | 移植 | 2d | 2012-04-19 | 2012-04-23 |  | 11d |  |  |  |  |
| 237 | 15.2.2 | 导入礼物的内容 | 2d | 2012-04-19 | 2012-04-23 |  | 11d |  |  |  |  |
| 238 | 15.2.3 | 测试 | 1d? | 2012-04-19 | 2012-04-20 |  | 12d |  |  |  |  |
| 239 | 15.3 | **消息和日志** | 2d? | 2012-04-19 | 2012-04-23 |  | 11d |  |  |  |  |
| 240 | 15.3.1 | 移植 | 2d | 2012-04-19 | 2012-04-23 |  | 11d |  |  |  |  |
| 241 | 15.3.2 | 导入礼物的内容 | 2d | 2012-04-19 | 2012-04-23 |  | 11d |  |  |  |  |
| 242 | 15.3.3 | 测试 | 1d? | 2012-04-19 | 2012-04-20 |  | 12d |  |  |  |  |
| 243 | 15.4 | **新手引导** | 2d? | 2012-04-19 | 2012-04-23 |  | 11d |  |  |  |  |
| 244 | 15.4.1 | 移植 | 2d | 2012-04-19 | 2012-04-23 |  | 11d |  |  |  |  |
| 245 | 15.4.2 | 导入礼物的内容 | 2d | 2012-04-19 | 2012-04-23 |  | 11d |  |  |  |  |
| 246 | 15.4.3 | 测试 | 1d? | 2012-04-19 | 2012-04-20 |  | 12d |  |  |  |  |
| 247 | 15.5 | **每日登陆奖励** | 2d? | 2012-04-19 | 2012-04-23 |  | 11d |  |  |  |  |
| 248 | 15.5.1 | 移植 | 2d | 2012-04-19 | 2012-04-23 |  | 11d |  |  |  |  |
| 249 | 15.5.2 | 导入礼物的内容 | 2d | 2012-04-19 | 2012-04-23 |  | 11d |  |  |  |  |
| 250 | 15.5.3 | 测试 | 1d? | 2012-04-19 | 2012-04-20 |  | 12d |  |  |  |  |

Notes:
- 227: 接口定义：战斗开始，战斗结束 / 后端有一个验证器，验证过程。
- 230: 交互系统 / 礼物系统 / 消息和日志 / 新手引导 / 每日登陆 / 数据监控
- 233: 2月12日，13日讨论2稿确定后，可以开始开发
- 236: 具体包括： 1个场景，一个人物，1个UI初稿
- 240: 具体包括： 1个场景，一个人物，1个UI初稿
- 244: 具体包括： 1个场景，一个人物，1个UI初稿
- 248: 具体包括： 1个场景，一个人物，1个UI初稿

| ID | WBS | Task | Duration | Start | Finish | Predecessors | Total slack | Constraint | Resources | Work |
| --- | --- | --- | --- | --- | --- | --- | --- | --- | --- | --- |
| 251 | 16 | **后台数据监控** | 2d? | 2012-04-24 | 2012-04-26 | 230 | 10d |  |  |  |
| 252 | 16.1 | 策划 | 2d | 2012-04-24 | 2012-04-26 |  | 10d |  |  |  |
| 253 | 16.2 | 开发 | 2d | 2012-04-24 | 2012-04-26 |  | 10d |  |  |  |
| 254 | 16.3 | 测试 | 1d? | 2012-04-24 | 2012-04-25 |  | 11d |  |  |  |
| 255 | 17 | **测试** | 12d? | 2012-04-19 | 2012-05-07 | 216 | 0d |  |  |  |
| 256 | 17.1 | 测试计划 | 7d | 2012-04-19 | 2012-04-30 |  | 5d |  |  |  |
| 257 | 17.2 | 功能测试 | 2d | 2012-04-19 | 2012-04-23 |  | 10d |  |  |  |
| 258 | 17.3 | 性能测试 | 6d | 2012-04-19 | 2012-04-27 |  | 6d |  |  |  |
| 259 | 17.4 | 易用性测试 | 1d? | 2012-04-19 | 2012-04-20 |  | 11d |  |  |  |
| 260 | 17.5 | 压力测试 | 1d? | 2012-04-19 | 2012-04-20 |  | 11d |  |  |  |
| 261 | 18 | **上线流程** | 3d? | 2012-05-07 | 2012-05-10 | 255 | 0d |  |  | 120h |
| 262 | 18.1 | **接入准备** | 3d | 2012-05-07 | 2012-05-10 |  | 0d |  |  | 120h |
| 263 | 18.1.1 | 商务合作会谈 | 2d | 2012-05-07 | 2012-05-09 |  | 1d | start no earlier than 2012-02-06 | 姜浩 | 16h |
| 264 | 18.1.2 | API接入 | 3d | 2012-05-07 | 2012-05-10 |  | 0d | start no earlier than 2012-02-10 | 立军; 张琦; 姜浩 | 72h |
| 265 | 18.1.3 | 合同签订 | 2d | 2012-05-07 | 2012-05-09 |  | 1d | start no earlier than 2012-02-09 | 大强; 姜浩 | 32h |
| 266 | 18.2 | 展会的参与，市场推广 | 1d? | 2012-05-07 | 2012-05-08 |  | 2d |  |  |  |

Notes:
- 252: 具体包括： 1个场景，一个人物，1个UI初稿
- 255: ALPHA / BETA / 删档内测 / 正式测试上线
- 257: 具体包括： 1个场景，一个人物，1个UI初稿
- 261: ？？？脚本可复用？
- 264: 2月12日，13日讨论2稿确定后，可以开始开发
