# 魔法项目进度表20120302V

Schedule from MS Project, 2012-02-06 to 2012-05-09, A marks actual dates.

## Calendars

- 标准: Mon-Fri 08:00-12:00, 13:00-17:00; Sat-Sun off. Exceptions (off unless hours are given): 2012-03-31 to 2012-04-01 08:00-12:00, 13:00-17:00 (清明节调整上班), 2012-04-02 to 2012-04-04 (清明节调整放假).

## Resources

| Resource |
| --- |
| 柱子 |
| 李钊 |
| 张琦 |
| 大强 |
| 立军 |
| 王晔 |
| Eric |
| 文明 |
| 姜浩 |
| 章昕 |
| 夏俊杰 |
| 余颖慧 |
| 赵子敬 |
| 余晓莉 |
| 张 |
| 张诚 |
| 小庆 |
| 陈志荣 |
| E姜浩 |
| 陈志龙 |
| 张燕南 |
| 桃子 |

## Schedule

| ID | WBS | Task | Duration | Start | Finish | Predecessors | Complete | Remaining | Total slack | Free slack | Constraint | Resources | Work | Actual work |
| --- | --- | --- | --- | --- | --- | --- | --- | --- | --- | --- | --- | --- | --- | --- |
| 1 | 1 | **策划进度安排** | 43d? | 2012-02-06 A | 2012-04-05 |  | 19% | 34.8d? | 24d |  |  |  | 1492h | 378.52h |
| 2 | 1.1 | **策划和前期准备** | 17d? | 2012-02-06 | 2012-02-28 |  |  |  | 50d |  |  |  | 168h |  |
| 3 | 1.1.1 | 策划初稿审核（概念策划） | 2d | 2012-02-06 | 2012-02-07 |  |  |  | 52d | 2d | start no earlier than 2012-02-06 | 姜浩 | 16h |  |
| 4 | 1.1.2 | 审核 | 1d | 2012-02-10 | 2012-02-10 | 3 |  |  | 50d | 3d | start no earlier than 2012-02-10 | 立军; 张琦; 姜浩 | 24h |  |
| 5 | 1.1.3 | 完整原型（框架策划，逻辑流程图） | 8d | 2012-02-16 | 2012-02-27 | 4 |  |  | 50d | 0d | finish no earlier than 2012-02-27 | Eric; 姜浩 | 128h |  |
| 6 | 1.1.4 | 审核和确认 | 1d? | 2012-02-28 | 2012-02-28 | 5 |  |  | 47d |  | start no earlier than 2012-02-27 |  |  |  |
| 7 | 1.2 | **策划模块详细** | 42d? | 2012-02-07 A | 2012-04-05 |  | 23% | 32.48d? | 24d |  |  |  | 1324h | 378.52h |
| 8 | 1.2.1 | **战斗模块** | 21d? | 2012-02-07 A | 2012-03-06 |  | 80% | 4.2d? | 45d |  |  | Eric | 224h | 190.4h |
| 9 | 1.2.1.1 | 详细策划和DEMO | 3d | 2012-02-07 A | 2012-02-09 A |  | 100% |  |  |  | finish no earlier than 2012-02-09 | Eric | 24h | 24h |
| 10 | 1.2.1.2 | 和美术和技术核对需求，做需求分析 | 1d? | 2012-02-10 A | 2012-02-10 A | 9 | 100% |  |  |  | start no earlier than 2012-02-10 | Eric; 大强; 立军; 张琦 | 32h | 32h |
| 11 | 1.2.1.3 | 模块验收 | 1d? | 2012-03-06 | 2012-03-06 | 101 |  |  | 42d |  |  |  |  |  |
| 12 | 1.2.2 | **合成模块** | 16d? | 2012-02-07 A | 2012-02-28 |  | 80% | 3.2d? | 50d |  |  | 姜浩 | 184h | 81.6h |
| 13 | 1.2.2.1 | 详细策划和DEMO（仓库，图鉴） | 3d | 2012-02-07 A | 2012-02-09 A |  | 100% |  |  |  | finish no earlier than 2012-02-09 | 姜浩 | 24h | 24h |
| 14 | 1.2.2.2 | 和美术和技术核对需求，做需求分析 | 1d? | 2012-02-10 A | 2012-02-10 A | 13 | 100% |  |  |  | start no earlier than 2012-02-10 | 姜浩; 大强; 立军; 张琦 | 32h | 32h |
| 15 | 1.2.2.3 | 模块验收 | 1d? | 2012-02-28 | 2012-02-28 | 123 |  |  | 47d |  |  |  |  |  |
| 16 | 1.2.3 | **主场景** | 2d? | 2012-02-23 | 2012-02-24 |  |  |  | 52d |  |  |  | 40h |  |
| 17 | 1.2.3.1 | 详细策划和DEMO | 1d | 2012-02-23 | 2012-02-23 |  |  |  | 49d | 0d | start no earlier than 2012-02-23 | Eric | 8h |  |
| 18 | 1.2.3.2 | 和美术和技术核对需求，做需求分析 | 1d? | 2012-02-24 | 2012-02-24 | 17 |  |  | 49d |  | start no earlier than 2012-02-10 | 姜浩; Eric; 立军; 张琦 | 32h |  |
| 19 | 1.2.4 | **经营模块** | 8d? | 2012-02-14 | 2012-02-23 |  |  |  | 44d | 0d |  | Eric | 152h |  |
| 20 | 1.2.4.1 | 详细策划和DEMO | 7d | 2012-02-14 | 2012-02-22 |  |  |  | 41d | 0d | finish no earlier than 2012-02-22 | Eric | 56h |  |
| 21 | 1.2.4.2 | 和美术和技术核对需求，做图量和需求分析 | 1d? | 2012-02-23 | 2012-02-23 | 20 |  |  | 41d | 0d | start no earlier than 2012-02-23 | Eric; 大强; 立军; 张琦 | 32h |  |
| 22 | 1.2.5 | **世界地图模块** | 2.5d? | 2012-02-28 A | 2012-03-01 A | 12 | 100% |  |  |  |  | 姜浩 | 52h | 52h |
| 23 | 1.2.5.1 | 详细策划和DEMO | 2d | 2012-02-28 A | 2012-02-29 A |  | 100% |  |  |  | start no earlier than 2012-02-28 | 姜浩 | 16h | 16h |
| 24 | 1.2.5.2 | 和美术和技术核对需求，做需求分析 | 0.5d? | 2012-03-01 A | 2012-03-01 A | 23 | 100% |  |  |  | start no earlier than 2012-02-10 | 姜浩; 大强; 立军; 张琦 | 16h | 16h |

Notes:
- 3: 包括简单策划案，简单流程图，简单DEMO，说清楚特点等
- 4: 2月12日，13日讨论2稿确定后，可以开始开发
- 8: 具体包括： 1个场景，一个人物，1个UI初稿
- 13: 仓库，图鉴，合成面板
- 23: 包含16个副本，1个主场景，功能包括世界地图和副本解锁和任务系统有关，拖拽功能，地图行走功能，突发事件（第一期不做，放第二期开发）

| ID | WBS | Task | Duration | Start | Finish | Predecessors | Complete | Remaining | Total slack | Free slack | Constraint | Resources | Work | Actual work |
| --- | --- | --- | --- | --- | --- | --- | --- | --- | --- | --- | --- | --- | --- | --- |
| 25 | 1.2.6 | **冒险模块** | 19d? | 2012-03-01 A | 2012-03-28 | 22 | 15% | 16.19d? | 15.5d | 0d |  | 姜浩 | 392h | 54.52h |
| 26 | 1.2.6.1 | 详细策划和DEMO | 4d | 2012-03-01 A | 2012-03-07 A |  | 100% |  |  |  | start no earlier than 2012-02-23 | 姜浩 | 32h | 32h |
| 27 | 1.2.6.2 | 和美术和技术核对需求，做需求分析 | 1d? | 2012-03-07 | 2012-03-08 | 26 |  |  | 23.5d | 0d | start no earlier than 2012-02-10 | 姜浩; 大强; 立军; 张琦 | 32h |  |
| 28 | 1.2.6.3 | 确定副本的规则 | 3d | 2012-03-08 | 2012-03-13 | 27 |  |  | 23.5d | 0d |  | 姜浩 | 24h |  |
| 29 | 1.2.6.4 | 素材内容和列表收集 | 12d | 2012-03-01 | 2012-03-19 |  |  |  | 12.5d | 0d | start no earlier than 2012-02-20 | 陈志荣 | 96h |  |
| 30 | 1.2.6.5 | 挑选和确认 | 1d | 2012-03-19 | 2012-03-20 | 29 |  |  | 12.5d | 0d |  | 姜浩 | 8h |  |
| 31 | 1.2.6.6 | 美术核对和制作 | 1d | 2012-03-20 | 2012-03-21 | 30 |  |  | 12.5d | 0d |  | 大强 | 8h |  |
| 32 | 1.2.6.7 | 地图编辑器编辑 | 5d | 2012-03-21 | 2012-03-28 | 31 |  |  | 12.5d |  |  | 陈志荣 | 40h |  |
| 33 | 1.2.7 | **佣兵模块** | 5.5d? | 2012-02-24 | 2012-03-02 | 19 |  |  | 44d | 0d |  | Eric | 100h |  |
| 34 | 1.2.7.1 | 详细策划和DEMO | 5d | 2012-02-24 | 2012-03-01 | 21 |  |  | 41d | 0d | finish no earlier than 2012-02-09 | Eric | 40h |  |
| 35 | 1.2.7.2 | 和美术和技术核对需求，做需求分析 | 0.5d? | 2012-03-02 | 2012-03-02 | 34 |  |  | 41d | 0d | start no earlier than 2012-02-10 | Eric; 大强; 立军; 张琦 | 16h |  |
| 36 | 1.2.8 | **道具模块** | 3.5d? | 2012-03-02 | 2012-03-07 | 33 |  |  | 44d |  |  | Eric | 68h |  |
| 37 | 1.2.8.1 | 详细策划和DEMO | 3d | 2012-03-02 | 2012-03-07 | 35 |  |  | 41d | 0d | finish no earlier than 2012-02-09 | Eric | 24h |  |
| 38 | 1.2.8.2 | 和美术和技术核对需求，做需求分析 | 0.5d? | 2012-03-07 | 2012-03-07 | 37 |  |  | 41d |  | start no earlier than 2012-02-10 | Eric; 大强; 立军; 张琦 | 16h |  |
| 39 | 1.2.9 | **任务和剧情模块** | 3.5d? | 2012-03-28 | 2012-03-31 | 25 |  |  | 15.5d |  |  | 姜浩 | 68h |  |
| 40 | 1.2.9.1 | 详细策划和DEMO | 3d | 2012-03-28 | 2012-03-31 |  |  |  | 12.5d | 0d | start no earlier than 2012-02-22 | 姜浩 | 24h |  |
| 41 | 1.2.9.2 | 和美术和技术核对需求，做需求分析 | 0.5d? | 2012-03-31 | 2012-03-31 | 40 |  |  | 12.5d | 0d | start no earlier than 2012-02-10 | 姜浩; 大强; 立军; 张琦 | 16h |  |
| 42 | 1.2.10 | **上线前其他模块** | 2d | 2012-04-01 | 2012-04-05 |  |  |  | 15.5d |  |  |  | 44h |  |
| 43 | 1.2.10.1 | 详细策划和DEMO | 1.5d | 2012-04-01 | 2012-04-05 | 41 |  |  | 12.5d | 0d | finish no earlier than 2012-02-09 | Eric; 姜浩 | 24h |  |
| 44 | 1.2.10.2 | 和美术和技术核对需求，做需求分析 | 0.5d | 2012-04-05 | 2012-04-05 | 43 |  |  | 21d |  | start no earlier than 2012-02-10 | Eric; 大强; 立军; 张琦; 姜浩 | 20h |  |
| 45 | 2 | **任务，剧情，订单内容** | 58d? | 2012-02-06 | 2012-04-26 |  |  |  | 9d |  |  | 姜浩; 陈志荣 | 1232h |  |
| 46 | 2.1 | **策划前期准备** | 9d | 2012-02-06 | 2012-02-16 |  |  |  | 49d | 33.5d |  |  | 120h |  |
| 47 | 2.1.1 | 世界观确定 | 6d | 2012-02-06 | 2012-02-13 |  |  |  | 46d | 0d | start no earlier than 2012-02-06 | 姜浩 | 48h |  |
| 48 | 2.1.2 | 落实详细的任务规则(主线任务和支线任务如何穿插） | 3d | 2012-02-14 | 2012-02-16 | 47 |  |  | 46d |  | start no earlier than 2011-11-10 | 立军; 张琦; 姜浩 | 72h |  |

Notes:
- 28: 包括副本，任务和剧情的描述，怪物，地形块，装饰物，矿物和掉落物品的描述 / 上线先开1个主场景，和3个副本（地图），每个副本有层级。具体层级看策划描述
- 45: ？？？脚本可复用？
- 48: 包括任务剧情，任务触发条件，交任务条件

| ID | WBS | Task | Duration | Start | Finish | Predecessors | Complete | Remaining | Total slack | Free slack | Constraint | Resources | Work | Actual work |
| --- | --- | --- | --- | --- | --- | --- | --- | --- | --- | --- | --- | --- | --- | --- |
| 49 | 2.2 | **任务描述的详细内容** | 9d | 2012-04-05 | 2012-04-18 | 46 |  |  | 15.5d |  |  | 姜浩 | 104h |  |
| 50 | 2.2.1 | 主线任务文案样板 | 2d | 2012-04-05 | 2012-04-09 | 43 |  |  | 12.5d | 0d |  | 姜浩 | 16h |  |
| 51 | 2.2.2 | 支线任务文案样板 | 2d | 2012-04-09 | 2012-04-11 | 50 |  |  | 17.5d |  |  | 姜浩 | 16h |  |
| 52 | 2.2.3 | 对白 | 7d | 2012-04-09 | 2012-04-18 | 50 |  |  | 12.5d |  |  |  |  |  |
| 53 | 2.3 | 订单任务内容 | 3d | 2012-02-28 | 2012-03-01 |  |  |  | 45d |  | start no earlier than 2012-02-28 | Eric | 24h |  |
| 54 | 2.4 | 剧情世界观详细框架 | 6d? | 2012-04-11 | 2012-04-18 |  |  |  | 11d | 5d | finish no earlier than 2012-04-18 | 姜浩 | 48h |  |
| 55 | 2.5 | 分配剧情和任务的具体文字 | 1d? | 2012-04-26 | 2012-04-26 | 54 |  |  | 9d |  | finish no earlier than 2012-04-26 | 姜浩 | 8h |  |
| 56 | 3 | **数值和调试内容** | 36d | 2012-03-06 A | 2012-04-25 |  | 47% | 19.2d | 10d |  |  | Eric | 696h | 139.2h |
| 57 | 3.1 | **策划前期准备** | 5d | 2012-04-16 | 2012-04-20 |  |  |  | 2.2d | 0d |  |  | 40h |  |
| 58 | 3.1.1 | 数值规则 | 5d | 2012-04-16 | 2012-04-20 | 10 |  |  | 2.2d |  | finish no earlier than 2012-04-20 | Eric | 40h |  |
| 59 | 3.2 | **数值调试** | 36d | 2012-03-06 A | 2012-04-25 | 57 | 70% | 10.8d | 10d |  |  | Eric | 368h | 95.2h |
| 60 | 3.2.1 | 战斗模块 | 4d | 2012-03-06 A | 2012-03-09 A |  | 100% |  |  |  |  | Eric | 32h | 32h |
| 61 | 3.2.2 | 合成模块 | 3d | 2012-04-23 | 2012-04-25 | 14 |  |  | 7d |  |  | 姜浩 | 24h |  |
| 62 | 3.2.3 | 主场景模块 | 3d | 2012-03-12 A | 2012-03-14 A | 60 | 100% |  |  |  |  | Eric | 24h | 24h |
| 63 | 4 | **美术开发** | 50d? | 2012-02-09 A | 2012-04-19 |  | 10% | 45.1d? | 14d |  |  | 大强 | 2212h | 223.22h |
| 64 | 4.1 | **风格确定** | 42d? | 2012-02-09 | 2012-04-09 |  |  |  | 22d |  |  |  | 148h |  |
| 65 | 4.1.1 | **UI风格确定** | 5.5d? | 2012-02-27 | 2012-03-05 |  |  |  | 46.5d |  |  | 大强 | 116h |  |
| 66 | 4.1.1.1 | 参照产品，对比 | 3d? | 2012-02-27 | 2012-02-29 |  |  |  | 45.5d | 0d | finish no earlier than 2012-02-29 | 王晔 | 24h |  |
| 67 | 4.1.1.2 | 和策划讨论，确定下风格 | 0.5d | 2012-03-01 | 2012-03-01 | 66 |  |  | 45.5d |  |  | 王晔; 大强; Eric; 姜浩 | 16h |  |
| 68 | 4.1.1.3 | 出初稿 | 2d | 2012-03-01 | 2012-03-02 |  |  |  | 43.5d | 0d | start no earlier than 2012-03-01 | 王晔 | 16h |  |
| 69 | 4.1.1.4 | 审核，讨论，定稿 | 0.5d | 2012-03-05 | 2012-03-05 | 68 |  |  | 43.5d |  |  | 王晔; 大强; Eric; 姜浩 | 16h |  |
| 70 | 4.1.2 | 场景风格确定 | 3d | 2012-02-10 | 2012-02-14 |  |  |  | 57d |  | start no earlier than 2012-02-10 |  |  |  |
| 71 | 4.1.3 | 人设和道具风格确定 | 1d | 2012-02-09 | 2012-02-09 |  |  |  | 60d |  | start no earlier than 2012-02-09 | 大强; 姜浩 | 16h |  |
| 72 | 4.1.4 | LOGO设计 | 2d? | 2012-04-06 | 2012-04-09 |  |  |  | 19d |  | finish no earlier than 2012-04-09 | 余晓莉 | 16h |  |

Notes:
- 56: ？？？脚本可复用？
- 70: 2月12日，13日讨论2稿确定后，可以开始开发

| ID | WBS | Task | Duration | Start | Finish | Predecessors | Complete | Remaining | Total slack | Free slack | Constraint | Resources | Work | Actual work |
| --- | --- | --- | --- | --- | --- | --- | --- | --- | --- | --- | --- | --- | --- | --- |
| 73 | 4.2 | **图量确定** | 36d? | 2012-02-10 | 2012-03-30 |  |  |  | 27d |  |  |  | 1352h |  |
| 74 | 4.2.1 | **美术前期素材（给到技术开发起步用）** | 2d | 2012-02-10 | 2012-02-13 |  |  |  | 27d | 0d |  |  | 48h |  |
| 75 | 4.2.1.1 | 1个场景 | 2d | 2012-02-10 | 2012-02-13 |  |  |  | 27d |  | start no earlier than 2012-02-10 | 余颖慧 | 16h |  |
| 76 | 4.2.1.2 | 1个人物 | 2d | 2012-02-10 | 2012-02-13 |  |  |  | 27d |  | start no earlier than 2012-02-10 | 赵子敬 | 16h |  |
| 77 | 4.2.1.3 | 1个UI初稿 | 2d | 2012-02-10 | 2012-02-13 |  |  |  | 27d |  | start no earlier than 2012-02-10 | 余晓莉 | 16h |  |
| 78 | 4.2.2 | **美术工作量** | 34d? | 2012-02-14 | 2012-03-30 | 74 |  |  | 27d |  |  |  | 1304h |  |
| 79 | 4.2.2.1 | 美术UI开发 | 34d? | 2012-02-14 | 2012-03-30 |  |  |  | 27d |  |  | 王晔; 余晓莉 | 544h |  |
| 80 | 4.2.2.2 | 美术道具开发 | 26d? | 2012-02-24 | 2012-03-30 |  |  |  | 27d |  | start no earlier than 2012-02-24 | 张燕南 | 208h |  |
| 81 | 4.2.2.3 | **美术人设开发** | 1d? | 2012-02-14 | 2012-02-14 |  |  |  | 60d |  |  | 赵子敬 | 8h |  |
| 82 | 4.2.2.3.1 | 人物 | 1d? | 2012-02-14 | 2012-02-14 |  |  |  | 60d |  |  |  |  |  |
| 83 | 4.2.2.3.2 | 怪物 | 1d? | 2012-02-14 | 2012-02-14 |  |  |  | 60d |  |  |  |  |  |
| 84 | 4.2.2.4 | 特效 | 19d? | 2012-02-14 | 2012-03-09 |  |  |  | 27d | 0d |  | 大强 | 152h |  |
| 85 | 4.2.2.5 | 过场动画 | 15d? | 2012-03-12 | 2012-03-30 | 84 |  |  | 27d |  |  | 大强 | 120h |  |
| 86 | 4.2.2.6 | **场景** | 9d? | 2012-02-27 | 2012-03-08 |  |  |  | 43d |  |  | 张燕南; 大强 | 272h |  |
| 87 | 4.2.2.6.1 | 世界地图 | 8d? | 2012-02-28 | 2012-03-08 |  |  |  | 43d |  | finish no earlier than 2012-03-08 | 大强 | 64h |  |
| 88 | 4.2.2.6.2 | 战斗场景 | 1d? | 2012-02-27 | 2012-02-27 |  |  |  | 51d |  | start no earlier than 2012-02-27 | 张燕南 | 8h |  |
| 89 | 4.2.2.6.3 | 地形块 | 7d? | 2012-02-29 | 2012-03-08 |  |  |  | 43d |  | finish no earlier than 2012-03-08 | 张燕南 | 56h |  |
| 90 | 4.3 | **第2批图量确定** | 5d? | 2012-04-13 A | 2012-04-19 |  | 65% | 1.74d? | 14d |  |  |  | 312h | 184h |
| 91 | 4.3.1 | UI | 5d? | 2012-04-13 A | 2012-04-19 A |  | 100% |  |  |  | start no earlier than 2012-04-13 | 余晓莉 | 40h | 40h |
| 92 | 4.3.2 | 4个主界面（自家 自村 副本 友家） | 5d? | 2012-04-13 A | 2012-04-19 A |  | 100% |  |  |  | finish no earlier than 2012-04-19 | 余晓莉; Eric | 80h | 80h |
| 93 | 4.3.3 | 1个仓库（一个仓库界面+两个小的确认） | 5d? | 2012-04-13 | 2012-04-19 |  |  |  | 14d |  | finish no earlier than 2012-04-19 | 姜浩; 余晓莉 | 80h |  |
| 94 | 4.3.4 | 2个订单（接受订单 查看订单） | 1d? | 2012-04-13 A | 2012-04-13 A |  | 100% |  |  |  | finish no earlier than 2012-04-13 | 余晓莉 | 8h | 8h |
| 95 | 4.3.5 | 5个佣兵（雇佣界面 人物设置 选择设置 阵型设计 武器选择 技能选择） | 1d? | 2012-04-16 A | 2012-04-16 A |  | 100% |  |  |  | start no earlier than 2012-04-16 | 余晓莉; Eric | 16h | 16h |
| 96 | 4.3.6 | 2个合成（物品界面 合成界面 立刻完成（小）） | 1d | 2012-04-18 | 2012-04-18 |  |  |  | 15d |  | start no earlier than 2012-04-17 | 余晓莉; 姜浩 | 16h |  |
| 97 | 4.3.7 | 3个剧情（接受任务 完成任务 查看任务） | 1d | 2012-04-17 | 2012-04-17 |  |  |  | 16d |  | start no earlier than 2012-04-17 | 余晓莉; 姜浩 | 16h |  |
| 98 | 4.3.8 | 2个图鉴（目录 物品详细信息界面） | 1d? | 2012-04-17 | 2012-04-17 |  |  |  | 16d |  | start no earlier than 2012-04-17 | 余晓莉; 姜浩 | 16h |  |
| 99 | 4.3.9 | 3个战斗（自家攻击 敌人攻击 好友协助） | 1d | 2012-04-13 A | 2012-04-16 A |  | 100% |  |  |  | finish no earlier than 2012-04-13 | 余晓莉 | 8h | 8h |
| 100 | 4.3.10 | 1个商店界面 | 2d? | 2012-04-18 A | 2012-04-19 A |  | 100% |  |  |  | finish no earlier than 2012-04-19 | 余晓莉; Eric | 32h | 32h |

Notes:
- 74: 具体包括： 1个场景，一个人物，1个UI初稿
- 79: 关键操作：战斗和合成 / 主场景的经验条，按钮，上下栏，店铺的等级等，DIY，挪来挪去的箭头，日常按钮，布局，鼠标划上的效果 / 第一轮：先出UI框架初稿 （先给技术前端开发） / 第二轮：调整UI的美观和细化。（工作中不断调整） / 第三轮：美术和策划的进一步磨合（包括特效，细节等全面的调整，包括程序技术原型完成后，可以联调测试后，再调整） / 具体ＵＩ本身，先定参考风格（找一堆资料，然后和策划核对下风格，了解策划倾向的风格，然后按照ＵＩ自己的理解，做一些风格２～３个拿出来核对，然后确定一个风格，和主场景背景，还有边线，里面道具，人物等整体风格协调）
- 80: 副本和订单（和合成术有关），有些道具看下之前魔法是否可以复用 / 材料，装备，掉落的物品，血瓶，使用的物品（副本，和战斗） ４３个道具，上线１００个以上
- 81: 佣兵这块，具体需要和大强核对 / 6个人物，3个职业（每个职业一男一女），每个人物有20~22个动作，120个~130个动作 / 怪物的设计，做了7个怪物的形象，动作需求还需要进一步确定
- 84: ＋以上 / 包括３个职业，每个职业５种技能（技能不同等级无特效） / 怪的特效 / 每个场景的特效
- 85: 初始有３个大场景（城镇，翡翠洞，世界地图）
- 86: 地形块集合，上线之前完成4个副本场景（地图编辑器），还有3个战斗场景 / 世界地图由大强来做，上面的图标每天３～４个出
- 87: 包含17个图标
- 88: 战斗场景每个大概1~1.5天
- 89: 先完成3个副本场景的场景图
- 92: Eric最终修改需再次确认
- 93: 姜浩确认需求
- 95: Eric 4月16日确认
- 98: 姜浩确认第2轮

| ID | WBS | Task | Duration | Start | Finish | Predecessors | Complete | Remaining | Total slack | Free slack | Constraint | Resources | Work | Actual work |
| --- | --- | --- | --- | --- | --- | --- | --- | --- | --- | --- | --- | --- | --- | --- |
| 101 | 5 | **战斗功能模块开发** | 21d? | 2012-02-06 A | 2012-03-05 |  | 98% | 0.32d? | 29d | 0d |  | 夏俊杰; 章昕 | 1376h | 1177.6h |
| 102 | 5.1 | **策划和前期准备** | 5d | 2012-02-06 A | 2012-02-10 A |  | 100% |  |  |  |  |  | 200h | 200h |
| 103 | 5.1.1 | 策划初稿审核（详细策划案，原型，UI需求） | 2d | 2012-02-06 A | 2012-02-07 A |  | 100% |  |  |  | start no earlier than 2012-02-06 | Eric; 立军; 张琦; 大强; 姜浩 | 80h | 80h |
| 104 | 5.1.2 | 模块前后端需求分析，设计，定义接口 | 3d | 2012-02-08 A | 2012-02-10 A |  | 100% |  |  |  | finish no earlier than 2012-02-10 | 立军; 张琦; Eric | 72h | 72h |
| 105 | 5.1.3 | 美术图量分析和风格确定 | 3d | 2012-02-08 A | 2012-02-10 A | 103 | 100% |  |  |  |  | 大强; Eric | 48h | 48h |
| 106 | 5.2 | **开发** | 16d | 2012-02-10 A | 2012-03-02 A |  | 100% |  |  |  |  |  | 824h | 824h |
| 107 | 5.2.1 | **美术前期素材（给到技术开发起步用）** | 2d | 2012-02-10 A | 2012-02-13 A |  | 100% |  |  |  |  |  | 48h | 48h |
| 108 | 5.2.1.1 | 1个场景 | 2d | 2012-02-10 A | 2012-02-13 A |  | 100% |  |  |  | start no earlier than 2012-02-10 | 余颖慧 | 16h | 16h |
| 109 | 5.2.1.2 | 1个人物 | 2d | 2012-02-10 A | 2012-02-13 A |  | 100% |  |  |  | start no earlier than 2012-02-10 | 赵子敬 | 16h | 16h |
| 110 | 5.2.1.3 | 1个UI初稿 | 2d | 2012-02-10 A | 2012-02-13 A |  | 100% |  |  |  | start no earlier than 2012-02-10 | 余晓莉 | 16h | 16h |
| 111 | 5.2.2 | **前端开发** | 16d | 2012-02-10 A | 2012-03-02 A |  | 100% |  |  |  |  | 张琦; 夏俊杰 | 408h | 408h |
| 112 | 5.2.2.1 | 项目需求分析，模块定义，接口定义，代码设计 | 3d | 2012-02-10 A | 2012-02-14 A |  | 100% |  |  |  | start no earlier than 2012-02-10 | 张琦; 夏俊杰 | 48h | 48h |
| 113 | 5.2.2.2 | CODING | 13d | 2012-02-15 A | 2012-03-02 A | 112 | 100% |  |  |  | finish no earlier than 2012-02-29 | 夏俊杰 | 104h | 104h |
| 114 | 5.2.3 | **后端开发** | 12d | 2012-02-13 A | 2012-02-28 A |  | 100% |  |  |  |  | 章昕; 立军 | 192h | 192h |
| 115 | 5.2.3.1 | 项目需求分析，模块定义，接口定义，代码设计 | 2d | 2012-02-13 A | 2012-02-14 A |  | 100% |  |  |  | start no earlier than 2012-02-13 |  |  |  |
| 116 | 5.2.3.2 | CODING | 11d | 2012-02-14 A | 2012-02-28 A |  | 100% |  |  |  | start no earlier than 2012-02-14 |  |  |  |
| 117 | 5.2.4 | **美术工作** | 11d | 2012-02-15 A | 2012-02-29 A |  | 100% |  |  |  |  |  | 176h | 176h |
| 118 | 5.2.4.1 | 美术UI开发 | 7d | 2012-02-20 A | 2012-02-28 A |  | 100% |  |  |  | start no earlier than 2012-02-20 | 余晓莉 | 56h | 56h |
| 119 | 5.2.4.2 | 美术道具开发 | 4d | 2012-02-20 A | 2012-02-23 A |  | 100% |  |  |  | start no earlier than 2012-02-20 | 张燕南 | 32h | 32h |
| 120 | 5.2.4.3 | 美术人设开发 | 11d | 2012-02-15 A | 2012-02-29 A |  | 100% |  |  |  | finish no earlier than 2012-02-29 | 赵子敬 | 88h | 88h |
| 121 | 5.3 | **联调和测试** | 1d? | 2012-03-05 | 2012-03-05 | 113 |  |  | 29d |  |  |  | 16h |  |
| 122 | 5.3.1 | 策划和测试确认OK | 1d? | 2012-03-05 | 2012-03-05 |  |  |  | 29d |  |  | Eric; 桃子 | 16h |  |
| 123 | 6 | **合成模块开发** | 16d? | 2012-02-06 A | 2012-02-27 |  | 97% | 0.43d? | 40d | 0d |  | 李钊; 张诚; 小庆 | 688h | 634.81h |
| 124 | 6.1 | **策划和前期准备** | 7d | 2012-02-06 A | 2012-02-14 A |  | 100% |  |  |  |  |  | 120h | 120h |
| 125 | 6.1.1 | 策划初稿审核（详细策划案，原型，UI需求） | 2d | 2012-02-06 A | 2012-02-07 A |  | 100% |  |  |  | start no earlier than 2012-02-06 | 姜浩 | 16h | 16h |
| 126 | 6.1.2 | 模块前后端需求分析，设计，定义接口 | 3d | 2012-02-10 A | 2012-02-14 A |  | 100% |  |  |  | start no earlier than 2012-02-10 | 立军; 张琦; 姜浩 | 72h | 72h |
| 127 | 6.1.3 | 美术图量分析和风格确定 | 2d | 2012-02-09 A | 2012-02-10 A |  | 100% |  |  |  | start no earlier than 2012-02-09 | 大强; 姜浩 | 32h | 32h |

Notes:
- 101: 3周工作日
- 107: 具体包括： 1个场景，一个人物，1个UI初稿
- 115: 接口定义：战斗开始，战斗结束 / 后端有一个验证器，验证过程。
- 118: 战斗UI
- 120: 人设和动效
- 121: 数值内容等最好先做出来
- 123: 仓库？？？ DIY？9个工作日
- 126: 2月12日，13日讨论2稿确定后，可以开始开发

| ID | WBS | Task | Duration | Start | Finish | Predecessors | Complete | Remaining | Total slack | Constraint | Resources | Work | Actual work |
| --- | --- | --- | --- | --- | --- | --- | --- | --- | --- | --- | --- | --- | --- |
| 128 | 6.2 | **开发** | 2d | 2012-02-22 A | 2012-02-23 A |  | 100% |  |  |  |  | 48h | 48h |
| 129 | 6.2.1 | **美术前期素材（给到技术开发起步用）** | 2d | 2012-02-22 A | 2012-02-23 A |  | 100% |  |  |  |  | 48h | 48h |
| 130 | 6.2.1.1 | 1个场景 | 2d | 2012-02-22 A | 2012-02-23 A |  | 100% |  |  | start no earlier than 2012-02-22 | 余颖慧 | 16h | 16h |
| 131 | 6.2.1.2 | 1个人物 | 2d | 2012-02-22 A | 2012-02-23 A |  | 100% |  |  | start no earlier than 2012-02-22 | 赵子敬 | 16h | 16h |
| 132 | 6.2.1.3 | 1个UI初稿 | 2d | 2012-02-22 A | 2012-02-23 A |  | 100% |  |  | start no earlier than 2012-02-22 | 余晓莉 | 16h | 16h |
| 133 | 6.3 | **前端开发** | 9d | 2012-02-09 A | 2012-02-21 A |  | 100% |  |  |  | 小庆 | 72h | 72h |
| 134 | 6.3.1 | 项目需求分析，模块定义，接口定义，代码设计 | 3d | 2012-02-13 A | 2012-02-15 A |  | 100% |  |  | start no earlier than 2012-02-13 |  |  |  |
| 135 | 6.3.2 | CODING | 9d | 2012-02-09 A | 2012-02-21 A |  | 100% |  |  | finish no earlier than 2012-02-21 |  |  |  |
| 136 | 6.4 | **后端开发** | 8d | 2012-02-13 A | 2012-02-22 A |  | 100% |  |  |  | 李钊 | 64h | 64h |
| 137 | 6.4.1 | 项目需求分析，模块定义，接口定义，代码设计 | 2d | 2012-02-13 A | 2012-02-14 A |  | 100% |  |  | start no earlier than 2012-02-13 |  |  |  |
| 138 | 6.4.2 | CODING | 7d | 2012-02-14 A | 2012-02-22 A |  | 100% |  |  | finish no earlier than 2012-02-22 |  |  |  |
| 139 | 6.5 | 联调和测试 | 2d | 2012-02-23 A | 2012-02-24 A | 138 | 100% |  |  | start no earlier than 2012-02-17 |  |  |  |
| 140 | 6.6 | **补充联调一次** | 1d? | 2012-02-27 | 2012-02-27 |  |  |  | 40d |  |  |  |  |
| 141 | 6.6.1 | 策划和测试确认OK | 1d? | 2012-02-27 | 2012-02-27 | 139 |  |  | 40d |  |  |  |  |
| 142 | 7 | 背包（仓库） | 3d? | 2012-03-05 | 2012-03-07 |  |  |  | 44d | finish no earlier than 2012-03-07 |  |  |  |
| 143 | 8 | 主场景及DIY | 1d | 2012-03-06 | 2012-03-06 |  |  |  | 45d | start no earlier than 2012-03-06 |  |  |  |
| 144 | 9 | **经营模块开发** | 18d | 2012-02-23 A | 2012-03-19 |  | 86% | 2.43d | 36d |  | 小庆; 张琦; 李钊 | 896h | 837.62h |
| 145 | 9.1 | **策划和前期准备** | 4d | 2012-02-23 A | 2012-02-28 A |  | 100% |  |  |  |  | 96h | 96h |
| 146 | 9.1.1 | 策划初稿审核（详细策划案，原型，逻辑流程图） | 2d | 2012-02-23 A | 2012-02-24 A |  | 100% |  |  | start no earlier than 2012-02-23 | Eric | 16h | 16h |
| 147 | 9.1.2 | 模块前后端需求分析，设计，定义接口 | 2d | 2012-02-27 A | 2012-02-28 A | 146 | 100% |  |  | start no earlier than 2012-02-10 | 立军; 张琦; Eric | 48h | 48h |
| 148 | 9.1.3 | 美术图量分析和确定前置美术 | 2d | 2012-02-23 A | 2012-02-24 A |  | 100% |  |  | start no earlier than 2012-02-23 | 大强; Eric | 32h | 32h |
| 149 | 9.2 | **开发** | 12d | 2012-02-24 A | 2012-03-12 A |  | 100% |  |  |  |  | 368h | 368h |
| 150 | 9.2.1 | **美术前期素材（给到技术开发起步用）** | 2d | 2012-02-24 A | 2012-02-27 A | 129 | 100% |  |  |  |  | 48h | 48h |
| 151 | 9.2.1.1 | 1个场景 | 2d | 2012-02-24 A | 2012-02-27 A |  | 100% |  |  | start no earlier than 2012-02-10 | 张燕南 | 16h | 16h |
| 152 | 9.2.1.2 | 1个人物 | 2d | 2012-02-24 A | 2012-02-27 A |  | 100% |  |  | start no earlier than 2012-02-10 | 赵子敬 | 16h | 16h |
| 153 | 9.2.1.3 | 1个UI初稿 | 2d | 2012-02-24 A | 2012-02-27 A |  | 100% |  |  | start no earlier than 2012-02-10 | 王晔 | 16h | 16h |

Notes:
- 129: 具体包括： 1个场景，一个人物，1个UI初稿
- 134: 接口定义：战斗开始，战斗结束 / 后端有一个验证器，验证过程。
- 137: 接口定义：战斗开始，战斗结束 / 后端有一个验证器，验证过程。
- 140: 换上UI和数据再次联调一次，时间待定
- 142: 完成了80%，缺少使用用品，如药水等
- 143: 完成了40%~50%，主场景完成了90%，需要进一步的DIY技术开发
- 144: 10-15个工作日，2周
- 146: 逻辑流程图需要进一步细化
- 147: 2月12日，13日讨论2稿确定后，可以开始开发
- 150: 具体包括： 1个场景，一个人物，1个UI初稿

| ID | WBS | Task | Duration | Start | Finish | Predecessors | Complete | Total slack | Free slack | Constraint | Resources | Work | Actual work |
| --- | --- | --- | --- | --- | --- | --- | --- | --- | --- | --- | --- | --- | --- |
| 154 | 9.2.2 | **前端开发** | 11d | 2012-02-27 A | 2012-03-12 A |  | 100% |  |  |  | 小庆 | 176h | 176h |
| 155 | 9.2.2.1 | 项目需求分析，模块定义，接口定义，代码设计 | 2d | 2012-02-27 A | 2012-02-28 A | 148 | 100% |  |  | start no earlier than 2012-02-13 | 张琦 | 16h | 16h |
| 156 | 9.2.2.2 | CODING | 9d | 2012-02-29 A | 2012-03-12 A | 155 | 100% |  |  | finish no earlier than 2012-02-21 | 小庆 | 72h | 72h |
| 157 | 9.2.3 | **后端开发** | 9d | 2012-02-29 A | 2012-03-12 A |  | 100% |  |  |  | 李钊 | 144h | 144h |
| 158 | 9.2.3.1 | 项目需求分析，模块定义，接口定义，代码设计 | 2d | 2012-02-29 A | 2012-03-01 A | 147 | 100% |  |  | start no earlier than 2012-02-13 | 李钊 | 16h | 16h |
| 159 | 9.2.3.2 | CODING | 7d | 2012-03-02 A | 2012-03-12 A | 158 | 100% |  |  | finish no earlier than 2012-02-21 | 李钊 | 56h | 56h |
| 160 | 9.3 | 联调和测试 | 5d | 2012-03-13 | 2012-03-19 | 156 |  | 36d |  | start no earlier than 2012-02-17 |  |  |  |
| 161 | 10 | **世界地图模块开发** | 4d | 2012-03-06 | 2012-03-09 | 101 |  | 29d | 0d |  | 章昕; 张诚 | 240h |  |
| 162 | 10.1 | **策划和前期准备** | 2d | 2012-03-06 | 2012-03-07 |  |  | 29d |  |  |  | 48h |  |
| 163 | 10.1.1 | 策划初稿审核（详细策划案，原型，UI需求） | 1d | 2012-03-06 | 2012-03-06 |  |  | 29d | 0d | start no earlier than 2012-02-06 | 姜浩 | 8h |  |
| 164 | 10.1.2 | 模块前后端需求分析，设计，定义接口 | 1d | 2012-03-07 | 2012-03-07 | 163 |  | 29d | 0d | start no earlier than 2012-02-10 | 立军; 张琦; 姜浩 | 24h |  |
| 165 | 10.1.3 | 美术图量分析和风格确定 | 1d | 2012-03-06 | 2012-03-06 |  |  | 32d |  | start no earlier than 2012-02-09 | 大强; 姜浩 | 16h |  |
| 166 | 10.2 | **开发** | 3d | 2012-03-06 | 2012-03-08 |  |  | 29d | 0d |  |  | 128h |  |
| 167 | 10.2.1 | **美术前期素材（给到技术开发起步用）** | 2d | 2012-03-06 | 2012-03-07 |  |  | 30d |  |  |  | 32h |  |
| 168 | 10.2.1.1 | 世界地图 | 2d | 2012-03-06 | 2012-03-07 |  |  | 30d |  | start no earlier than 2012-02-10 | 余颖慧 | 16h |  |
| 169 | 10.2.1.2 | 动效 | 2d | 2012-03-06 | 2012-03-07 |  |  | 30d |  | start no earlier than 2012-02-10 | 赵子敬 | 16h |  |
| 170 | 10.2.2 | **前端开发** | 3d | 2012-03-06 | 2012-03-08 |  |  | 29d |  |  | 张琦; 张诚 | 48h |  |
| 171 | 10.2.2.1 | 项目需求分析，模块定义，接口定义，代码设计 | 1d | 2012-03-08 | 2012-03-08 | 164 |  | 29d |  | start no earlier than 2012-02-13 |  |  |  |
| 172 | 10.2.2.2 | CODING | 3d | 2012-03-06 | 2012-03-08 |  |  | 29d |  | finish no earlier than 2012-02-21 |  |  |  |
| 173 | 10.2.3 | **后端开发** | 3d | 2012-03-06 | 2012-03-08 |  |  | 29d |  |  | 章昕; 立军 | 48h |  |
| 174 | 10.2.3.1 | 项目需求分析，模块定义，接口定义，代码设计 | 1d | 2012-03-06 | 2012-03-06 |  |  | 31d |  | start no earlier than 2012-02-13 |  |  |  |
| 175 | 10.2.3.2 | CODING | 3d | 2012-03-06 | 2012-03-08 |  |  | 29d |  | finish no earlier than 2012-02-21 |  |  |  |
| 176 | 10.3 | 联调和测试 | 1d | 2012-03-09 | 2012-03-09 | 166 |  | 29d |  | start no earlier than 2012-02-17 |  |  |  |
| 177 | 11 | **冒险模块开发** | 11d | 2012-03-13 | 2012-03-28 | 123 |  | 29.5d |  |  | 夏俊杰; 章昕 | 432h |  |
| 178 | 11.1 | **策划和前期准备** | 2d | 2012-03-13 | 2012-03-15 |  |  | 29.5d |  |  |  | 48h |  |
| 179 | 11.1.1 | 策划初稿审核（详细策划案，原型，UI需求） | 1d | 2012-03-13 | 2012-03-14 | 28 |  | 29.5d | 0d | start no earlier than 2012-02-06 | 姜浩 | 8h |  |
| 180 | 11.1.2 | 模块前后端需求分析，设计，定义接口 | 1d | 2012-03-14 | 2012-03-15 | 179 |  | 29.5d | 0d | start no earlier than 2012-02-10 | 立军; 张琦; 姜浩 | 24h |  |
| 181 | 11.1.3 | 美术图量分析 | 1d | 2012-03-14 | 2012-03-15 | 179 |  | 33.5d | 0d | start no earlier than 2012-02-09 | 大强; 姜浩 | 16h |  |

Notes:
- 155: 接口定义：战斗开始，战斗结束 / 后端有一个验证器，验证过程。
- 158: 接口定义：战斗开始，战斗结束 / 后端有一个验证器，验证过程。
- 161: 3天左右？
- 164: 2月12日，13日讨论2稿确定后，可以开始开发
- 167: 具体包括： 1个场景，一个人物，1个UI初稿
- 171: 接口定义：战斗开始，战斗结束 / 后端有一个验证器，验证过程。
- 174: 接口定义：战斗开始，战斗结束 / 后端有一个验证器，验证过程。
- 177: 1周左右
- 180: 2月12日，13日讨论2稿确定后，可以开始开发

| ID | WBS | Task | Duration | Start | Finish | Predecessors | Total slack | Free slack | Constraint | Resources | Work |
| --- | --- | --- | --- | --- | --- | --- | --- | --- | --- | --- | --- |
| 182 | 11.2 | **开发** | 5d | 2012-03-15 | 2012-03-22 |  | 29.5d |  |  |  | 208h |
| 183 | 11.2.1 | **美术前期素材（给到技术开发起步用）** | 2d | 2012-03-15 | 2012-03-19 | 181 | 36.5d |  |  |  | 48h |
| 184 | 11.2.1.1 | 1个场景 | 2d | 2012-03-15 | 2012-03-19 |  | 36.5d |  | start no earlier than 2012-02-10 | 张燕南 | 16h |
| 185 | 11.2.1.2 | 1个人物 | 2d | 2012-03-15 | 2012-03-19 |  | 36.5d |  | start no earlier than 2012-02-10 | 赵子敬 | 16h |
| 186 | 11.2.1.3 | 1个UI初稿 | 2d | 2012-03-15 | 2012-03-19 |  | 36.5d |  | start no earlier than 2012-02-10 | 余晓莉 | 16h |
| 187 | 11.2.2 | **前端开发** | 5d | 2012-03-15 | 2012-03-22 | 180 | 29.5d | 0d |  | 张琦; 夏俊杰 | 80h |
| 188 | 11.2.2.1 | 项目需求分析，模块定义，接口定义，代码设计 | 0.5d | 2012-03-15 | 2012-03-15 |  | 34d |  | start no earlier than 2012-02-13 |  |  |
| 189 | 11.2.2.2 | CODING | 5d | 2012-03-15 | 2012-03-22 |  | 29.5d |  | finish no earlier than 2012-02-21 |  |  |
| 190 | 11.2.3 | **后端开发** | 5d | 2012-03-15 | 2012-03-22 | 181 | 33.5d |  |  | 章昕; 立军 | 80h |
| 191 | 11.2.3.1 | 项目需求分析，模块定义，接口定义，代码设计 | 0.5d | 2012-03-15 | 2012-03-15 |  | 38d |  | start no earlier than 2012-03-14 |  |  |
| 192 | 11.2.3.2 | CODING | 5d | 2012-03-15 | 2012-03-22 |  | 33.5d |  | finish no earlier than 2012-02-21 |  |  |
| 193 | 11.3 | 联调和测试 | 4d | 2012-03-22 | 2012-03-28 | 187 | 29.5d |  | start no earlier than 2012-02-17 |  |  |
| 194 | 12 | **佣兵模块开发** | 13d | 2012-03-12 | 2012-03-28 | 161 | 29d |  |  | 小庆; 张诚; 李钊 | 584h |
| 195 | 12.1 | **策划和前期准备** | 2d | 2012-03-12 | 2012-03-13 |  | 29d |  |  |  | 48h |
| 196 | 12.1.1 | 策划初稿审核（详细策划案，原型，UI需求） | 1d | 2012-03-12 | 2012-03-12 |  | 29d | 0d | start no earlier than 2012-02-06 | Eric | 8h |
| 197 | 12.1.2 | 模块前后端需求分析，设计，定义接口 | 1d | 2012-03-13 | 2012-03-13 | 196 | 29d | 0d | start no earlier than 2012-02-10 | 立军; 张琦; Eric | 24h |
| 198 | 12.1.3 | 美术图量分析 | 1d | 2012-03-13 | 2012-03-13 | 196 | 36d | 0d | start no earlier than 2012-03-10 | 大强; 姜浩 | 16h |
| 199 | 12.2 | **开发** | 10d | 2012-03-14 | 2012-03-27 |  | 29d |  |  |  | 224h |
| 200 | 12.2.1 | **美术前期素材（给到技术开发起步用）** | 2d | 2012-03-14 | 2012-03-15 | 198 | 38d |  |  |  | 48h |
| 201 | 12.2.1.1 | 1个场景 | 2d | 2012-03-14 | 2012-03-15 |  | 38d |  | start no earlier than 2012-02-10 | 张燕南 | 16h |
| 202 | 12.2.1.2 | 1个人物 | 2d | 2012-03-14 | 2012-03-15 |  | 38d |  | start no earlier than 2012-02-10 | 赵子敬 | 16h |
| 203 | 12.2.1.3 | 1个UI初稿 | 2d | 2012-03-14 | 2012-03-15 |  | 38d |  | start no earlier than 2012-02-10 | 余晓莉 | 16h |
| 204 | 12.2.2 | **前端开发** | 6d | 2012-03-14 | 2012-03-21 | 197 | 29d | 0d |  | 张琦; 夏俊杰 | 96h |
| 205 | 12.2.2.1 | 项目需求分析，模块定义，接口定义，代码设计 | 2d | 2012-03-14 | 2012-03-15 |  | 33d |  | start no earlier than 2012-03-13 |  |  |
| 206 | 12.2.2.2 | CODING | 6d | 2012-03-14 | 2012-03-21 |  | 29d |  | finish no earlier than 2012-02-21 |  |  |

Notes:
- 183: 具体包括： 1个场景，一个人物，1个UI初稿
- 188: 接口定义：战斗开始，战斗结束 / 后端有一个验证器，验证过程。
- 191: 接口定义：战斗开始，战斗结束 / 后端有一个验证器，验证过程。
- 194: 包含装备，技能？ / 1周？
- 197: 2月12日，13日讨论2稿确定后，可以开始开发
- 200: 具体包括： 1个场景，一个人物，1个UI初稿
- 205: 接口定义：战斗开始，战斗结束 / 后端有一个验证器，验证过程。

| ID | WBS | Task | Duration | Start | Finish | Predecessors | Total slack | Free slack | Constraint | Resources | Work | Text1 |
| --- | --- | --- | --- | --- | --- | --- | --- | --- | --- | --- | --- | --- |
| 207 | 12.2.3 | **后端开发** | 10d | 2012-03-14 | 2012-03-27 | 197 | 30d |  |  | 李钊 | 80h |  |
| 208 | 12.2.3.1 | 项目需求分析，模块定义，接口定义，代码设计 | 2d | 2012-03-14 | 2012-03-15 |  | 38d |  | start no earlier than 2012-02-13 |  |  |  |
| 209 | 12.2.3.2 | CODING | 6d | 2012-03-20 | 2012-03-27 |  | 30d |  | finish no earlier than 2012-03-27 |  |  | 请假1天，延长 |
| 210 | 12.2.4 | **美术工作** | 4d | 2012-03-14 | 2012-03-19 | 198 | 36d |  |  |  |  |  |
| 211 | 12.2.4.1 | 确定美术图量和美术风格 | 4d | 2012-03-14 | 2012-03-19 |  | 36d |  |  |  |  |  |
| 212 | 12.2.4.2 | 美术UI开发 | 4d | 2012-03-14 | 2012-03-19 |  | 36d |  |  |  |  |  |
| 213 | 12.2.4.3 | 美术道具开发 | 4d | 2012-03-14 | 2012-03-19 |  | 36d |  |  |  |  |  |
| 214 | 12.2.4.4 | 美术人设开发 | 4d | 2012-03-14 | 2012-03-19 |  | 36d |  |  |  |  |  |
| 215 | 12.3 | 联调和测试 | 5d | 2012-03-22 | 2012-03-28 | 204 | 29d |  | start no earlier than 2012-02-17 |  |  |  |
| 216 | 13 | **副本地图** | 22d? | 2012-03-27 | 2012-04-26 |  | 9d |  | start no earlier than 2012-03-27 |  |  |  |
| 217 | 13.1 | **矮人矿洞** | 10.5d? | 2012-03-27 | 2012-04-11 |  | 20.5d |  |  |  |  |  |
| 218 | 13.1.1 | 美术(地形块+装饰) | 3d | 2012-03-27 | 2012-03-29 |  | 24.5d | 3d |  |  |  |  |
| 219 | 13.1.2 | **地图编辑** | 2.5d? | 2012-04-05 | 2012-04-09 | 218 | 21.5d |  |  |  |  |  |
| 220 | 13.1.2.1 | 第一层 | 0.5d? | 2012-04-05 | 2012-04-05 |  | 24.5d |  | start no earlier than 2012-04-05 |  |  |  |
| 221 | 13.1.2.2 | 南区(5层) | 1d? | 2012-04-06 | 2012-04-06 |  | 23d |  | finish no earlier than 2012-04-06 |  |  |  |
| 222 | 13.1.2.3 | 北区(8层) | 1.5d? | 2012-04-06 | 2012-04-09 |  | 20.5d | 0d | start no earlier than 2012-04-06 |  |  |  |
| 223 | 13.1.3 | 数值设置(怪物数种类/数量，材料掉落) | 2d | 2012-04-09 | 2012-04-11 | 222 | 20.5d |  | start no earlier than 2012-04-05 |  |  |  |
| 224 | 13.2 | **村子** | 2d | 2012-04-09 | 2012-04-10 |  | 21d |  |  |  |  | 缺美术搁置 |
| 225 | 13.2.1 | 美术(地形块+装饰) | 1d | 2012-04-09 | 2012-04-09 |  | 21d | 0d | start no earlier than 2012-04-09 |  |  |  |
| 226 | 13.2.2 | 策划(地图编辑+数值) | 1d | 2012-04-10 | 2012-04-10 | 225 | 21d |  |  |  |  |  |
| 227 | 13.3 | **卡尔萨斯(王城)** | 5d? | 2012-04-12 | 2012-04-18 |  | 15d |  |  |  |  | 缺美术搁置 |
| 228 | 13.3.1 | 美术(地形块+装饰) | 3d | 2012-04-12 | 2012-04-16 |  | 17d |  | start no earlier than 2012-04-12 |  |  |  |
| 229 | 13.3.2 | **地图编辑** | 2.5d? | 2012-04-16 | 2012-04-18 |  | 15.5d |  |  |  |  |  |
| 230 | 13.3.2.1 | 第一层 | 0.5d? | 2012-04-16 | 2012-04-16 |  | 17.5d |  | start no earlier than 2012-04-16 |  |  |  |
| 231 | 13.3.2.2 | 监狱(10层) | 1d? | 2012-04-16 | 2012-04-16 |  | 15.5d | 0d | start no earlier than 2012-04-16 |  |  |  |
| 232 | 13.3.2.3 | 教堂(15层) | 1.5d? | 2012-04-17 | 2012-04-18 | 231 | 15.5d |  |  |  |  |  |
| 233 | 13.3.3 | 数值设置(怪物数种类/数量，材料掉落) | 2d | 2012-04-17 | 2012-04-18 |  | 15d |  | start no earlier than 2012-04-17 |  |  |  |

Notes:
- 208: 接口定义：战斗开始，战斗结束 / 后端有一个验证器，验证过程。

| ID | WBS | Task | Duration | Start | Finish | Predecessors | Complete | Remaining | Total slack | Free slack | Constraint | Resources | Work | Actual work | Text1 |
| --- | --- | --- | --- | --- | --- | --- | --- | --- | --- | --- | --- | --- | --- | --- | --- |
| 234 | 13.4 | **翡翠森林** | 5d? | 2012-04-17 | 2012-04-23 |  |  |  | 12d |  |  |  |  |  | 缺美术搁置 |
| 235 | 13.4.1 | 美术(地形块+装饰) | 2d? | 2012-04-17 | 2012-04-18 |  |  |  | 15d |  | start no earlier than 2012-04-17 |  |  |  |  |
| 236 | 13.4.2 | **地图编辑** | 3.5d? | 2012-04-18 | 2012-04-23 |  |  |  | 12.5d |  |  |  |  |  |  |
| 237 | 13.4.2.1 | 第一层 | 0.5d? | 2012-04-18 | 2012-04-18 |  |  |  | 15.5d |  | start no earlier than 2012-04-18 |  |  |  |  |
| 238 | 13.4.2.2 | 森林东(10层) | 1d? | 2012-04-19 | 2012-04-19 |  |  |  | 12.5d | 0d | start no earlier than 2012-04-19 |  |  |  |  |
| 239 | 13.4.2.3 | 森林西(15层) | 1.5d? | 2012-04-20 | 2012-04-23 | 238 |  |  | 12.5d |  |  |  |  |  |  |
| 240 | 13.4.3 | 数值设置(怪物数种类/数量，材料掉落) | 2d | 2012-04-20 | 2012-04-23 |  |  |  | 12d |  | start no earlier than 2012-04-20 |  |  |  |  |
| 241 | 13.5 | **泡泡沼泽** | 6d? | 2012-04-19 | 2012-04-26 |  |  |  | 9d |  |  |  |  |  | 缺美术搁置 |
| 242 | 13.5.1 | 美术(地形块+装饰) | 2d? | 2012-04-19 | 2012-04-20 |  |  |  | 13d |  | start no earlier than 2012-04-19 |  |  |  |  |
| 243 | 13.5.2 | **地图编辑** | 2.5d? | 2012-04-24 | 2012-04-26 |  |  |  | 9.5d |  |  |  |  |  |  |
| 244 | 13.5.2.1 | 第一层 | 0.5d? | 2012-04-24 | 2012-04-24 |  |  |  | 11.5d |  | start no earlier than 2012-04-24 |  |  |  |  |
| 245 | 13.5.2.2 | 外围(10层) | 1d? | 2012-04-24 | 2012-04-24 |  |  |  | 9.5d | 0d | start no earlier than 2012-04-24 |  |  |  |  |
| 246 | 13.5.2.3 | 深处(15层) | 1.5d? | 2012-04-25 | 2012-04-26 | 245 |  |  | 9.5d |  |  |  |  |  |  |
| 247 | 13.5.3 | 数值设置(怪物数种类/数量，材料掉落) | 2d | 2012-04-25 | 2012-04-26 |  |  |  | 9d |  | start no earlier than 2012-04-25 |  |  |  |  |
| 248 | 13.6 | 测试优化 | 2d | 2012-04-25 | 2012-04-26 |  |  |  | 9d |  | start no earlier than 2012-04-25 |  |  |  |  |
| 249 | 14 | **任务和剧情模块开发** | 22d? | 2012-03-19 A | 2012-04-18 |  | 10% | 19.84d? | 0d |  |  | 张琦; 章昕; 夏俊杰; 小庆; 李钊 | 1520h | 116h |  |
| 250 | 14.1 | **策划和前期准备** | 3d | 2012-03-19 | 2012-03-21 |  |  |  | 13d | 0d | start no earlier than 2012-03-19 |  | 48h |  |  |
| 251 | 14.1.1 | 策划初稿审核（详细策划案，原型，UI需求） | 1d | 2012-03-21 | 2012-03-21 |  |  |  | 13d |  | start no earlier than 2012-03-21 | 姜浩 | 8h |  |  |
| 252 | 14.1.2 | 模块前后端需求分析，设计，定义接口 | 1d | 2012-03-19 | 2012-03-19 |  |  |  | 15d |  | start no earlier than 2012-02-10 | 立军; 张琦; 姜浩 | 24h |  |  |
| 253 | 14.1.3 | 美术图量分析和风格确定 | 1d | 2012-03-19 | 2012-03-19 |  |  |  | 15d |  | start no earlier than 2012-02-09 | 大强; 姜浩 | 16h |  |  |
| 254 | 14.2 | **美术前期素材（给到技术开发起步用）** | 3d | 2012-03-22 | 2012-03-26 | 250 |  |  | 16d |  |  |  | 24h |  |  |
| 255 | 14.2.1 | 1个UI初稿 | 3d | 2012-03-22 | 2012-03-26 |  |  |  | 16d |  | start no earlier than 2012-02-10 | 余晓莉 | 24h |  |  |
| 256 | 14.3 | **剧情** | 12d? | 2012-03-22 A | 2012-04-09 |  | 15% | 10.2d? | 7d |  |  |  | 272h | 24h |  |
| 257 | 14.3.1 | **前端开发** | 8d | 2012-03-22 | 2012-03-31 | 250 |  |  | 11d |  |  | 张琦; 夏俊杰 | 128h |  |  |
| 258 | 14.3.1.1 | 项目需求分析，模块定义，接口定义，代码设计 | 1d | 2012-03-22 | 2012-03-22 |  |  |  | 18d |  | start no earlier than 2012-02-23 |  |  |  |  |
| 259 | 14.3.1.2 | CODING | 6d | 2012-03-26 | 2012-03-31 |  |  |  | 11d |  | start no earlier than 2012-03-26 |  |  |  |  |

Notes:
- 249: ？？？脚本可复用？ 5个工作日（预测）
- 252: 2月12日，13日讨论2稿确定后，可以开始开发
- 254: 具体包括： 1个场景，一个人物，1个UI初稿
- 258: 接口定义：战斗开始，战斗结束 / 后端有一个验证器，验证过程。

| ID | WBS | Task | Duration | Start | Finish | Predecessors | Complete | Remaining | Total slack | Constraint | Resources | Work | Actual work |
| --- | --- | --- | --- | --- | --- | --- | --- | --- | --- | --- | --- | --- | --- |
| 260 | 14.3.2 | **后端开发** | 6d | 2012-03-26 | 2012-03-31 | 250 |  |  | 11d |  | 李钊 | 48h |  |
| 261 | 14.3.2.1 | 项目需求分析，模块定义，接口定义，代码设计 | 1d | 2012-03-26 | 2012-03-26 |  |  |  | 16d | start no earlier than 2012-03-26 |  |  |  |
| 262 | 14.3.2.2 | CODING | 6d | 2012-03-26 | 2012-03-31 |  |  |  | 11d | start no earlier than 2012-03-26 |  |  |  |
| 263 | 14.3.3 | 策划数值(一套剧情数据，包括各种情况) | 3d | 2012-04-01 A | 2012-04-06 A |  | 100% |  |  | start no earlier than 2012-04-01 | 姜浩 | 24h | 24h |
| 264 | 14.3.4 | NPC图量表,佣兵头像图量表 | 3d? | 2012-04-05 | 2012-04-09 |  |  |  | 7d | finish no earlier than 2012-04-09 | 姜浩; Eric; 大强 | 72h |  |
| 265 | 14.4 | **任务** | 12d | 2012-03-23 A | 2012-04-10 |  | 10% | 10.86d | 6d |  |  | 248h | 16h |
| 266 | 14.4.1 | **前端开发** | 10d | 2012-03-23 | 2012-04-06 |  |  |  | 8d |  | 张琦; 小庆 | 160h |  |
| 267 | 14.4.1.1 | 项目需求分析，模块定义，接口定义，代码设计 | 1d | 2012-03-23 | 2012-03-23 |  |  |  | 17d | start no earlier than 2012-03-23 |  |  |  |
| 268 | 14.4.1.2 | CODING | 8d | 2012-03-27 | 2012-04-06 |  |  |  | 8d | finish no earlier than 2012-04-06 |  |  |  |
| 269 | 14.4.2 | **后端开发** | 9d | 2012-03-26 | 2012-04-06 |  |  |  | 8d |  | 章昕 | 72h |  |
| 270 | 14.4.2.1 | 项目需求分析，模块定义，接口定义，代码设计 | 1d | 2012-03-26 | 2012-03-26 |  |  |  | 16d | start no earlier than 2012-03-26 |  |  |  |
| 271 | 14.4.2.2 | CODING | 9d | 2012-03-26 | 2012-04-06 |  |  |  | 8d | start no earlier than 2012-03-26 |  |  |  |
| 272 | 14.4.3 | 策划数值(一套任务数据，包括所有类型各一个) | 2d | 2012-04-09 A | 2012-04-10 A |  | 100% |  |  | start no earlier than 2012-04-09 | 姜浩 | 16h | 16h |
| 273 | 14.5 | 联调和测试 | 5d | 2012-04-09 | 2012-04-13 |  |  |  | 3d | start no earlier than 2012-04-09 |  |  |  |
| 274 | 14.6 | **商店模块开发** | 15d | 2012-03-28 A | 2012-04-18 |  | 11% | 13.33d | 0d |  |  | 48h |  |
| 275 | 14.6.1 | **策划和前期准备** | 1d | 2012-03-28 A | 2012-03-28 |  | 50% | 0.5d | 14d |  | Eric | 8h |  |
| 276 | 14.6.1.1 | 策划初稿审核（详细策划案，原型，UI需求） | 1d | 2012-03-28 A | 2012-03-28 A |  | 100% |  |  | start no earlier than 2012-03-28 |  |  |  |
| 277 | 14.6.1.2 | 模块前后端需求分析，设计，定义接口 | 1d | 2012-03-28 | 2012-03-28 |  |  |  | 14d | start no earlier than 2012-03-28 |  |  |  |
| 278 | 14.6.2 | **开发** | 13d | 2012-03-30 | 2012-04-18 |  |  |  | 0d |  |  | 40h |  |
| 279 | 14.6.2.1 | **美术前期素材（给到技术开发起步用）** | 2d | 2012-03-30 | 2012-03-31 |  |  |  | 11d |  |  |  |  |
| 280 | 14.6.2.1.1 | 1个UI初稿 | 2d | 2012-03-30 | 2012-03-31 |  |  |  | 11d | start no earlier than 2012-03-30 |  |  |  |
| 281 | 14.6.2.2 | **前端开发** | 2d | 2012-04-17 | 2012-04-18 |  |  |  | 0d |  | 张琦; 小庆 | 32h |  |
| 282 | 14.6.2.2.1 | CODING | 2d | 2012-04-17 | 2012-04-18 |  |  |  | 0d | start no earlier than 2012-04-17 |  |  |  |
| 283 | 14.6.2.3 | **后端开发** | 1d | 2012-04-17 | 2012-04-17 |  |  |  | 1d |  | 李钊 | 8h |  |
| 284 | 14.6.2.3.1 | CODING | 1d | 2012-04-17 | 2012-04-17 |  |  |  | 1d | start no earlier than 2012-04-17 |  |  |  |
| 285 | 14.6.3 | 联调和测试 | 2d | 2012-04-10 | 2012-04-11 |  |  |  | 5d | start no earlier than 2012-04-10 |  |  |  |
| 286 | 15 | 道具功能数值设置确认 | 1d? | 2012-04-17 | 2012-04-17 |  |  |  | 16d | start no earlier than 2012-04-17 | Eric; 姜浩 | 16h |  |

Notes:
- 261: 接口定义：战斗开始，战斗结束 / 后端有一个验证器，验证过程。
- 264: 佣兵如需要，80个头像，NPC的头像需要确定
- 267: 接口定义：战斗开始，战斗结束 / 后端有一个验证器，验证过程。
- 270: 接口定义：战斗开始，战斗结束 / 后端有一个验证器，验证过程。
- 274: 商店？人民币道具系统？ / 3~5天？
- 279: 具体包括： 1个场景，一个人物，1个UI初稿

| ID | WBS | Task | Duration | Start | Finish | Predecessors | Complete | Remaining | Total slack | Constraint | Resources | Work | Actual work |
| --- | --- | --- | --- | --- | --- | --- | --- | --- | --- | --- | --- | --- | --- |
| 287 | 16 | **第二轮确认调整** | 12d? | 2012-03-31 A | 2012-04-18 |  | 9% | 10.87d? | 15d |  |  | 572h | 133.55h |
| 288 | 16.1 | **战斗模块** | 7d? | 2012-03-31 A | 2012-04-11 |  | 7% | 6.53d? | 20d |  | Eric | 160h | 83.73h |
| 289 | 16.1.1 | 核对 | 1d? | 2012-03-31 A | 2012-03-31 A |  | 100% |  |  | start no earlier than 2012-03-31 |  |  |  |
| 290 | 16.1.2 | 前端 | 5d | 2012-04-01 A | 2012-04-10 A |  | 100% |  |  | start no earlier than 2012-04-01 | 夏俊杰; 张琦 | 80h | 80h |
| 291 | 16.1.3 | 后端 | 2d | 2012-04-09 | 2012-04-10 |  |  |  | 21d | start no earlier than 2012-04-09 | 章昕 | 16h |  |
| 292 | 16.1.4 | 美术 | 1d? | 2012-04-05 | 2012-04-05 |  |  |  | 24d | start no earlier than 2012-04-05 | 余晓莉 | 8h |  |
| 293 | 16.1.5 | 测试 | 1d? | 2012-04-11 | 2012-04-11 | 290 |  |  | 20d |  |  |  |  |
| 294 | 16.1.6 | **调整详细内容** | 5d? | 2012-04-01 | 2012-04-10 |  |  |  | 21d |  |  |  |  |
| 295 | 16.1.6.1 | 脚本说明文档 | 5d? | 2012-04-01 | 2012-04-10 |  |  |  | 21d | finish no earlier than 2012-04-10 |  |  |  |
| 296 | 16.1.6.2 | 砍完怪立刻跳回 | 5d? | 2012-04-01 | 2012-04-10 |  |  |  | 21d | finish no earlier than 2012-04-10 |  |  |  |
| 297 | 16.1.6.3 | 经验升级&显示 | 5d? | 2012-04-01 | 2012-04-10 |  |  |  | 21d | finish no earlier than 2012-04-10 |  |  |  |
| 298 | 16.1.6.4 | 人物顺序时间轴 | 5d? | 2012-04-01 | 2012-04-10 |  |  |  | 21d | finish no earlier than 2012-04-10 |  |  |  |
| 299 | 16.1.6.5 | 物品与技能点击打开 | 5d? | 2012-04-01 | 2012-04-10 |  |  |  | 21d | finish no earlier than 2012-04-10 |  |  |  |
| 300 | 16.1.6.6 | 鼠标划上时出现血条 | 5d? | 2012-04-01 | 2012-04-10 |  |  |  | 21d | finish no earlier than 2012-04-10 |  |  |  |
| 301 | 16.1.6.7 | 血条，魔法条UI更换 | 5d? | 2012-04-01 | 2012-04-10 |  |  |  | 21d | finish no earlier than 2012-04-10 |  |  |  |
| 302 | 16.1.6.8 | 掉出的物品延长至8秒后自动回收 | 5d? | 2012-04-01 | 2012-04-10 |  |  |  | 21d | finish no earlier than 2012-04-10 |  |  |  |
| 303 | 16.1.6.9 | 行动开始时自动选择攻击 | 5d? | 2012-04-01 | 2012-04-10 |  |  |  | 21d | finish no earlier than 2012-04-10 |  |  |  |
| 304 | 16.1.6.10 | 职业加成、属性加成、修正动态范围 | 5d? | 2012-04-01 | 2012-04-10 |  |  |  | 21d | finish no earlier than 2012-04-10 |  |  |  |
| 305 | 16.1.6.11 | 行动者以外的人物需要变暗 | 5d? | 2012-04-01 | 2012-04-10 |  |  |  | 21d | finish no earlier than 2012-04-10 |  |  |  |
| 306 | 16.1.6.12 | 开场对话 | 5d? | 2012-04-01 | 2012-04-10 |  |  |  | 21d | finish no earlier than 2012-04-10 |  |  |  |
| 307 | 16.1.6.13 | 音效和背景音乐 | 5d? | 2012-04-01 | 2012-04-10 |  |  |  | 21d | finish no earlier than 2012-04-10 |  |  |  |
| 308 | 16.1.6.14 | 鼠标手型 | 5d? | 2012-04-01 | 2012-04-10 |  |  |  | 21d | finish no earlier than 2012-04-10 |  |  |  |
| 309 | 16.1.6.15 | 技能震动 | 5d? | 2012-04-01 | 2012-04-10 |  |  |  | 21d | finish no earlier than 2012-04-10 |  |  |  |
| 310 | 16.1.6.16 | 场景与顺序条人物OVER时互相显示 | 5d? | 2012-04-01 | 2012-04-10 |  |  |  | 21d | finish no earlier than 2012-04-10 |  |  |  |
| 311 | 16.2 | UI替换 | 1d? | 2012-04-16 | 2012-04-16 | 312 |  |  | 17d |  | 张琦 | 8h |  |

| ID | WBS | Task | Duration | Start | Finish | Predecessors | Complete | Remaining | Total slack | Free slack | Constraint | Resources | Work | Actual work |
| --- | --- | --- | --- | --- | --- | --- | --- | --- | --- | --- | --- | --- | --- | --- |
| 312 | 16.3 | **订单模块** | 5d? | 2012-04-09 A | 2012-04-13 |  | 14% | 4.29d? | 17d | 0d |  | Eric | 104h | 5.71h |
| 313 | 16.3.1 | 核对 | 1d? | 2012-04-09 A | 2012-04-09 A |  | 100% |  |  |  | start no earlier than 2012-04-09 |  |  |  |
| 314 | 16.3.2 | 前端 | 3d | 2012-04-10 | 2012-04-12 | 313 |  |  | 17d | 0d |  | 张琦; 小庆 | 48h |  |
| 315 | 16.3.3 | 美术 | 2d? | 2012-04-10 | 2012-04-11 |  |  |  | 19d |  | finish no earlier than 2012-04-11 | 余晓莉 | 16h |  |
| 316 | 16.3.4 | 测试 | 1d? | 2012-04-13 | 2012-04-13 | 314 |  |  | 17d |  |  |  |  |  |
| 317 | 16.4 | **佣兵模块** | 1d? | 2012-04-12 | 2012-04-12 |  |  |  | 19d |  |  | Eric | 8h |  |
| 318 | 16.4.1 | 核对 | 1d? | 2012-04-12 | 2012-04-12 |  |  |  | 19d |  | start no earlier than 2012-04-12 |  |  |  |
| 319 | 16.5 | **合成模块+世界地图** | 6.5d? | 2012-04-09 A | 2012-04-17 |  | 31% | 4.5d? | 16.5d |  |  | 姜浩 | 116h | 30.77h |
| 320 | 16.5.1 | 核对 | 1d? | 2012-04-10 A | 2012-04-10 A |  | 100% |  |  |  | start no earlier than 2012-04-10 | 姜浩 | 8h | 8h |
| 321 | 16.5.2 | (合成新的UI需要提前替换) | 1d? | 2012-04-09 A | 2012-04-09 A |  | 100% |  |  |  | start no earlier than 2012-04-05 | 小庆 | 8h | 8h |
| 322 | 16.5.3 | 前端 | 1.5d | 2012-04-13 | 2012-04-16 |  |  |  | 16.5d | 0d | start no earlier than 2012-04-13 | 张琦; 小庆 | 24h |  |
| 323 | 16.5.4 | 前端-世界地图 | 1d | 2012-04-12 | 2012-04-12 |  |  |  | 19d |  | start no earlier than 2012-04-12 | 张琦; 张诚 | 16h |  |
| 324 | 16.5.5 | 美术 | 1d | 2012-04-12 | 2012-04-12 |  |  |  | 19d |  | start no earlier than 2012-04-12 | 余晓莉 | 8h |  |
| 325 | 16.5.6 | 测试 | 1d? | 2012-04-16 | 2012-04-17 | 322 |  |  | 16.5d |  | start no earlier than 2012-04-09 |  |  |  |
| 326 | 16.6 | **冒险模块** | 5d? | 2012-04-10 A | 2012-04-16 |  | 17% | 4.17d? | 17d |  |  | 姜浩 | 88h | 6.67h |
| 327 | 16.6.1 | 核对 | 1d? | 2012-04-10 A | 2012-04-10 A |  | 100% |  |  |  | start no earlier than 2012-04-09 |  |  |  |
| 328 | 16.6.2 | 前端 | 2d | 2012-04-12 | 2012-04-13 |  |  |  | 17d | 0d | start no earlier than 2012-04-12 | 张琦; 夏俊杰 | 32h |  |
| 329 | 16.6.3 | 美术 | 2d? | 2012-04-10 | 2012-04-11 |  |  |  | 20d |  | finish no earlier than 2012-04-11 | 余晓莉 | 16h |  |
| 330 | 16.6.4 | 测试 | 1d? | 2012-04-16 | 2012-04-16 | 328 |  |  | 17d |  |  |  |  |  |
| 331 | 16.7 | **剧情** | 7d? | 2012-04-10 A | 2012-04-18 |  | 20% | 5.6d? | 15d |  |  | 姜浩 | 88h | 6.67h |
| 332 | 16.7.1 | 核对 | 1d? | 2012-04-10 A | 2012-04-10 A |  | 100% |  |  |  | start no earlier than 2012-04-09 |  |  |  |
| 333 | 16.7.2 | 前端 | 1d | 2012-04-17 | 2012-04-17 |  |  |  | 15d | 0d | start no earlier than 2012-04-17 | 张琦; 夏俊杰 | 16h |  |
| 334 | 16.7.3 | 美术 | 2d? | 2012-04-16 | 2012-04-17 |  |  |  | 16d |  | start no earlier than 2012-04-16 | 余晓莉 | 16h |  |
| 335 | 16.7.4 | 测试 | 1d? | 2012-04-18 | 2012-04-18 | 333 |  |  | 15d |  |  |  |  |  |

| ID | WBS | Task | Duration | Start | Finish | Predecessors | Total slack | Free slack | Constraint | Resources | Work |
| --- | --- | --- | --- | --- | --- | --- | --- | --- | --- | --- | --- |
| 336 | 17 | **初始化场景和人物数据** | 3d? | 2012-04-17 | 2012-04-19 |  | 14d |  |  |  | 72h |
| 337 | 17.1 | 人物选择场景 | 3d? | 2012-04-17 | 2012-04-19 |  | 14d |  | finish no earlier than 2012-04-19 | 余晓莉; Eric | 48h |
| 338 | 17.2 | 默认商店场景 | 3d? | 2012-04-17 | 2012-04-19 |  | 14d |  | finish no earlier than 2012-04-19 | 李钊 | 24h |
| 339 | 18 | **初始化场景和人物数据** | 1d? | 2012-04-13 | 2012-04-13 |  | 18d |  |  |  | 8h |
| 340 | 18.1 | **怪物技能需求和美术** | 1d? | 2012-04-13 | 2012-04-13 |  | 18d |  |  | Eric | 8h |
| 341 | 18.1.1 | 策划 | 1d? | 2012-04-13 | 2012-04-13 |  | 18d |  | start no earlier than 2012-04-13 |  |  |
| 342 | 18.1.2 | 美术 | 1d? | 2012-04-13 | 2012-04-13 |  | 18d |  | start no earlier than 2012-04-13 |  |  |
| 343 | 19 | **初始化人物和初始化场景和家的装扮** | 3d? | 2012-04-16 | 2012-04-18 |  | 15d |  |  |  | 40h |
| 344 | 19.1 | 初始化人物策划 | 2d | 2012-04-16 | 2012-04-17 |  | 15d | 0d | start no earlier than 2012-04-16 | Eric | 16h |
| 345 | 19.2 | 美术 | 1d? | 2012-04-18 | 2012-04-18 | 344 | 15d |  |  | 余晓莉 | 8h |
| 346 | 19.3 | 前端 | 1d? | 2012-04-18 | 2012-04-18 |  | 15d |  | start no earlier than 2012-04-18 | 张琦 | 8h |
| 347 | 19.4 | 后端 | 1d? | 2012-04-18 | 2012-04-18 |  | 15d |  | start no earlier than 2012-04-18 | 章昕 | 8h |
| 348 | 19.5 | 测试 | 1d? | 2012-04-18 | 2012-04-18 |  | 15d |  | start no earlier than 2012-04-18 |  |  |
| 349 | 20 | **UI第二轮确认调换** | 2d? | 2012-04-12 | 2012-04-13 |  | 18d |  |  | Eric; 大强; 余晓莉 | 96h |
| 350 | 20.1 | UI第二轮确认 | 1d? | 2012-04-12 | 2012-04-12 |  | 18d | 0d | start no earlier than 2012-04-12 | Eric; 大强; 余晓莉 | 24h |
| 351 | 20.2 | 调整 | 1d | 2012-04-13 | 2012-04-13 | 350 | 18d |  |  | 张琦; 小庆; 夏俊杰 | 24h |
| 352 | 21 | **上线前需完成模块** | 8d? | 2012-04-13 | 2012-04-24 |  | 9d | 0d |  |  | 208h |
| 353 | 21.1 | **礼物系统** | 6d? | 2012-04-17 | 2012-04-24 |  | 9d |  |  | Eric | 72h |
| 354 | 21.1.1 | 数值设定 | 1d? | 2012-04-24 | 2012-04-24 |  | 9d |  | start no earlier than 2012-04-24 | Eric | 8h |
| 355 | 21.1.2 | 移植 | 2d | 2012-04-17 | 2012-04-18 |  | 13d |  | start no earlier than 2012-04-17 | 张诚 | 16h |
| 356 | 21.1.3 | 导入礼物的内容 | 2d | 2012-04-18 | 2012-04-19 |  | 12d |  | start no earlier than 2012-04-18 |  |  |
| 357 | 21.1.4 | 测试 | 1d? | 2012-04-18 | 2012-04-18 |  | 13d |  | start no earlier than 2012-04-18 |  |  |
| 358 | 21.2 | **每日登陆奖励** | 5d? | 2012-04-13 | 2012-04-19 |  | 12d |  |  | 柱子 | 64h |
| 359 | 21.2.1 | 审评 | 0.5d? | 2012-04-13 | 2012-04-13 |  | 16.5d |  | start no earlier than 2012-04-13 | Eric; 柱子 | 8h |
| 360 | 21.2.2 | 移植 | 2d | 2012-04-18 | 2012-04-19 |  | 12d |  | start no earlier than 2012-04-18 | 张诚 | 16h |
| 361 | 21.2.3 | 导入礼物的内容 | 2d | 2012-04-18 | 2012-04-19 |  | 12d |  | start no earlier than 2012-04-18 |  |  |
| 362 | 21.2.4 | 测试 | 1d? | 2012-04-18 | 2012-04-18 |  | 13d |  | start no earlier than 2012-04-18 |  |  |

Notes:
- 338: 合成必要的内容，墙，地板等DIY的测试
- 352: 交互系统 / 礼物系统 / 消息和日志 / 新手引导 / 每日登陆 / 数据监控
- 355: 具体包括： 1个场景，一个人物，1个UI初稿
- 360: 具体包括： 1个场景，一个人物，1个UI初稿

| ID | WBS | Task | Duration | Start | Finish | Predecessors | Total slack | Constraint | Resources | Work |
| --- | --- | --- | --- | --- | --- | --- | --- | --- | --- | --- |
| 363 | 21.3 | **消息和日志** | 2d? | 2012-04-18 | 2012-04-19 |  | 12d |  | Eric; 姜浩 | 48h |
| 364 | 21.3.1 | 数值设定 | 1d? | 2012-04-18 | 2012-04-18 |  | 13d | start no earlier than 2012-04-18 | Eric; 姜浩 | 16h |
| 365 | 21.3.2 | 移植 | 2d | 2012-04-18 | 2012-04-19 |  | 12d | start no earlier than 2012-04-18 |  |  |
| 366 | 21.3.3 | 导入礼物的内容 | 2d | 2012-04-18 | 2012-04-19 |  | 12d | start no earlier than 2012-04-18 |  |  |
| 367 | 21.3.4 | 测试 | 1d? | 2012-04-18 | 2012-04-18 |  | 13d | start no earlier than 2012-04-18 |  |  |
| 368 | 21.4 | **交互系统** | 3d | 2012-04-18 | 2012-04-20 |  | 11d |  | Eric | 24h |
| 369 | 21.4.1 | 策划初稿审核 | 2d | 2012-04-18 | 2012-04-19 |  | 12d | start no earlier than 2012-04-18 |  |  |
| 370 | 21.4.2 | 开发 | 3d | 2012-04-18 | 2012-04-20 |  | 11d | start no earlier than 2012-04-18 |  |  |
| 371 | 21.4.3 | 测试 | 2d | 2012-04-18 | 2012-04-19 |  | 12d | start no earlier than 2012-04-18 |  |  |
| 372 | 21.5 | **新手引导** | 2d? | 2012-04-18 | 2012-04-19 |  | 12d |  |  |  |
| 373 | 21.5.1 | 移植 | 2d | 2012-04-18 | 2012-04-19 |  | 12d | start no earlier than 2012-04-18 |  |  |
| 374 | 21.5.2 | 导入礼物的内容 | 2d | 2012-04-18 | 2012-04-19 |  | 12d | start no earlier than 2012-04-18 |  |  |
| 375 | 21.5.3 | 测试 | 1d? | 2012-04-18 | 2012-04-18 |  | 13d | start no earlier than 2012-04-18 |  |  |
| 376 | 22 | **后台数据监控** | 2d? | 2012-04-25 | 2012-04-26 | 352 | 9d |  |  | 32h |
| 377 | 22.1 | 策划 | 2d | 2012-04-25 | 2012-04-26 |  | 9d |  | Eric; 姜浩 | 32h |
| 378 | 22.2 | 开发 | 2d | 2012-04-25 | 2012-04-26 |  | 9d |  |  |  |
| 379 | 22.3 | 测试 | 1d? | 2012-04-25 | 2012-04-25 |  | 10d |  |  |  |
| 380 | 23 | **测试** | 12d? | 2012-04-19 | 2012-05-04 | 249 | 0d |  |  |  |
| 381 | 23.1 | 测试计划 | 7d | 2012-04-19 | 2012-04-27 |  | 5d |  |  |  |
| 382 | 23.2 | 功能测试 | 2d | 2012-04-19 | 2012-04-20 |  | 10d |  |  |  |
| 383 | 23.3 | 性能测试 | 6d | 2012-04-19 | 2012-04-26 |  | 6d |  |  |  |
| 384 | 23.4 | 易用性测试 | 1d? | 2012-04-19 | 2012-04-19 |  | 11d |  |  |  |
| 385 | 23.5 | 压力测试 | 1d? | 2012-04-19 | 2012-04-19 |  | 11d |  |  |  |
| 386 | 24 | **上线流程** | 3d? | 2012-05-07 | 2012-05-09 | 380 | 0d |  |  | 120h |
| 387 | 24.1 | **接入准备** | 3d | 2012-05-07 | 2012-05-09 |  | 0d |  |  | 120h |
| 388 | 24.1.1 | 商务合作会谈 | 2d | 2012-05-07 | 2012-05-08 |  | 1d | start no earlier than 2012-02-06 | 姜浩 | 16h |
| 389 | 24.1.2 | API接入 | 3d | 2012-05-07 | 2012-05-09 |  | 0d | start no earlier than 2012-02-10 | 立军; 张琦; 姜浩 | 72h |
| 390 | 24.1.3 | 合同签订 | 2d | 2012-05-07 | 2012-05-08 |  | 1d | start no earlier than 2012-02-09 | 大强; 姜浩 | 32h |
| 391 | 24.2 | 展会的参与，市场推广 | 1d? | 2012-05-07 | 2012-05-07 |  | 2d |  |  |  |

Notes:
- 365: 具体包括： 1个场景，一个人物，1个UI初稿
- 370: 2月12日，13日讨论2稿确定后，可以开始开发
- 373: 具体包括： 1个场景，一个人物，1个UI初稿
- 377: 具体包括： 1个场景，一个人物，1个UI初稿
- 380: ALPHA / BETA / 删档内测 / 正式测试上线
- 382: 具体包括： 1个场景，一个人物，1个UI初稿
- 386: ？？？脚本可复用？
- 389: 2月12日，13日讨论2稿确定后，可以开始开发
