# 魔法项目进度表20120302V

Schedule from MS Project, 2010-06-25 to 2012-04-27, A marks actual dates.

## Calendars

- 标准: Mon-Fri 08:00-12:00, 13:00-17:00; Sat-Sun off. Exceptions (off unless hours are given): 2012-03-31 to 2012-04-01 08:00-12:00, 13:00-17:00 (清明节调整上班), 2012-04-02 to 2012-04-04 (清明节调整放假).

## Resources

| Resource |
| --- |
| 柱子 |
| 李钊 |
| 张琦 |
| 大强 |
| 立军 |
| 王晔 |
| Eric |
| 文明 |
| 姜浩 |
| 章昕 |
| 夏俊杰 |
| 余颖慧 |
| 赵子敬 |
| 余晓莉 |
| 张 |
| 张诚 |
| 小庆 |
| 陈志荣 |
| E姜浩 |
| 陈志龙 |
| 张燕南 |
| 桃子 |
| 外包 |
| 邹慧 |
| 蒋德仁 |
| 宋文卿 |
| 夏 |
| 琦 |
| 章 |
| 庆 |
| 诚 |
| 城 |

## Schedule

| ID | WBS | Task | Type | Duration | Start | Finish | Predecessors | Complete | Remaining | Total slack | Free slack | Constraint | Resources | Work | Actual work |
| --- | --- | --- | --- | --- | --- | --- | --- | --- | --- | --- | --- | --- | --- | --- | --- |
| 1 | 1 | **任务，剧情，订单内容** |  | 42d? | 2012-02-28 | 2012-04-26 |  |  |  | 1d |  |  | 姜浩; 陈志荣 | 752h |  |
| 2 | 1.1 | 订单任务内容 |  | 3d | 2012-02-28 | 2012-03-01 |  |  |  | 40d |  | start no earlier than 2012-02-28 | Eric | 24h |  |
| 3 | 1.2 | 剧情世界观详细框架 |  | 6d? | 2012-04-11 | 2012-04-18 |  |  |  | 6d | 5d | finish no earlier than 2012-04-18 | 姜浩 | 48h |  |
| 4 | 1.3 | 分配剧情和任务的具体文字 |  | 1d? | 2012-04-26 | 2012-04-26 | 3 |  |  | 1d |  | finish no earlier than 2012-04-26 | 姜浩 | 8h |  |
| 5 | 2 | **数值和调试内容** |  | 34d? | 2012-03-06 A | 2012-04-23 |  | 30% | 23.8d? | 4d |  |  | Eric | 624h | 107.2h |
| 6 | 2.1 | **策划前期准备** |  | 5d | 2012-04-16 | 2012-04-20 |  |  |  | 0d |  |  |  | 40h |  |
| 7 | 2.1.1 | 数值规则 |  | 5d | 2012-04-16 | 2012-04-20 |  |  |  | 0d |  | finish no earlier than 2012-04-20 | Eric | 40h |  |
| 8 | 2.2 | **数值调试** |  | 34d? | 2012-03-06 A | 2012-04-23 | 6 | 60% | 13.6d? | 4d |  |  | Eric | 312h | 63.2h |
| 9 | 2.2.1 | 战斗模块 |  | 4d | 2012-03-06 A | 2012-04-23 |  | 75% | 1d | 4d |  |  | Eric | 32h | 24h |
| 10 | 2.2.2 | 合成模块 | milestone | 0d | 2012-04-20 | 2012-04-20 |  |  |  | 5d |  | start no earlier than 2012-04-20 | 姜浩 |  |  |
| 11 | 2.2.3 | 主场景模块 | milestone | 0d | 2012-04-20 | 2012-04-20 |  |  |  | 5d |  | start no earlier than 2012-04-20 | 李钊 |  |  |
| 12 | 2.2.4 | 经营 | milestone | 0d | 2012-04-20 | 2012-04-20 |  |  |  | 5d |  | start no earlier than 2012-04-19 | Eric |  |  |
| 13 | 2.2.5 | 怪物站位数据 |  | 1d? | 2012-04-23 | 2012-04-23 |  |  |  | 4d |  | start no earlier than 2012-04-19 | Eric | 8h |  |
| 14 | 3 | **美术开发** |  | 56d? | 2012-02-09 A | 2012-04-27 |  | 24% | 42.68d? | 0d |  |  | 大强 | 3348h | 993.88h |
| 15 | 3.1 | **风格确定** |  | 42d? | 2012-02-09 | 2012-04-09 |  |  |  | 14d |  |  |  | 148h |  |
| 16 | 3.1.1 | **UI风格确定** |  | 5.5d? | 2012-02-27 | 2012-03-05 |  |  |  | 38.5d |  |  | 大强 | 116h |  |
| 17 | 3.1.1.1 | 参照产品，对比 |  | 3d? | 2012-02-27 | 2012-02-29 |  |  |  | 40.5d | 0d | finish no earlier than 2012-02-29 | 王晔 | 24h |  |
| 18 | 3.1.1.2 | 和策划讨论，确定下风格 |  | 0.5d | 2012-03-01 | 2012-03-01 | 17 |  |  | 40.5d |  |  | 王晔; 大强; Eric; 姜浩 | 16h |  |
| 19 | 3.1.1.3 | 出初稿 |  | 2d | 2012-03-01 | 2012-03-02 |  |  |  | 38.5d | 0d | start no earlier than 2012-03-01 | 王晔 | 16h |  |
| 20 | 3.1.1.4 | 审核，讨论，定稿 |  | 0.5d | 2012-03-05 | 2012-03-05 | 19 |  |  | 38.5d |  |  | 王晔; 大强; Eric; 姜浩 | 16h |  |
| 21 | 3.1.2 | 场景风格确定 |  | 3d | 2012-02-10 | 2012-02-14 |  |  |  | 52d |  | start no earlier than 2012-02-10 |  |  |  |
| 22 | 3.1.3 | 人设和道具风格确定 |  | 1d | 2012-02-09 | 2012-02-09 |  |  |  | 55d |  | start no earlier than 2012-02-09 | 大强; 姜浩 | 16h |  |
| 23 | 3.1.4 | LOGO设计 |  | 2d? | 2012-04-06 | 2012-04-09 |  |  |  | 14d |  | finish no earlier than 2012-04-09 | 余晓莉 | 16h |  |
| 24 | 3.2 | **图量确定** |  | 36d? | 2012-02-10 | 2012-03-30 |  |  |  | 19d |  |  |  | 1352h |  |
| 25 | 3.2.1 | **美术前期素材（给到技术开发起步用）** |  | 2d | 2012-02-10 | 2012-02-13 |  |  |  | 19d | 0d |  |  | 48h |  |
| 26 | 3.2.1.1 | 1个场景 |  | 2d | 2012-02-10 | 2012-02-13 |  |  |  | 19d |  | start no earlier than 2012-02-10 | 余颖慧 | 16h |  |
| 27 | 3.2.1.2 | 1个人物 |  | 2d | 2012-02-10 | 2012-02-13 |  |  |  | 19d |  | start no earlier than 2012-02-10 | 赵子敬 | 16h |  |
| 28 | 3.2.1.3 | 1个UI初稿 |  | 2d | 2012-02-10 | 2012-02-13 |  |  |  | 19d |  | start no earlier than 2012-02-10 | 余晓莉 | 16h |  |

Notes:
- 1: ？？？脚本可复用？
- 5: ？？？脚本可复用？
- 9: 技能 完成 80%/ 怪物 4.20 完成 -- 4.19
- 10: 4.20 完成 -- 4.19
- 11: 家里的初始摆设 / 4.20 完成 -- 4.19
- 12: 4.20 上午Eric和姜浩核对 / 5级以内 上午完成 -- 4.19
- 13: 上午完成
- 21: 2月12日，13日讨论2稿确定后，可以开始开发
- 25: 具体包括： 1个场景，一个人物，1个UI初稿

| ID | WBS | Task | Duration | Start | Finish | Predecessors | Complete | Remaining | Total slack | Free slack | Constraint | Resources | Work | Actual work | Text1 |
| --- | --- | --- | --- | --- | --- | --- | --- | --- | --- | --- | --- | --- | --- | --- | --- |
| 29 | 3.2.2 | **美术工作量** | 34d? | 2012-02-14 | 2012-03-30 | 25 |  |  | 19d |  |  |  | 1304h |  |  |
| 30 | 3.2.2.1 | 美术UI开发 | 34d? | 2012-02-14 | 2012-03-30 |  |  |  | 19d |  |  | 王晔; 余晓莉 | 544h |  |  |
| 31 | 3.2.2.2 | 美术道具开发 | 26d? | 2012-02-24 | 2012-03-30 |  |  |  | 19d |  | start no earlier than 2012-02-24 | 张燕南 | 208h |  |  |
| 32 | 3.2.2.3 | **美术人设开发** | 1d? | 2012-02-14 | 2012-02-14 |  |  |  | 52d |  |  | 赵子敬 | 8h |  |  |
| 33 | 3.2.2.3.1 | 人物 | 1d? | 2012-02-14 | 2012-02-14 |  |  |  | 52d |  |  |  |  |  |  |
| 34 | 3.2.2.3.2 | 怪物 | 1d? | 2012-02-14 | 2012-02-14 |  |  |  | 52d |  |  |  |  |  |  |
| 35 | 3.2.2.4 | 特效 | 19d? | 2012-02-14 | 2012-03-09 |  |  |  | 19d | 0d |  | 大强 | 152h |  |  |
| 36 | 3.2.2.5 | 过场动画 | 15d? | 2012-03-12 | 2012-03-30 | 35 |  |  | 19d |  |  | 大强 | 120h |  |  |
| 37 | 3.2.2.6 | **场景** | 9d? | 2012-02-27 | 2012-03-08 |  |  |  | 35d |  |  | 张燕南; 大强 | 272h |  |  |
| 38 | 3.2.2.6.1 | 世界地图 | 8d? | 2012-02-28 | 2012-03-08 |  |  |  | 35d |  | finish no earlier than 2012-03-08 | 大强 | 64h |  |  |
| 39 | 3.2.2.6.2 | 战斗场景 | 1d? | 2012-02-27 | 2012-02-27 |  |  |  | 43d |  | start no earlier than 2012-02-27 | 张燕南 | 8h |  |  |
| 40 | 3.2.2.6.3 | 地形块 | 7d? | 2012-02-29 | 2012-03-08 |  |  |  | 35d |  | finish no earlier than 2012-03-08 | 张燕南 | 56h |  |  |
| 41 | 3.3 | **第2批图量确定** | 31d? | 2012-03-15 A | 2012-04-27 |  | 56% | 13.64d? | 0d |  |  |  | 1400h | 887.33h |  |
| 42 | 3.3.1 | **UI** | 6d? | 2012-04-13 A | 2012-04-20 |  | 90% | 0.6d? | 5d |  |  | 余晓莉 | 336h | 308h |  |
| 43 | 3.3.1.1 | 4个主界面（自家 自村 副本 友家） | 5d? | 2012-04-13 A | 2012-04-19 A |  | 100% |  |  |  | finish no earlier than 2012-04-19 | 余晓莉; Eric | 80h | 80h |  |
| 44 | 3.3.1.2 | 1个仓库（一个仓库界面+两个小的确认） | 5d? | 2012-04-13 A | 2012-04-19 A |  | 100% |  |  |  | finish no earlier than 2012-04-19 | 姜浩; 余晓莉 | 80h | 80h |  |
| 45 | 3.3.1.3 | 2个订单（接受订单 查看订单） | 1d? | 2012-04-13 A | 2012-04-13 A |  | 100% |  |  |  | finish no earlier than 2012-04-13 | 余晓莉 | 8h | 8h |  |
| 46 | 3.3.1.4 | 5个佣兵（雇佣界面 人物设置 选择设置 阵型设计 武器选择 技能选择） | 1d? | 2012-04-16 A | 2012-04-16 A |  | 100% |  |  |  | start no earlier than 2012-04-16 | 余晓莉; Eric | 16h | 16h |  |
| 47 | 3.3.1.5 | 2个合成（物品界面 合成界面 立刻完成（小）） | 1d | 2012-04-18 A | 2012-04-18 A |  | 100% |  |  |  | start no earlier than 2012-04-17 | 余晓莉; 姜浩 | 16h | 16h |  |
| 48 | 3.3.1.6 | 3个剧情（接受任务 完成任务 查看任务） | 1d | 2012-04-17 A | 2012-04-17 A |  | 100% |  |  |  | start no earlier than 2012-04-17 | 余晓莉; 姜浩 | 16h | 16h |  |
| 49 | 3.3.1.7 | 2个图鉴（目录 物品详细信息界面） | 1d? | 2012-04-17 A | 2012-04-17 A |  | 100% |  |  |  | start no earlier than 2012-04-17 | 余晓莉; 姜浩 | 16h | 16h |  |
| 50 | 3.3.1.8 | 3个战斗（自家攻击 敌人攻击 好友协助） | 1d | 2012-04-13 A | 2012-04-16 A |  | 100% |  |  |  | finish no earlier than 2012-04-13 | 余晓莉 | 8h | 8h |  |
| 51 | 3.3.1.9 | 1个商店界面 | 2d? | 2012-04-18 A | 2012-04-19 A |  | 100% |  |  |  | finish no earlier than 2012-04-19 | 余晓莉; Eric | 32h | 32h |  |
| 52 | 3.3.1.10 | LOADING界面 | 1d? | 2012-04-19 | 2012-04-19 |  |  |  | 6d |  | finish no earlier than 2012-04-19 | 余晓莉 | 8h |  |  |
| 53 | 3.3.1.11 | 创建人物界面 | 1d? | 2012-04-20 | 2012-04-20 |  |  |  | 5d |  | start no earlier than 2012-04-20 | 余晓莉 | 8h |  | 人物创建要全身像，背景要位图 |

Notes:
- 30: 关键操作：战斗和合成 / 主场景的经验条，按钮，上下栏，店铺的等级等，DIY，挪来挪去的箭头，日常按钮，布局，鼠标划上的效果 / 第一轮：先出UI框架初稿 （先给技术前端开发） / 第二轮：调整UI的美观和细化。（工作中不断调整） / 第三轮：美术和策划的进一步磨合（包括特效，细节等全面的调整，包括程序技术原型完成后，可以联调测试后，再调整） / 具体ＵＩ本身，先定参考风格（找一堆资料，然后和策划核对下风格，了解策划倾向的风格，然后按照ＵＩ自己的理解，做一些风格２～３个拿出来核对，然后确定一个风格，和主场景背景，还有边线，里面道具，人物等整体风格协调）
- 31: 副本和订单（和合成术有关），有些道具看下之前魔法是否可以复用 / 材料，装备，掉落的物品，血瓶，使用的物品（副本，和战斗） ４３个道具，上线１００个以上
- 32: 佣兵这块，具体需要和大强核对 / 6个人物，3个职业（每个职业一男一女），每个人物有20~22个动作，120个~130个动作 / 怪物的设计，做了7个怪物的形象，动作需求还需要进一步确定
- 35: ＋以上 / 包括３个职业，每个职业５种技能（技能不同等级无特效） / 怪的特效 / 每个场景的特效
- 36: 初始有３个大场景（城镇，翡翠洞，世界地图）
- 37: 地形块集合，上线之前完成4个副本场景（地图编辑器），还有3个战斗场景 / 世界地图由大强来做，上面的图标每天３～４个出
- 38: 包含17个图标
- 39: 战斗场景每个大概1~1.5天
- 40: 先完成3个副本场景的场景图
- 43: Eric最终修改需再次确认
- 44: 姜浩确认需求
- 46: Eric 4月16日确认
- 49: 姜浩确认第2轮

| ID | WBS | Task | Duration | Start | Finish | Predecessors | Complete | Remaining | Total slack | Free slack | Constraint | Resources | Work | Actual work |
| --- | --- | --- | --- | --- | --- | --- | --- | --- | --- | --- | --- | --- | --- | --- |
| 54 | 3.3.2 | **人物** | 5d? | 2012-04-13 A | 2012-04-19 |  | 17% | 4.17d? | 6d |  |  | 赵子敬; 外包 | 176h | 29.33h |
| 55 | 3.3.2.1 | 主角（6个） | 1d? | 2012-04-17 A | 2012-04-17 A |  | 100% |  |  |  | finish no earlier than 2012-04-19 | 赵子敬 | 8h | 8h |
| 56 | 3.3.2.2 | 主角头像 | 5d? | 2012-04-13 | 2012-04-19 |  |  |  | 6d |  | finish no earlier than 2012-04-19 | 外包 | 40h |  |
| 57 | 3.3.2.3 | 普通佣兵（6个） | 1d? | 2012-04-17 A | 2012-04-17 A |  | 100% |  |  |  | finish no earlier than 2012-04-19 | 赵子敬 | 8h | 8h |
| 58 | 3.3.2.4 | 普通佣兵头像 | 5d? | 2012-04-13 | 2012-04-19 |  |  |  | 6d |  | finish no earlier than 2012-04-19 | 外包 | 40h |  |
| 59 | 3.3.3 | **怪物** | 25d? | 2012-03-15 A | 2012-04-19 A |  | 100% |  |  |  |  | 赵子敬 | 400h | 400h |
| 60 | 3.3.3.1 | 战斗时+行走时（24个） | 25d? | 2012-03-15 A | 2012-04-19 A |  | 100% |  |  |  | start no earlier than 2012-03-15 | 赵子敬 | 200h | 200h |
| 61 | 3.3.4 | **NPC** | 7d? | 2012-04-19 | 2012-04-27 |  |  |  | 0d |  |  | 赵子敬; 外包 | 224h |  |
| 62 | 3.3.4.1 | 与玩家对话的NPC（15个） | 7d? | 2012-04-19 | 2012-04-27 |  |  |  | 0d |  | finish no earlier than 2012-04-27 | 赵子敬 | 56h |  |
| 63 | 3.3.4.2 | NPC头像 | 7d? | 2012-04-19 | 2012-04-27 |  |  |  | 0d |  | start no earlier than 2012-04-19 | 外包 | 56h |  |
| 64 | 3.3.5 | **场景** | 7d? | 2012-04-19 | 2012-04-27 |  |  |  | 0d |  |  |  |  |  |
| 65 | 3.3.5.1 | 战斗场景（2套） | 7d? | 2012-04-19 | 2012-04-27 |  |  |  | 0d |  | finish no earlier than 2012-04-27 |  |  |  |
| 66 | 3.3.5.2 | 地形快 | 7d? | 2012-04-19 | 2012-04-27 |  |  |  | 0d |  | finish no earlier than 2012-04-27 |  |  |  |
| 67 | 3.3.6 | **道具** | 8d? | 2012-04-10 A | 2012-04-19 |  | 99% | 0d? | 0d |  |  | 邹慧; 蒋德仁 | 256h | 144h |
| 68 | 3.3.6.1 | 道具、装备、材料（179个） | 8d? | 2012-04-10 A | 2012-04-19 A |  | 100% |  |  |  | finish no earlier than 2012-04-19 | 邹慧; 蒋德仁 | 128h | 128h |
| 69 | 3.3.7 | **特效** | 1d? | 2012-04-17 A | 2012-04-17 |  | 75% | 0.25d? | 8d |  |  |  | 8h | 6h |
| 70 | 3.3.7.1 | 战斗特效（10个） | 1d? | 2012-04-17 A | 2012-04-17 |  | 75% | 0.25d? | 8d |  | start no earlier than 2012-04-17 | 宋文卿 | 8h | 6h |
| 71 | 3.3.8 | **DIY：玩家的商店** | 1d? | 2012-04-17 | 2012-04-17 |  |  |  | 8d |  |  |  |  |  |
| 72 | 3.3.8.1 | 炼金炉（8个） | 1d? | 2012-04-17 | 2012-04-17 |  |  |  | 8d |  | start no earlier than 2012-04-17 |  |  |  |
| 73 | 3.3.8.2 | 装饰物 | 1d? | 2012-04-17 | 2012-04-17 |  |  |  | 8d |  | start no earlier than 2012-04-17 |  |  |  |
| 74 | 4 | **副本地图** | 22d? | 2012-03-27 | 2012-04-26 |  |  |  | 1d |  | start no earlier than 2012-03-27 |  |  |  |
| 75 | 4.1 | **矮人矿洞** | 10.5d? | 2012-03-27 | 2012-04-11 |  |  |  | 12.5d |  |  |  |  |  |
| 76 | 4.1.1 | 美术(地形块+装饰) | 3d | 2012-03-27 | 2012-03-29 |  |  |  | 16.5d | 3d |  |  |  |  |
| 77 | 4.1.2 | **地图编辑** | 2.5d? | 2012-04-05 | 2012-04-09 | 76 |  |  | 13.5d |  |  |  |  |  |
| 78 | 4.1.2.1 | 第一层 | 0.5d? | 2012-04-05 | 2012-04-05 |  |  |  | 16.5d |  | start no earlier than 2012-04-05 |  |  |  |
| 79 | 4.1.2.2 | 南区(5层) | 1d? | 2012-04-06 | 2012-04-06 |  |  |  | 15d |  | finish no earlier than 2012-04-06 |  |  |  |
| 80 | 4.1.2.3 | 北区(8层) | 1.5d? | 2012-04-06 | 2012-04-09 |  |  |  | 12.5d | 0d | start no earlier than 2012-04-06 |  |  |  |
| 81 | 4.1.3 | 数值设置(怪物数种类/数量，材料掉落) | 2d | 2012-04-09 | 2012-04-11 | 80 |  |  | 12.5d |  | start no earlier than 2012-04-05 |  |  |  |

| ID | WBS | Task | Duration | Start | Finish | Predecessors | Total slack | Free slack | Constraint | Text1 |
| --- | --- | --- | --- | --- | --- | --- | --- | --- | --- | --- |
| 82 | 4.2 | **村子** | 2d | 2012-04-09 | 2012-04-10 |  | 13d |  |  | 缺美术搁置 |
| 83 | 4.2.1 | 美术(地形块+装饰) | 1d | 2012-04-09 | 2012-04-09 |  | 13d | 0d | start no earlier than 2012-04-09 |  |
| 84 | 4.2.2 | 策划(地图编辑+数值) | 1d | 2012-04-10 | 2012-04-10 | 83 | 13d |  |  |  |
| 85 | 4.3 | **卡尔萨斯(王城)** | 5d? | 2012-04-12 | 2012-04-18 |  | 7d |  |  | 缺美术搁置 |
| 86 | 4.3.1 | 美术(地形块+装饰) | 3d | 2012-04-12 | 2012-04-16 |  | 9d |  | start no earlier than 2012-04-12 |  |
| 87 | 4.3.2 | **地图编辑** | 2.5d? | 2012-04-16 | 2012-04-18 |  | 7.5d |  |  |  |
| 88 | 4.3.2.1 | 第一层 | 0.5d? | 2012-04-16 | 2012-04-16 |  | 9.5d |  | start no earlier than 2012-04-16 |  |
| 89 | 4.3.2.2 | 监狱(10层) | 1d? | 2012-04-16 | 2012-04-16 |  | 7.5d | 0d | start no earlier than 2012-04-16 |  |
| 90 | 4.3.2.3 | 教堂(15层) | 1.5d? | 2012-04-17 | 2012-04-18 | 89 | 7.5d |  |  |  |
| 91 | 4.3.3 | 数值设置(怪物数种类/数量，材料掉落) | 2d | 2012-04-17 | 2012-04-18 |  | 7d |  | start no earlier than 2012-04-17 |  |
| 92 | 4.4 | **翡翠森林** | 5d? | 2012-04-17 | 2012-04-23 |  | 4d |  |  | 缺美术搁置 |
| 93 | 4.4.1 | 美术(地形块+装饰) | 2d? | 2012-04-17 | 2012-04-18 |  | 7d |  | start no earlier than 2012-04-17 |  |
| 94 | 4.4.2 | **地图编辑** | 3.5d? | 2012-04-18 | 2012-04-23 |  | 4.5d |  |  |  |
| 95 | 4.4.2.1 | 第一层 | 0.5d? | 2012-04-18 | 2012-04-18 |  | 7.5d |  | start no earlier than 2012-04-18 |  |
| 96 | 4.4.2.2 | 森林东(10层) | 1d? | 2012-04-19 | 2012-04-19 |  | 4.5d | 0d | start no earlier than 2012-04-19 |  |
| 97 | 4.4.2.3 | 森林西(15层) | 1.5d? | 2012-04-20 | 2012-04-23 | 96 | 4.5d |  |  |  |
| 98 | 4.4.3 | 数值设置(怪物数种类/数量，材料掉落) | 2d | 2012-04-20 | 2012-04-23 |  | 4d |  | start no earlier than 2012-04-20 |  |
| 99 | 4.5 | **泡泡沼泽** | 6d? | 2012-04-19 | 2012-04-26 |  | 1d |  |  | 缺美术搁置 |
| 100 | 4.5.1 | 美术(地形块+装饰) | 2d? | 2012-04-19 | 2012-04-20 |  | 5d |  | start no earlier than 2012-04-19 |  |
| 101 | 4.5.2 | **地图编辑** | 2.5d? | 2012-04-24 | 2012-04-26 |  | 1.5d |  |  |  |
| 102 | 4.5.2.1 | 第一层 | 0.5d? | 2012-04-24 | 2012-04-24 |  | 3.5d |  | start no earlier than 2012-04-24 |  |
| 103 | 4.5.2.2 | 外围(10层) | 1d? | 2012-04-24 | 2012-04-24 |  | 1.5d | 0d | start no earlier than 2012-04-24 |  |
| 104 | 4.5.2.3 | 深处(15层) | 1.5d? | 2012-04-25 | 2012-04-26 | 103 | 1.5d |  |  |  |
| 105 | 4.5.3 | 数值设置(怪物数种类/数量，材料掉落) | 2d | 2012-04-25 | 2012-04-26 |  | 1d |  | start no earlier than 2012-04-25 |  |
| 106 | 4.6 | 测试优化 | 2d | 2012-04-25 | 2012-04-26 |  | 1d |  | start no earlier than 2012-04-25 |  |

| ID | WBS | Task | Duration | Start | Finish | Predecessors | Complete | Remaining | Total slack | Free slack | Constraint | Resources | Work | Actual work |
| --- | --- | --- | --- | --- | --- | --- | --- | --- | --- | --- | --- | --- | --- | --- |
| 107 | 5 | **初始化场景和人物数据** | 3d? | 2012-04-17 | 2012-04-19 |  |  |  | 6d |  |  |  | 72h |  |
| 108 | 5.1 | 人物选择场景 | 3d? | 2012-04-17 | 2012-04-19 |  |  |  | 6d |  | finish no earlier than 2012-04-19 | 余晓莉; Eric | 48h |  |
| 109 | 5.2 | 默认商店场景 | 3d? | 2012-04-17 | 2012-04-19 |  |  |  | 6d |  | finish no earlier than 2012-04-19 | 李钊 | 24h |  |
| 110 | 6 | **各模块优化进度** | 56.1d? | 2012-02-07 A | 2012-04-26 |  | 73% | 15.39d? | 1.9d |  |  |  | 740.4h | 377.37h |
| 111 | 6.1 | **战斗模块优化** | 54d? | 2012-02-07 A | 2012-04-23 |  | 66% | 18.5d? | 2.94d | 0d |  |  | 232h | 142h |
| 112 | 6.1.1 | 调整需求分析 | 1d | 2012-03-30 A | 2012-03-30 A |  | 100% |  |  |  | start no earlier than 2012-03-30 |  |  |  |
| 113 | 6.1.2 | 脚本说明文档 | 1d | 2012-02-07 A | 2012-02-07 A |  | 100% |  |  |  |  | 夏 | 8h | 8h |
| 114 | 6.1.3 | 砍完怪立刻跳回 | 1d? | 2012-02-07 A | 2012-02-07 A |  | 100% |  |  |  |  | 夏 | 8h | 8h |
| 115 | 6.1.4 | 经验升级&显示 | 1d? | 2012-04-06 A | 2012-04-06 A |  | 100% |  |  |  | start no earlier than 2012-04-06 | 琦 | 8h | 8h |
| 116 | 6.1.5 | 人物顺序时间轴 | 1d? | 2012-04-06 A | 2012-04-06 A |  | 100% |  |  |  | start no earlier than 2012-04-06 | 琦 | 8h | 8h |
| 117 | 6.1.6 | 物品与技能点击打开 | 1d? | 2012-04-06 A | 2012-04-06 A |  | 100% |  |  |  | start no earlier than 2012-04-06 | 琦 | 8h | 8h |
| 118 | 6.1.7 | 鼠标划上时出现血条 | 1d? | 2012-04-05 A | 2012-04-05 A |  | 100% |  |  |  | start no earlier than 2012-04-05 | 夏 | 8h | 8h |
| 119 | 6.1.8 | 血条，魔法条UI更换 | 1d? | 2012-04-05 A | 2012-04-05 A |  | 100% |  |  |  | start no earlier than 2012-04-05 | 夏 | 8h | 8h |
| 120 | 6.1.9 | 掉出的物品延长至8秒后自动回收 | 1d? | 2012-04-05 A | 2012-04-05 A |  | 100% |  |  |  | start no earlier than 2012-04-05 | 夏 | 8h | 8h |
| 121 | 6.1.10 | 行动开始时自动选择攻击 | 1d? | 2012-04-05 A | 2012-04-05 A |  | 100% |  |  |  | start no earlier than 2012-04-05 | 夏 | 8h | 8h |
| 122 | 6.1.11 | 职业加成、属性加成、修正动态范围 | 1d | 2012-04-06 A | 2012-04-06 A |  | 100% |  |  |  | start no earlier than 2012-04-06 | 夏 | 8h | 8h |
| 123 | 6.1.12 | 行动者以外的人物需要变暗 | 1d? | 2012-04-09 A | 2012-04-09 A | 122 | 100% |  |  |  |  | 夏 | 8h | 8h |
| 124 | 6.1.13 | 开场对话 | 1d? | 2012-04-09 A | 2012-04-09 A |  | 100% |  |  |  | start no earlier than 2012-04-09 | 夏 | 8h | 8h |
| 125 | 6.1.14 | 音效和背景音乐 | 1d? | 2012-04-10 A | 2012-04-10 A |  | 100% |  |  |  | start no earlier than 2012-04-10 | 夏 | 8h | 8h |
| 126 | 6.1.15 | 鼠标手型 | 1d? | 2012-04-09 A | 2012-04-09 A |  | 100% |  |  |  | start no earlier than 2012-04-09 | 琦 | 8h | 8h |
| 127 | 6.1.16 | 技能震动 | 1d | 2012-04-10 A | 2012-04-10 A |  | 100% |  |  |  | start no earlier than 2012-04-10 | 夏 | 8h | 8h |
| 128 | 6.1.17 | 场景与顺序条人物OVER时互相显示 | 1d | 2012-04-10 A | 2012-04-10 A |  | 100% |  |  |  | start no earlier than 2012-04-10 | 夏; 琦 | 16h | 16h |
| 129 | 6.1.18 | 技能脚本 | 1d? | 2012-04-19 | 2012-04-19 |  |  |  | 4.94d |  | start no earlier than 2012-04-19 | Eric | 8h |  |
| 130 | 6.1.19 | 音效脚本 | 1d? | 2012-04-19 | 2012-04-19 |  |  |  | 4.94d |  | start no earlier than 2012-04-19 | Eric | 8h |  |
| 131 | 6.1.20 | 人物信息要在行动条上显示-UI调整 | 2d | 2012-04-19 | 2012-04-20 |  |  |  | 2.94d | 0d | start no earlier than 2012-04-19 | 琦 | 16h |  |
| 132 | 6.1.21 | 整体调试 | 1d? | 2012-04-20 A | 2012-04-20 |  | 75% | 0.25d? | 2.94d | 0d |  | 桃子 | 8h | 6h |
| 133 | 6.1.22 | 怪物自动攻击范围（从0数值修改） | 1d? | 2012-04-23 | 2012-04-23 | 132 |  |  | 2.94d |  |  | 琦 | 8h |  |
| 134 | 6.1.23 | 战斗结束后没有此次战斗的经验显示 | 1d | 2012-04-23 | 2012-04-23 | 131 |  |  | 2.94d |  | start no earlier than 2012-04-20 | 琦 | 8h |  |
| 135 | 6.1.24 | 战斗状态中-如果没有DEBUFF不显示人物状态 | 1d? | 2012-04-20 | 2012-04-20 |  |  |  | 3.94d |  | start no earlier than 2012-04-20 | 夏 | 8h |  |
| 136 | 6.1.25 | 战斗技能模块-缺少数据（图鉴） | 1d? | 2012-04-20 | 2012-04-20 |  |  |  | 3.94d |  | start no earlier than 2012-04-20 | Eric; 诚 | 16h |  |
| 137 | 6.1.26 | 战斗物品模块-物品无法使用（道具无法使用） | 1d? | 2012-04-20 | 2012-04-20 |  |  |  | 3.94d |  | start no earlier than 2012-04-20 | Eric; 诚 | 16h |  |

Notes:
- 109: 合成必要的内容，墙，地板等DIY的测试
- 111: UI替换 完成
- 129: 技能：列表 / （在原有技能模型基础上） / 人物：十字斩 / 怪物：毒箭 / 4.19 写完 / 4.20 测试
- 130: 4.19 写完 / 4.20 测试
- 132: 策划这里数值的修正后续会花时间

| ID | WBS | Task | Type | Duration | Start | Finish | Predecessors | Complete | Remaining | Total slack | Free slack | Constraint | Resources | Work | Actual work |
| --- | --- | --- | --- | --- | --- | --- | --- | --- | --- | --- | --- | --- | --- | --- | --- |
| 138 | 6.2 | **副本系统优化** |  | 8d? | 2012-04-12 A | 2012-04-23 | 111 | 99% | 0d? | 2.94d | 0d |  |  | 32h | 32h |
| 139 | 6.2.1 | 矿点手型 |  | 1d? | 2012-04-18 A | 2012-04-19 A | 148 | 100% |  |  |  |  | 夏; 琦 | 16h | 16h |
| 140 | 6.2.2 | 增加副本倒计时刷新的表现 |  | 1d? | 2012-04-16 A | 2012-04-16 A |  | 100% |  |  |  | finish no earlier than 2012-04-16 |  |  |  |
| 141 | 6.2.3 | 增加当前副本名字 |  | 1d? | 2012-04-16 A | 2012-04-16 A |  | 100% |  |  |  | finish no earlier than 2012-04-16 |  |  |  |
| 142 | 6.2.4 | 鼠标滑过怪时，手型为一把剑。 |  | 1d? | 2012-04-12 A | 2012-04-12 A |  | 100% |  |  |  |  |  |  |  |
| 143 | 6.2.5 | 点击门，或者矿，再点击空地之前操作消除 |  | 1d? | 2012-04-12 A | 2012-04-12 A |  | 100% |  |  |  |  |  |  |  |
| 144 | 6.2.6 | 鼠标滑过怪时，显示怪等级和名字。不需要血条 |  | 1d? | 2012-04-12 A | 2012-04-12 A |  | 100% |  |  |  |  |  |  |  |
| 145 | 6.2.7 | 无遇怪表现，怪头顶感叹号语泡 |  | 1d? | 2012-04-13 A | 2012-04-13 A |  | 100% |  |  |  | start no earlier than 2012-04-13 |  |  |  |
| 146 | 6.2.8 | 人物走到目标npc处后，再弹出对话框 |  | 1d? | 2012-04-12 A | 2012-04-12 A |  | 100% |  |  |  |  | 琦 | 8h | 8h |
| 147 | 6.2.9 | 矿不要血条，数字放到名称后 |  | 1d? | 2012-04-13 A | 2012-04-13 A |  | 100% |  |  |  | start no earlier than 2012-04-13 |  |  |  |
| 148 | 6.2.10 | 采集消耗行动力 |  | 0.75d? | 2012-04-17 A | 2012-04-18 A |  | 100% |  |  |  | start no earlier than 2012-04-16 | 夏; 章 | 8h | 8h |
| 149 | 6.2.11 | 进入矿洞有误-不显示人物和怪 | milestone | 0d | 2012-04-23 | 2012-04-23 |  |  |  | 2.94d |  | start no earlier than 2012-04-19 | 张琦 |  |  |
| 150 | 6.2.12 | 怪物素材没有更新最新版 | milestone | 0d | 2012-04-23 | 2012-04-23 |  |  |  | 2.94d |  | start no earlier than 2012-04-19 | 陈志荣; 琦 |  |  |
| 151 | 6.2.13 | 副本入口名称-Unknow | milestone | 0d | 2012-04-23 | 2012-04-23 |  |  |  | 2.94d |  | start no earlier than 2012-04-19 | 夏; 琦 |  |  |
| 152 | 6.2.14 | 逃跑成功之后 人物无敌3秒 | milestone | 0d | 2012-04-23 | 2012-04-23 |  |  |  | 2.94d |  | start no earlier than 2012-04-23 | 姜浩; 琦 |  |  |
| 153 | 6.3 | **合成系统优化 - 完成** |  | 1d? | 2012-04-13 A | 2012-04-13 A |  | 100% |  |  |  |  | 庆 | 8h | 8h |
| 154 | 6.3.1 | 收获时，就是进度条读取的时候，需屏蔽点击炼金炉弹出的界面 |  | 1d? | 2012-04-13 A | 2012-04-13 A |  | 100% |  |  |  | start no earlier than 2012-04-13 |  |  |  |
| 155 | 6.3.2 | 列表标签 “药剂”改为“全部” |  | 1d? | 2012-04-13 A | 2012-04-13 A |  | 100% |  |  |  | start no earlier than 2012-04-13 |  |  |  |
| 156 | 6.3.3 | 合成所需材料显示名称 |  | 1d? | 2012-04-13 A | 2012-04-13 A |  | 100% |  |  |  | start no earlier than 2012-04-13 |  |  |  |
| 157 | 6.3.4 | 合成物品名称字体大些位置往下点 |  | 1d? | 2012-04-13 A | 2012-04-13 A |  | 100% |  |  |  | start no earlier than 2012-04-13 |  |  |  |
| 158 | 6.3.5 | 成功率与倒计时时间的不同颜色效果 |  | 1d? | 2012-04-13 A | 2012-04-13 A |  | 100% |  |  |  | start no earlier than 2012-04-13 |  |  |  |
| 159 | 6.4 | **任务系统** |  | 3d? | 2012-04-18 A | 2012-04-20 |  | 89% | 0.33d? | 5d |  |  | 庆 | 60h | 44.8h |
| 160 | 6.4.1 | 任务类型添加（策划数值） |  | 1d | 2012-04-18 A | 2012-04-18 A |  | 100% |  |  |  | start no earlier than 2012-04-18 | 姜浩 | 8h | 8h |
| 161 | 6.4.2 | 前端调整 |  | 1.5d | 2012-04-19 A | 2012-04-20 A |  | 100% |  |  |  | start no earlier than 2012-04-19 | 庆 | 12h | 12h |
| 162 | 6.4.3 | 界面位置调整 |  | 1d? | 2012-04-20 A | 2012-04-20 A |  | 100% |  |  |  | start no earlier than 2012-04-20 | 小庆 | 8h | 8h |
| 163 | 6.4.4 | 测试 |  | 1d? | 2012-04-20 A | 2012-04-20 |  | 50% | 0.5d? | 5d |  | start no earlier than 2012-04-17 | 桃子 | 8h | 4h |

Notes:
- 138: 剩余两个问题，在4.16完成
- 139: l采集过程中，鼠标手型为工具。（跟随鼠标，鼠标右侧显示图标和需求数量）/ 扣除工具数量-2，绿色代表有工具，红色-2代表工具不足。 / 姜浩确认是否消耗物品， / 目前为止，接口返回的消耗内容都为空
- 144: n怪等级超过主角的冒险等级3级以上（含3级）为红色字样/ n怪等级低于主角的冒险等级为绿色字样。/ 怪等级等于主角等级，并且不超过主角等级3级以上为白色字样
- 148: 测试确认后端没有消耗
- 153: 第二版优化已经完成，剩余UI更换 / 4.19 UI替换
- 159: 第一轮联调结束，4.17开始测试 / 23个任务类型，基本保证每个类型有一个任务 / 4.17 缺少数据，还不能开始测试（图鉴模块怪的数据-姜浩）
- 160: 23个任务类型，基本保证每个类型有一个任务
- 161: 4.20 上午完成
- 163: 4.17测试没有开始，流程没有跑通，进去就报错 / 4.23 测试给到反馈给小庆 -- 4.20

| ID | WBS | Task | Duration | Start | Finish | Predecessors | Complete | Remaining | Total slack | Constraint | Resources | Work | Actual work |
| --- | --- | --- | --- | --- | --- | --- | --- | --- | --- | --- | --- | --- | --- |
| 164 | 6.5 | **经营系统** | 4d? | 2012-04-17 A | 2012-04-20 |  | 55% | 1.82d? | 5d |  | 庆 | 72h | 8h |
| 165 | 6.5.1 | 随机走--停下说话,说话时不顶图标--随机走 | 1d? | 2012-04-17 A | 2012-04-17 A |  | 100% |  |  | start no earlier than 2012-04-17 |  |  |  |
| 166 | 6.5.2 | 点完以后就消失，下次有新的状态更新的时候再出现 | 1d? | 2012-04-17 A | 2012-04-17 A |  | 100% |  |  | start no earlier than 2012-04-17 |  |  |  |
| 167 | 6.5.3 | UI更换 | 1d? | 2012-04-17 A | 2012-04-17 A |  | 100% |  |  | start no earlier than 2012-04-17 |  |  |  |
| 168 | 6.5.4 | 订单需求-不能需求图鉴以外的内容 | 0.5d? | 2012-04-20 | 2012-04-20 |  |  |  | 5.5d | start no earlier than 2012-04-20 | 李钊; Eric | 8h |  |
| 169 | 6.5.5 | 顾客说话时暂停移动 | 2d | 2012-04-19 | 2012-04-20 |  |  |  | 5d | start no earlier than 2012-04-19 | 琦; 小庆 | 32h |  |
| 170 | 6.6 | **佣兵系统优化** | 4.1d? | 2012-04-20 A | 2012-04-26 | 222 | 24% | 3.12d? | 1.9d |  | 庆 | 82.4h | 3.63h |
| 171 | 6.6.1 | 阵型设置，直接摆放就保存，去除阵型确定按钮 | 0.1d | 2012-04-20 A | 2012-04-20 A |  | 100% |  |  | start no earlier than 2012-04-13 |  |  |  |
| 172 | 6.6.2 | 人物要动 | 0.1d | 2012-04-20 A | 2012-04-20 A | 171 | 100% |  |  | start no earlier than 2012-04-13 |  |  |  |
| 173 | 6.6.3 | 回家后，所有血补满 村里有牧师花费金币加血 | 0.1d | 2012-04-26 | 2012-04-26 | 172 |  |  | 1.9d | start no earlier than 2012-04-26 | Eric | 0.8h |  |
| 174 | 6.6.4 | 佣兵系统UI替换 | 0.1d | 2012-04-20 A | 2012-04-20 A | 173 | 100% |  |  | start no earlier than 2012-04-13 |  |  |  |
| 175 | 6.6.5 | 佣兵数量的数据错误 | 0.1d | 2012-04-20 A | 2012-04-20 A | 174 | 100% |  |  | start no earlier than 2012-04-13 | 庆 | 0.8h | 0.8h |
| 176 | 6.6.6 | 武器属性加减没显示，按加的最高的优先排前 | 0.1d | 2012-04-20 A | 2012-04-20 A | 175 | 100% |  |  | start no earlier than 2012-04-13 |  |  |  |
| 177 | 6.6.7 | 耐久和永久提示 | 0.1d | 2012-04-20 A | 2012-04-20 A | 176 | 100% |  |  | start no earlier than 2012-04-13 |  |  |  |
| 178 | 6.6.8 | 这个UI规定是几排几个的？ | 0.1d | 2012-04-20 A | 2012-04-20 A | 177 | 100% |  |  | start no earlier than 2012-04-13 |  |  |  |
| 179 | 6.6.9 | 等级不足，直接盖字上面，需要X级 | 0.1d | 2012-04-20 A | 2012-04-20 A | 178 | 100% |  |  | start no earlier than 2012-04-13 |  |  |  |
| 180 | 6.6.10 | 已装备栏,划上时显示属性TIPS | 0.1d | 2012-04-20 A | 2012-04-20 A | 179 | 100% |  |  | start no earlier than 2012-04-13 |  |  |  |
| 181 | 6.6.11 | 扩展需要跳出提示面板 名字改成增加佣兵数 | 0.1d | 2012-04-23 A | 2012-04-23 A | 180 | 100% |  |  | start no earlier than 2012-04-13 |  |  |  |
| 182 | 6.6.12 | 在副本时不可设置出战和退战 | 0.1d | 2012-04-23 A | 2012-04-23 A | 181 | 100% |  |  | start no earlier than 2012-04-13 |  |  |  |
| 183 | 6.6.13 | 卸装错字 | 0.1d | 2012-04-23 A | 2012-04-23 A | 182 | 100% |  |  | start no earlier than 2012-04-13 |  |  |  |
| 184 | 6.6.14 | 显示技能名称 拥有的技能TIPS显示技能描述 | 0.1d | 2012-04-23 A | 2012-04-23 A | 183 | 100% |  |  | start no earlier than 2012-04-13 |  |  |  |
| 185 | 6.6.15 | 速度的值不对 | 0.1d | 2012-04-23 A | 2012-04-23 A | 184 | 100% |  |  | start no earlier than 2012-04-13 |  |  |  |
| 186 | 6.6.16 | 人物动作节奏慢点，现在太快 | 0.1d | 2012-04-23 A | 2012-04-23 A | 185 | 100% |  |  | start no earlier than 2012-04-13 |  |  |  |
| 187 | 6.6.17 | 宝石解锁需要宝石图片和数量和按钮 | 0.1d | 2012-04-23 A | 2012-04-23 A | 186 | 100% |  |  | start no earlier than 2012-04-13 |  |  |  |
| 188 | 6.6.18 | 更换装备报错 | 1d? | 2012-04-20 | 2012-04-20 |  |  |  | 5d | start no earlier than 2012-04-20 | 庆 | 8h |  |
| 189 | 6.6.19 | 测试 | 1d? | 2012-04-20 | 2012-04-20 |  |  |  | 5d | start no earlier than 2012-04-20 | 桃子 | 8h |  |
| 190 | 6.6.20 | 战斗技能模块-缺少数据（图鉴） | 1d? | 2012-04-20 | 2012-04-20 |  |  |  | 5d | start no earlier than 2012-04-20 | Eric; 诚 | 16h |  |
| 191 | 6.6.21 | 更换技能-需要图鉴 | 1d? | 2012-04-20 | 2012-04-20 |  |  |  | 5d | start no earlier than 2012-04-20 | 诚 | 8h |  |
| 192 | 6.6.22 | 属性相克模块-图鉴 | 1d? | 2012-04-20 | 2012-04-20 |  |  |  | 5d | start no earlier than 2012-04-20 | 诚 | 8h |  |

Notes:
- 164: 4.17 完成（包括UI更换）
- 170: 4.14加班赶一天进度，4.20完成 / 分批次提交测试 / 4.17-小庆刚开始修改 / 4.19 前端第一轮修改已完成， / 提交测试

| ID | WBS | Task | Duration | Start | Finish | Predecessors | Complete | Remaining | Total slack | Constraint | Resources | Work | Actual work |
| --- | --- | --- | --- | --- | --- | --- | --- | --- | --- | --- | --- | --- | --- |
| 193 | 6.7 | **世界地图优化** | 8.5d? | 2012-04-11 A | 2012-04-23 |  | 84% | 1.33d? | 4.5d |  | 诚 | 84h | 36.94h |
| 194 | 6.7.1 | 行走路线改为鼠标滑过场景时出现 | 1d? | 2012-04-11 A | 2012-04-11 A |  | 100% |  |  | start no earlier than 2012-04-11 |  |  |  |
| 195 | 6.7.2 | 行走路线改为鼠标滑过场景时出现 | 1d? | 2012-04-11 A | 2012-04-11 A |  | 100% |  |  | start no earlier than 2012-04-11 |  |  |  |
| 196 | 6.7.3 | 鼠标滑过场景时，无tips显示 | 1d? | 2012-04-11 A | 2012-04-11 A |  | 100% |  |  | start no earlier than 2012-04-11 |  |  |  |
| 197 | 6.7.4 | 鼠标滑过场景图标时，图标做被选中的高亮 | 1d? | 2012-04-11 A | 2012-04-11 A |  | 100% |  |  | start no earlier than 2012-04-11 |  |  |  |
| 198 | 6.7.5 | 关闭按钮UI更换 | 1d? | 2012-04-11 A | 2012-04-11 A |  | 100% |  |  | start no earlier than 2012-04-11 |  |  |  |
| 199 | 6.7.6 | 新解锁场景 MENU图标动画 | 1d? | 2012-04-16 A | 2012-04-16 A |  | 100% |  |  | start no earlier than 2012-04-16 |  |  |  |
| 200 | 6.7.7 | 任务图标 | 0.5d? | 2012-04-17 A | 2012-04-17 A |  | 100% |  |  | start no earlier than 2012-04-17 |  |  |  |
| 201 | 6.7.8 | 地图路线-美观问题 | 0.5d? | 2012-04-23 A | 2012-04-23 |  | 50% | 0.25d? | 4.5d | start no earlier than 2012-04-17 | 大强; 姜浩 | 8h | 4h |
| 202 | 6.7.9 | 切地图卡死 | 1d? | 2012-04-18 | 2012-04-18 |  |  |  | 7d | start no earlier than 2012-04-18 | 诚 | 8h |  |
| 203 | 6.8 | **剧情系统优化** | 4.25d? | 2012-04-18 A | 2012-04-24 | 138 | 75% | 1.06d? | 3d |  | 夏 | 42h | 6h |
| 204 | 6.8.1 | 人物做倒地动作后，不再爬起来 | 1d? | 2012-04-18 A | 2012-04-19 A |  | 100% |  |  |  |  |  |  |
| 205 | 6.8.2 | 表情语泡未对齐 | 1d? | 2012-04-18 A | 2012-04-19 A |  | 100% |  |  |  |  |  |  |
| 206 | 6.8.3 | 文字切换时，文字播放时间设置了5000毫秒，但还是很快的就跳过了 | 1d? | 2012-04-18 A | 2012-04-19 A |  | 100% |  |  |  |  |  |  |
| 207 | 6.8.4 | 初始化剧情 | 1d? | 2012-04-24 | 2012-04-24 | 160 |  |  | 3d | start no earlier than 2012-04-17 | 姜浩 | 8h |  |
| 208 | 6.9 | **商城系统** | 5d? | 2012-04-17 A | 2012-04-23 |  | 79% | 1.04d? | 4d |  |  | 40h | 32h |
| 209 | 6.9.1 | 前端 | 2d | 2012-04-17 A | 2012-04-18 A |  | 100% |  |  | finish no earlier than 2012-04-18 | 夏 | 16h | 16h |
| 210 | 6.9.2 | 后端 | 1d? | 2012-04-17 A | 2012-04-17 A |  | 100% |  |  | start no earlier than 2012-04-17 | 李钊 | 8h | 8h |
| 211 | 6.9.3 | 策划 | 1d? | 2012-04-17 A | 2012-04-17 A |  | 100% |  |  | start no earlier than 2012-04-17 | Eric | 8h | 8h |
| 212 | 6.9.4 | 素材导入 | 1d? | 2012-04-18 A | 2012-04-18 |  | 75% | 0.25d? | 7d | start no earlier than 2012-04-18 |  |  |  |
| 213 | 6.9.5 | 商城购买结果提示（成功飘字，失败弹框） | 1d? | 2012-04-23 | 2012-04-23 |  |  |  | 4d | start no earlier than 2012-04-23 | 夏 | 8h |  |
| 214 | 6.10 | **道具模块** | 4d? | 2012-04-17 A | 2012-04-20 |  | 71% | 1.14d? | 5d |  |  | 32h | 24h |
| 215 | 6.10.1 | 策划 | 0.5d? | 2012-04-17 A | 2012-04-17 A |  | 100% |  |  | start no earlier than 2012-04-17 | 姜浩; Eric | 8h | 8h |
| 216 | 6.10.2 | 后端 | 1d? | 2012-04-17 A | 2012-04-17 A |  | 100% |  |  | start no earlier than 2012-04-17 | 李钊 | 8h | 8h |
| 217 | 6.10.3 | 前端 | 1d? | 2012-04-20 A | 2012-04-20 A |  | 100% |  |  | start no earlier than 2012-04-20 | 诚 | 8h | 8h |
| 218 | 6.10.4 | 道具使用模块 | 1d? | 2012-04-20 | 2012-04-20 |  |  |  | 5d | start no earlier than 2012-04-20 | 诚 | 8h |  |

Notes:
- 193: 整体4.17完成
- 200: 4.17完成
- 201: 地图沿线美观问题，需要 姜浩和大强确认
- 202: 4.19 晚上修正
- 203: 姜浩确认更多数值（各剧情的触发点列表）
- 207: 4.19 晚上调整完成 -姜浩 / 后续需要： / 1，配合新手引导做新设计 / 2，新场景完成之后，坐标重新设计 ----- 4.19
- 208: 物品购买,商品列表，商品排序 / 剩余素材导入（4.19）
- 209: 开发中，4.18 完成
- 210: 已完成
- 212: 美术缺：卷轴，工作台，装饰物 / 其他均已导入 -- 4.19
- 214: 物品使用（道具功能及具体数值）
- 215: 给了第一批道具使用数据 / （细化部分只有：回血，回蓝，回行动力，加经验）
- 217: 4.20 跟仓库模块一起完成

| ID | WBS | Task | Duration | Start | Finish | Complete | Remaining | Total slack | Free slack | Constraint | Resources | Work | Actual work |
| --- | --- | --- | --- | --- | --- | --- | --- | --- | --- | --- | --- | --- | --- |
| 219 | 6.11 | **图鉴模块** | 1d? | 2012-04-23 | 2012-04-23 |  |  | 4d |  |  |  | 8h |  |
| 220 | 6.11.1 | 图鉴的触发条件 | 1d? | 2012-04-23 | 2012-04-23 |  |  | 4d |  | start no earlier than 2012-04-23 | 姜浩 | 8h |  |
| 221 | 6.12 | **UI更换** | 2d? | 2012-04-19 A | 2012-04-20 | 83% | 0.33d? | 5d |  |  |  | 48h | 40h |
| 222 | 6.12.1 | 合成 | 1d? | 2012-04-19 A | 2012-04-19 A | 100% |  |  |  | start no earlier than 2012-04-19 | 庆 | 8h | 8h |
| 223 | 6.12.2 | 图鉴 | 1d | 2012-04-19 A | 2012-04-19 A | 100% |  |  |  | start no earlier than 2012-04-19 | 诚 | 8h | 8h |
| 224 | 6.12.3 | 仓库 | 1d? | 2012-04-20 A | 2012-04-20 A | 100% |  |  |  | start no earlier than 2012-04-20 | 诚 | 8h | 8h |
| 225 | 6.12.4 | 佣兵 | 1d? | 2012-04-19 A | 2012-04-19 A | 100% |  |  |  | start no earlier than 2012-04-17 | 庆 | 8h | 8h |
| 226 | 6.12.5 | 经营 | 1d? | 2012-04-19 A | 2012-04-19 A | 100% |  |  |  | start no earlier than 2012-04-19 | 庆 | 8h | 8h |
| 227 | 6.12.6 | 主场景，村外，副本（美术已完成） | 1d? | 2012-04-20 | 2012-04-20 |  |  | 5d |  | start no earlier than 2012-04-20 | 张琦 | 8h |  |
| 228 | 7 | **上线前需完成模块** | 8d? | 2012-04-13 | 2012-04-24 |  |  | 1d | 0d |  |  | 224h |  |
| 229 | 7.1 | **礼物系统** | 6d? | 2012-04-17 | 2012-04-24 |  |  | 1d |  |  | Eric | 72h |  |
| 230 | 7.1.1 | 数值设定 | 1d? | 2012-04-24 | 2012-04-24 |  |  | 1d |  | start no earlier than 2012-04-24 | Eric | 8h |  |
| 231 | 7.1.2 | 移植 | 2d | 2012-04-17 | 2012-04-18 |  |  | 5d |  | start no earlier than 2012-04-17 | 张诚 | 16h |  |
| 232 | 7.1.3 | 导入礼物的内容 | 2d | 2012-04-18 | 2012-04-19 |  |  | 4d |  | start no earlier than 2012-04-18 |  |  |  |
| 233 | 7.1.4 | 测试 | 1d? | 2012-04-18 | 2012-04-18 |  |  | 5d |  | start no earlier than 2012-04-18 |  |  |  |
| 234 | 7.2 | **每日登陆奖励** | 5d? | 2012-04-13 | 2012-04-19 |  |  | 4d |  |  | Eric; 柱子 | 104h |  |
| 235 | 7.2.1 | 审评 | 0.5d? | 2012-04-13 | 2012-04-13 |  |  | 8.5d |  | start no earlier than 2012-04-13 | Eric; 柱子 | 8h |  |
| 236 | 7.2.2 | 移植 | 2d | 2012-04-18 | 2012-04-19 |  |  | 4d |  | start no earlier than 2012-04-18 | 张诚 | 16h |  |
| 237 | 7.2.3 | 导入礼物的内容 | 2d | 2012-04-18 | 2012-04-19 |  |  | 4d |  | start no earlier than 2012-04-18 |  |  |  |
| 238 | 7.2.4 | 测试 | 1d? | 2012-04-18 | 2012-04-18 |  |  | 5d |  | start no earlier than 2012-04-18 |  |  |  |
| 239 | 7.3 | **消息和日志** | 2d? | 2012-04-18 | 2012-04-19 |  |  | 4d |  |  | Eric; 姜浩 | 48h |  |
| 240 | 7.3.1 | 数值设定 | 1d? | 2012-04-18 | 2012-04-18 |  |  | 5d |  | start no earlier than 2012-04-18 | Eric; 姜浩 | 16h |  |
| 241 | 7.3.2 | 移植 | 2d | 2012-04-18 | 2012-04-19 |  |  | 4d |  | start no earlier than 2012-04-18 |  |  |  |
| 242 | 7.3.3 | 导入礼物的内容 | 2d | 2012-04-18 | 2012-04-19 |  |  | 4d |  | start no earlier than 2012-04-18 |  |  |  |
| 243 | 7.3.4 | 测试 | 1d? | 2012-04-18 | 2012-04-18 |  |  | 5d |  | start no earlier than 2012-04-18 |  |  |  |

Notes:
- 222: UI还没拿到（今天确认UI-姜浩，余晓丽） / UI已经确认，替换排在 佣兵修改之后-小庆 / 4.19 完成
- 223: UI已经拿到，4.17-19完成
- 224: UI还没拿到（今天确认UI-姜浩，余晓丽） / 4.20 日完成
- 228: 交互系统 / 礼物系统 / 消息和日志 / 新手引导 / 每日登陆 / 数据监控
- 231: 具体包括： 1个场景，一个人物，1个UI初稿
- 236: 具体包括： 1个场景，一个人物，1个UI初稿
- 241: 具体包括： 1个场景，一个人物，1个UI初稿

| ID | WBS | Task | Duration | Start | Finish | Predecessors | Total slack | Free slack | Constraint | Resources | Work |
| --- | --- | --- | --- | --- | --- | --- | --- | --- | --- | --- | --- |
| 244 | 7.4 | **交互系统** | 3d | 2012-04-18 | 2012-04-20 |  | 3d |  |  |  |  |
| 245 | 7.4.1 | 策划初稿审核 | 2d | 2012-04-18 | 2012-04-19 |  | 4d |  | start no earlier than 2012-04-18 |  |  |
| 246 | 7.4.2 | 开发 | 3d | 2012-04-18 | 2012-04-20 |  | 3d |  | start no earlier than 2012-04-18 |  |  |
| 247 | 7.4.3 | 测试 | 2d | 2012-04-18 | 2012-04-19 |  | 4d |  | start no earlier than 2012-04-18 |  |  |
| 248 | 7.5 | **新手引导** | 2d? | 2012-04-18 | 2012-04-19 |  | 4d |  |  |  |  |
| 249 | 7.5.1 | 移植 | 2d | 2012-04-18 | 2012-04-19 |  | 4d |  | start no earlier than 2012-04-18 |  |  |
| 250 | 7.5.2 | 导入礼物的内容 | 2d | 2012-04-18 | 2012-04-19 |  | 4d |  | start no earlier than 2012-04-18 |  |  |
| 251 | 7.5.3 | 测试 | 1d? | 2012-04-18 | 2012-04-18 |  | 5d |  | start no earlier than 2012-04-18 |  |  |
| 252 | 8 | **后台数据监控** | 2d? | 2012-04-25 | 2012-04-26 | 228 | 1d |  |  |  | 32h |
| 253 | 8.1 | 策划 | 2d | 2012-04-25 | 2012-04-26 |  | 1d |  |  | Eric; 姜浩 | 32h |
| 254 | 8.2 | 开发 | 2d | 2012-04-25 | 2012-04-26 |  | 1d |  |  |  |  |
| 255 | 8.3 | 测试 | 1d? | 2012-04-25 | 2012-04-25 |  | 2d |  |  |  |  |
| 256 | 9 | **测试** | 12d? | 2010-06-25 | 2010-07-12 |  | 465d | 0d |  |  |  |
| 257 | 9.1 | 测试计划 | 7d | 2010-06-25 | 2010-07-05 |  | 470d |  |  |  |  |
| 258 | 9.2 | 功能测试 | 2d | 2010-06-25 | 2010-06-28 |  | 475d |  |  |  |  |
| 259 | 9.3 | 性能测试 | 6d | 2010-06-25 | 2010-07-02 |  | 471d |  |  |  |  |
| 260 | 9.4 | 易用性测试 | 1d? | 2010-06-25 | 2010-06-25 |  | 476d |  |  |  |  |
| 261 | 9.5 | 压力测试 | 1d? | 2010-06-25 | 2010-06-25 |  | 476d |  |  |  |  |
| 262 | 10 | **上线流程** | 416d? | 2010-07-13 | 2012-02-14 | 256 | 52d |  |  |  | 120h |
| 263 | 10.1 | **接入准备** | 7d | 2012-02-06 | 2012-02-14 |  | 52d |  |  |  | 120h |
| 264 | 10.1.1 | 商务合作会谈 | 2d | 2012-02-06 | 2012-02-07 |  | 57d |  | start no earlier than 2012-02-06 | 姜浩 | 16h |
| 265 | 10.1.2 | API接入 | 3d | 2012-02-10 | 2012-02-14 |  | 52d |  | start no earlier than 2012-02-10 | 立军; 张琦; 姜浩 | 72h |
| 266 | 10.1.3 | 合同签订 | 2d | 2012-02-09 | 2012-02-10 |  | 54d |  | start no earlier than 2012-02-09 | 大强; 姜浩 | 32h |
| 267 | 10.2 | 展会的参与，市场推广 | 1d? | 2010-07-13 | 2010-07-13 |  | 467d |  |  |  |  |

Notes:
- 246: 2月12日，13日讨论2稿确定后，可以开始开发
- 249: 具体包括： 1个场景，一个人物，1个UI初稿
- 253: 具体包括： 1个场景，一个人物，1个UI初稿
- 256: ALPHA / BETA / 删档内测 / 正式测试上线
- 258: 具体包括： 1个场景，一个人物，1个UI初稿
- 262: ？？？脚本可复用？
- 265: 2月12日，13日讨论2稿确定后，可以开始开发
