# 魔法项目进度表20120302V

Schedule from MS Project, 2010-06-25 to 2012-06-29, A marks actual dates.

## Calendars

- 标准: Mon-Fri 08:00-12:00, 13:00-17:00; Sat-Sun off. Exceptions (off unless hours are given): 2012-03-31 to 2012-04-01 08:00-12:00, 13:00-17:00 (清明节调整上班), 2012-04-02 to 2012-04-04 (清明节调整放假), 2012-04-28 08:00-12:00, 13:00-17:00.

## Resources

| Resource |
| --- |
| 柱子 |
| 李钊 |
| 张琦 |
| 大强 |
| 立军 |
| 王晔 |
| Eric |
| 姜浩 |
| 章昕 |
| 夏俊杰 |
| 赵子敬 |
| 张诚 |
| 小庆 |
| 陈志荣 |
| 桃子 |
| 八代 |
| 余晓丽 |
| 卢靖 |
| 蒋德仁 |
| 邹慧 |
| 老大 |
| 张黎明 |
| 外包 |
| 宋文卿 |
| 梁新强 |

## Schedule

| ID | WBS | Task | Type | Duration | Start | Finish | Predecessors | Complete | Remaining | Total slack | Free slack | Constraint | Resources | Work | Actual work |
| --- | --- | --- | --- | --- | --- | --- | --- | --- | --- | --- | --- | --- | --- | --- | --- |
| 1 | 1 | **数值和调试内容** |  | 51d? | 2012-03-12 A | 2012-05-21 |  | 61% | 20.04d? | 29d |  |  | Eric | 1144h | 140h |
| 2 | 1.1 | **策划前期准备** |  | 5d | 2012-04-24 A | 2012-04-28 A |  | 100% |  |  |  |  |  | 40h | 40h |
| 3 | 1.1.1 | 数值规则 |  | 5d | 2012-04-24 A | 2012-04-28 A |  | 100% |  |  |  | start no earlier than 2012-04-24 | Eric | 40h | 40h |
| 4 | 1.2 | **数值调试** |  | 51d? | 2012-03-12 A | 2012-05-21 |  | 52% | 24.39d? | 29d |  |  | Eric | 696h | 100h |
| 5 | 1.2.1 | 主场景模块 |  | 3d | 2012-03-12 A | 2012-03-14 A |  | 100% |  |  |  |  | Eric | 24h | 24h |
| 6 | 1.2.2 | 订单模块-具体数值 |  | 2d | 2012-05-04 A | 2012-05-07 A |  | 100% |  |  |  | finish no earlier than 2012-05-07 | Eric | 16h | 16h |
| 7 | 1.2.3 | **战斗模块 - 具体数据** |  | 3d? | 2012-05-10 A | 2012-05-14 | 6 | 99% | 0d? | 0d |  |  | Eric | 48h | 28h |
| 8 | 1.2.3.1 | 5级数据 |  | 1d? | 2012-05-10 A | 2012-05-10 A |  | 100% |  |  |  | start no earlier than 2012-05-10 | Eric | 8h | 8h |
| 9 | 1.2.3.2 | 10级数据 |  | 2d? | 2012-05-11 A | 2012-05-14 A | 8 | 100% |  |  |  | start no earlier than 2012-05-11 | Eric | 16h | 16h |
| 10 | 1.2.4 | 合成模块 - 具体数据 |  | 3d | 2012-05-07 A | 2012-05-09 A |  | 100% |  |  |  | start no earlier than 2012-04-24 | 姜浩 | 24h | 24h |
| 11 | 1.2.5 | 任务，剧情模块 |  | 1d? | 2012-05-21 | 2012-05-21 | 12 |  |  | 29d |  | start no earlier than 2012-05-08 | 姜浩 | 8h |  |
| 12 | 1.2.6 | 人物对白 |  | 10d? | 2012-05-07 | 2012-05-18 |  |  |  | 29d | 0d | finish no earlier than 2012-05-18 | 姜浩; 老大 | 160h |  |
| 13 | 1.2.7 | 基础物品 - 具体数据 |  | 1d? | 2012-05-03 A | 2012-05-03 A |  | 100% |  |  |  | start no earlier than 2012-05-03 | 姜浩 | 8h | 8h |
| 14 | 2 | **第二轮确认调整** |  | 26d? | 2012-04-13 A | 2012-05-17 |  | 81% | 4.96d? | 31d |  |  |  | 754.4h | 574.4h |
| 15 | 2.1 | **战斗模块优化** |  | 3d? | 2012-04-20 A | 2012-04-24 |  | 39% | 1.82d? | 49d |  |  |  | 72h | 22h |
| 16 | 2.1.1 | 技能脚本 |  | 1d | 2012-04-24 | 2012-04-24 |  |  |  | 28d |  | start no earlier than 2012-04-24 | 夏俊杰 | 8h |  |
| 17 | 2.1.2 | 音效脚本 |  | 1d? | 2012-04-23 | 2012-04-23 |  |  |  | 29d |  | start no earlier than 2012-04-23 | Eric | 8h |  |
| 18 | 2.1.3 | 整体调试 |  | 1d? | 2012-04-20 A | 2012-04-20 |  | 75% | 0.25d? | 30d |  |  | 桃子 | 8h | 6h |
| 19 | 2.1.4 | 人物信息要在行动条上显示-UI调整 |  | 1d | 2012-04-24 | 2012-04-24 |  |  |  | 28d |  | start no earlier than 2012-04-24 | 张琦; Eric | 16h |  |
| 20 | 2.1.5 | 怪物自动攻击范围（从0数值修改） |  | 1d? | 2012-04-23 A | 2012-04-23 A |  | 100% |  |  |  | start no earlier than 2012-04-23 | 张琦 | 8h | 8h |
| 21 | 2.1.6 | 战斗结束后没有此次战斗的经验显示 |  | 1d | 2012-04-23 A | 2012-04-24 A | 19 | 100% |  |  |  | start no earlier than 2012-04-20 | 张琦 | 8h | 8h |
| 22 | 2.1.7 | 战斗状态中-如果没有DEBUFF不显示人物状态 |  | 1d | 2012-04-24 | 2012-04-24 |  |  |  | 28d |  | start no earlier than 2012-04-24 | 夏俊杰; Eric | 16h |  |
| 23 | 2.2 | **副本系统优化** |  | 3.5d? | 2012-04-24 A | 2012-04-27 A |  | 100% |  |  |  |  |  | 32h | 32h |
| 24 | 2.2.1 | 进入矿洞有误-不显示人物和怪 |  | 1d | 2012-04-24 A | 2012-04-25 A |  | 100% |  |  |  | start no earlier than 2012-04-23 | 张琦 | 8h | 8h |
| 25 | 2.2.2 | 怪物素材没有更新最新版 |  | 1d | 2012-04-24 A | 2012-04-25 A |  | 100% |  |  |  | start no earlier than 2012-04-23 | 陈志荣; 李钊 | 16h | 16h |
| 26 | 2.2.3 | 副本入口名称-Unknow | milestone | 0d | 2012-04-24 A | 2012-04-24 A |  | 100% |  |  |  | start no earlier than 2012-04-19 | 张琦; 夏俊杰 |  |  |
| 27 | 2.2.4 | 逃跑成功之后 人物无敌3秒 | milestone | 0d | 2012-04-24 A | 2012-04-24 A |  | 100% |  |  |  | start no earlier than 2012-04-23 | 夏俊杰 |  |  |
| 28 | 2.2.5 | 地图编辑器优化 |  | 1d? | 2012-04-27 A | 2012-04-27 A |  | 100% |  |  |  | start no earlier than 2012-04-27 | 张琦 | 8h | 8h |
| 29 | 2.3 | 合成系统优化 - 完成 |  | 1d? | 2012-04-13 A | 2012-04-13 A |  | 100% |  |  |  |  | 小庆 | 8h | 8h |

Notes:
- 1: ？？？脚本可复用？
- 6: 5.7 更新至数据后台
- 7: 5.9出到10级前的战斗数据
- 10: 还需微调
- 11: 世界观完成之后
- 13: 已完成 / 后续如有新物品的话，再添加 - 5.3
- 15: UI替换 完成
- 16: 技能：列表 / （在原有技能模型基础上） / 人物：十字斩 / 怪物：毒箭 / 4.19 写完 / 4.20 测试 / 4.23完成 -- 4.23
- 17: 4.19 写完 / 4.20 测试
- 18: 策划这里数值的修正后续会花时间
- 19: 找Eric 先确认样板需求 / 等UI给到 / UI已给到 -- 4.23
- 20: 4.23 完成
- 22: Eric / Eric 确认细节中 -- by 4.24
- 23: 剩余两个问题，在4.16完成
- 25: 不确定有没有收到新版素材
- 26: 4.23完成 -- 4.23 / 前端已调整，添加数据后就好了
- 29: 第二版优化已经完成，剩余UI更换 / 4.19 UI替换

| ID | WBS | Task | Duration | Start | Finish | Predecessors | Complete | Remaining | Total slack | Constraint | Resources | Work | Actual work |
| --- | --- | --- | --- | --- | --- | --- | --- | --- | --- | --- | --- | --- | --- |
| 30 | 2.4 | **任务系统** | 2d? | 2012-04-20 A | 2012-04-23 A |  | 100% |  |  |  | 小庆 | 32h | 32h |
| 31 | 2.4.1 | 任务触发条件 | 1d? | 2012-04-23 A | 2012-04-23 A |  | 100% |  |  | start no earlier than 2012-04-23 | 姜浩 | 8h | 8h |
| 32 | 2.4.2 | 测试 | 1d? | 2012-04-20 A | 2012-04-20 A |  | 100% |  |  | start no earlier than 2012-04-17 | 桃子 | 8h | 8h |
| 33 | 2.5 | **经营系统** | 4d? | 2012-04-19 A | 2012-04-24 A |  | 100% |  |  |  | 小庆 | 81.6h | 81.6h |
| 34 | 2.5.1 | 订单需求-不能需求图鉴以外的内容 | 1d | 2012-04-23 A | 2012-04-23 A |  | 100% |  |  | start no earlier than 2012-04-23 | 李钊; Eric | 16h | 16h |
| 35 | 2.5.2 | 顾客说话时暂停移动 | 2d | 2012-04-19 A | 2012-04-20 A |  | 100% |  |  | start no earlier than 2012-04-19 | 张琦; 小庆 | 16h | 16h |
| 36 | 2.5.3 | 新订单面板，不显示 拒绝按钮 | 1d? | 2012-04-23 A | 2012-04-23 A |  | 100% |  |  | start no earlier than 2012-04-23 | 小庆 | 8h | 8h |
| 37 | 2.5.4 | 小店升级模块 | 1d | 2012-04-24 A | 2012-04-24 A |  | 100% |  |  | start no earlier than 2012-04-24 | 姜浩; Eric | 16h | 16h |
| 38 | 2.6 | **佣兵系统优化** | 3d? | 2012-04-20 A | 2012-04-24 | 63 | 99% | 0d? | 0d |  | 小庆 | 88.8h | 64.8h |
| 39 | 2.6.1 | 更换装备报错 | 1d? | 2012-04-20 A | 2012-04-20 A |  | 100% |  |  | start no earlier than 2012-04-20 | 小庆 | 8h | 8h |
| 40 | 2.6.2 | 战斗技能模块-缺少数据-图鉴触发条件 | 1d? | 2012-04-20 A | 2012-04-20 A |  | 100% |  |  | start no earlier than 2012-04-20 | Eric; 张诚 | 16h | 16h |
| 41 | 2.6.3 | 更换技能-图鉴 | 1d? | 2012-04-20 A | 2012-04-20 A |  | 100% |  |  | start no earlier than 2012-04-20 | 张诚 | 8h | 8h |
| 42 | 2.6.4 | 属性相克模块-图鉴 | 1d? | 2012-04-20 A | 2012-04-20 A |  | 100% |  |  | start no earlier than 2012-04-20 | 张诚 | 8h | 8h |
| 43 | 2.6.5 | 解雇佣兵 没有确认面板 | 0.5d? | 2012-04-23 A | 2012-04-23 A |  | 100% |  |  | start no earlier than 2012-04-23 | 小庆; Eric | 8h | 8h |
| 44 | 2.6.6 | 回家后，所有血补满 村里有牧师花费金币加血 | 0.05d | 2012-04-24 A | 2012-04-24 A |  | 100% |  |  | start no earlier than 2012-04-24 | Eric; 张琦 | 0.8h | 0.8h |
| 45 | 2.6.7 | 酒馆升级 | 1d? | 2012-04-24 A | 2012-04-24 A |  | 100% |  |  | start no earlier than 2012-04-24 | Eric | 8h | 8h |
| 46 | 2.6.8 | 测试 | 1d? | 2012-04-20 A | 2012-04-20 A |  | 100% |  |  | start no earlier than 2012-04-20 | 桃子 | 8h | 8h |
| 47 | 2.7 | **世界地图优化** | 3.5d? | 2012-04-18 A | 2012-04-23 A |  | 100% |  |  |  |  | 16h | 16h |
| 48 | 2.7.1 | 地图路线-美观问题 | 0.5d? | 2012-04-23 A | 2012-04-23 A |  | 100% |  |  | start no earlier than 2012-04-17 | 大强; 姜浩 | 8h | 8h |
| 49 | 2.7.2 | 切地图卡死-没有场景数据 | 1d? | 2012-04-18 A | 2012-04-18 A |  | 100% |  |  | start no earlier than 2012-04-18 | 姜浩 | 8h | 8h |
| 50 | 2.8 | **剧情系统优化** | 6d? | 2012-04-17 A | 2012-04-24 |  | 33% | 4d? | 49d |  | 夏俊杰 | 72h | 24h |
| 51 | 2.8.1 | 剧情场景优化 | 1d? | 2012-04-23 | 2012-04-23 |  |  |  | 29d | start no earlier than 2012-04-23 | 夏俊杰 | 8h |  |
| 52 | 2.8.2 | 初始化剧情 | 1d? | 2012-04-17 A | 2012-04-17 A |  | 100% |  |  | start no earlier than 2012-04-17 | 姜浩 | 8h | 8h |
| 53 | 2.8.3 | 剧情触发条件 | 1d? | 2012-04-24 | 2012-04-24 |  |  |  | 28d | start no earlier than 2012-04-24 | 姜浩 | 8h |  |

Notes:
- 30: 第一轮联调结束，4.17开始测试 / 23个任务类型，基本保证每个类型有一个任务 / 4.17 缺少数据，还不能开始测试（图鉴模块怪的数据-姜浩）
- 32: 4.17测试没有开始，流程没有跑通，进去就报错 / 4.23 测试给到反馈给小庆 -- 4.20
- 33: 4.17 完成（包括UI更换）
- 38: 4.14加班赶一天进度，4.20完成 / 分批次提交测试 / 4.17-小庆刚开始修改 / 4.19 前端第一轮修改已完成， / 提交测试
- 47: 整体4.17完成
- 48: 地图沿线美观问题，需要 姜浩和大强确认
- 49: 因为没有多个场景数据
- 50: 姜浩确认更多数值（各剧情的触发点列表）
- 52: 4.19 晚上调整完成 -姜浩 / 后续需要： / 1，配合新手引导做新设计 / 2，新场景完成之后，坐标重新设计 ----- 4.19

| ID | WBS | Task | Duration | Start | Finish | Predecessors | Complete | Remaining | Total slack | Constraint | Resources | Work | Actual work |
| --- | --- | --- | --- | --- | --- | --- | --- | --- | --- | --- | --- | --- | --- |
| 54 | 2.9 | **商城系统** | 4d? | 2012-04-18 A | 2012-04-23 |  | 88% | 0.5d? | 50d |  |  | 16h | 14h |
| 55 | 2.9.1 | 素材导入 | 1d? | 2012-04-18 A | 2012-04-18 |  | 75% | 0.25d? | 32d | start no earlier than 2012-04-18 | 姜浩 | 8h | 6h |
| 56 | 2.9.2 | 商城购买结果提示（成功飘字，失败弹框） | 1d? | 2012-04-23 A | 2012-04-23 A |  | 100% |  |  | start no earlier than 2012-04-23 | 夏俊杰 | 8h | 8h |
| 57 | 2.10 | **道具，仓库模块** | 2d? | 2012-04-20 A | 2012-04-23 A |  | 100% |  |  |  |  | 16h | 16h |
| 58 | 2.10.1 | 道具使用模块 | 1d? | 2012-04-20 A | 2012-04-20 A |  | 100% |  |  | start no earlier than 2012-04-20 | 张诚 | 8h | 8h |
| 59 | 2.10.2 | 界面优化 | 1d? | 2012-04-23 A | 2012-04-23 A |  | 100% |  |  | start no earlier than 2012-04-23 | 张诚 | 8h | 8h |
| 60 | 2.11 | **图鉴模块** | 2d | 2012-04-24 A | 2012-04-25 A |  | 100% |  |  |  |  | 32h | 32h |
| 61 | 2.11.1 | 图鉴的触发条件 | 2d | 2012-04-24 A | 2012-04-25 A |  | 100% |  |  | start no earlier than 2012-04-24 | 姜浩; 李钊 | 32h | 32h |
| 62 | 2.12 | **UI更换** | 2d? | 2012-04-19 A | 2012-04-20 |  | 83% | 0.33d? | 51d |  |  | 48h | 40h |
| 63 | 2.12.1 | 合成 | 1d? | 2012-04-19 A | 2012-04-19 A |  | 100% |  |  | start no earlier than 2012-04-19 | 小庆 | 8h | 8h |
| 64 | 2.12.2 | 图鉴 | 1d | 2012-04-19 A | 2012-04-19 A |  | 100% |  |  | start no earlier than 2012-04-19 | 张诚 | 8h | 8h |
| 65 | 2.12.3 | 仓库 | 1d? | 2012-04-20 A | 2012-04-20 A |  | 100% |  |  | start no earlier than 2012-04-20 | 张诚 | 8h | 8h |
| 66 | 2.12.4 | 佣兵 | 1d? | 2012-04-19 A | 2012-04-19 A |  | 100% |  |  | start no earlier than 2012-04-17 | 小庆 | 8h | 8h |
| 67 | 2.12.5 | 经营 | 1d? | 2012-04-19 A | 2012-04-19 A |  | 100% |  |  | start no earlier than 2012-04-19 | 小庆 | 8h | 8h |
| 68 | 2.12.6 | 主场景，村外，副本（美术已完成） | 1d? | 2012-04-20 | 2012-04-20 |  |  |  | 30d | start no earlier than 2012-04-20 | 张琦 | 8h |  |
| 69 | 2.13 | **DIY模块** | 1d? | 2012-04-24 A | 2012-04-24 A |  | 100% |  |  |  | 桃子 | 16h | 16h |
| 70 | 2.13.1 | 测试 | 1d? | 2012-04-24 A | 2012-04-24 A |  | 100% |  |  | start no earlier than 2012-04-24 | 桃子 | 8h | 8h |
| 71 | 2.14 | **升级，教堂 模块** | 7d? | 2012-04-26 A | 2012-05-03 A |  | 100% |  |  |  |  | 88h | 88h |
| 72 | 2.14.1 | 建筑升级功能 | 2d | 2012-04-26 A | 2012-04-27 A |  | 100% |  |  | start no earlier than 2012-04-26 | 小庆; 李钊 | 32h | 32h |
| 73 | 2.14.2 | 牧师功能 | 1d | 2012-04-28 A | 2012-04-28 A | 72 | 100% |  |  | start no earlier than 2012-04-25 | 小庆; 李钊 | 16h | 16h |
| 74 | 2.14.3 | 体力不足面板 | 1d | 2012-05-02 A | 2012-05-02 A | 73 | 100% |  |  | start no earlier than 2012-05-02 | 小庆; 李钊 | 16h | 16h |
| 75 | 2.14.4 | 经营等级升级面板 | 1d | 2012-05-03 A | 2012-05-03 A | 74 | 100% |  |  | start no earlier than 2012-05-03 | 小庆; 李钊 | 16h | 16h |
| 76 | 2.14.5 | 测试 | 1d? | 2012-05-03 A | 2012-05-03 A |  | 100% |  |  | finish no earlier than 2012-05-03 | 桃子 | 8h | 8h |
| 77 | 2.15 | **其他** | 16d? | 2012-04-27 A | 2012-05-17 |  | 60% | 6.4d? | 31d |  |  | 104h | 56h |
| 78 | 2.15.1 | 王城，野外 的酒馆 - 策划 | 0.67d? | 2012-05-04 | 2012-05-04 |  |  |  | 40.33d | start no earlier than 2012-05-04 | Eric; 姜浩; 陈志荣 | 16h |  |
| 79 | 2.15.2 | 铁匠铺 - 策划 | 4d? | 2012-05-14 | 2012-05-17 |  |  |  | 31d | start no earlier than 2012-05-14 | Eric | 32h |  |
| 80 | 2.15.3 | 地图编辑器 | 7d? | 2012-04-27 A | 2012-05-04 A |  | 100% |  |  | finish no earlier than 2012-05-04 | 张琦 | 56h | 56h |
| 81 | 2.16 | 世界观核对 | 4d? | 2012-04-28 A | 2012-05-02 A |  | 100% |  |  | finish no earlier than 2012-05-02 | 姜浩 | 32h | 32h |

Notes:
- 54: 物品购买,商品列表，商品排序 / 剩余素材导入（4.19）
- 55: 美术缺：卷轴，工作台，装饰物 / 其他均已导入 -- 4.19
- 57: 物品使用（道具功能及具体数值）
- 63: UI还没拿到（今天确认UI-姜浩，余晓丽） / UI已经确认，替换排在 佣兵修改之后-小庆 / 4.19 完成
- 64: UI已经拿到，4.17-19完成
- 65: UI还没拿到（今天确认UI-姜浩，余晓丽） / 4.20 日完成
- 72: 开发完成，测试中
- 79: 10号之后
- 80: 进度进行中
- 81: 第一版已核对 / 继续调整细节 最晚5.4号结束

| ID | WBS | Task | Duration | Start | Finish | Predecessors | Complete | Remaining | Total slack | Free slack | Constraint | Resources | Work | Actual work |
| --- | --- | --- | --- | --- | --- | --- | --- | --- | --- | --- | --- | --- | --- | --- |
| 82 | 3 | **上线前需完成模块** | 36d? | 2012-04-13 A | 2012-05-31 |  | 17% | 30d? | 21d |  |  |  | 1512h | 259.95h |
| 83 | 3.1 | **炼金第二版功能** | 0.5d | 2012-05-15 | 2012-05-15 |  |  |  | 33.5d |  |  |  | 4h |  |
| 84 | 3.1.1 | 策划进度核对 | 0.5d | 2012-05-15 | 2012-05-15 |  |  |  | 33.5d |  | start no earlier than 2012-05-15 | Eric | 4h |  |
| 85 | 3.2 | **剧情模块** | 19d? | 2012-05-07 A | 2012-05-31 |  | 17% | 15.78d? | 21d |  |  | 姜浩 | 384h | 71.47h |
| 86 | 3.2.1 | 主线对白内容-5个副本 | 10d | 2012-05-07 A | 2012-05-18 |  | 40% | 6d | 29d | 0d | finish no earlier than 2012-05-18 | 姜浩 | 80h | 32h |
| 87 | 3.2.2 | 支线对白内容 | 14d? | 2012-05-14 | 2012-05-31 |  |  |  | 21d |  | finish no earlier than 2012-05-31 | 外包 | 112h |  |
| 88 | 3.2.3 | 剧情脚本实现 | 1d? | 2012-05-21 | 2012-05-21 | 86 |  |  | 29d |  | start no earlier than 2012-05-07 |  |  |  |
| 89 | 3.2.4 | 剧情（掉落，怪物分布，数值相关等信息） | 1d? | 2012-05-14 | 2012-05-14 |  |  |  | 34d |  | start no earlier than 2012-05-14 | 姜浩 | 8h |  |
| 90 | 3.2.5 | **剧情触发点** | 2d? | 2012-05-11 A | 2012-05-14 |  | 38% | 1.25d? | 34d |  |  | 姜浩 | 32h | 11.6h |
| 91 | 3.2.5.1 | 策划 | 1d? | 2012-05-11 A | 2012-05-11 |  | 75% | 0.25d? | 35d |  | start no earlier than 2012-05-11 | 姜浩 | 8h | 6h |
| 92 | 3.2.5.2 | 技术添加 | 1d? | 2012-05-14 | 2012-05-14 |  |  |  | 34d |  | start no earlier than 2012-05-14 | 李钊 | 8h |  |
| 93 | 3.3 | **交互系统-第一期** | 15.5d? | 2012-04-25 A | 2012-05-15 |  | 33% | 10.44d? | 33d |  |  | Eric | 564h | 145.82h |
| 94 | 3.3.1 | 策划初稿审核 | 1.5d | 2012-04-25 A | 2012-04-26 A |  | 100% |  |  |  | finish no earlier than 2012-04-26 | Eric; 八代 | 24h | 24h |
| 95 | 3.3.2 | 第一期最终版核对-11:00 | 1d? | 2012-05-07 A | 2012-05-07 A |  | 100% |  |  |  | start no earlier than 2012-05-07 | 八代 | 8h | 8h |
| 96 | 3.3.3 | **美术UI** | 3d? | 2012-05-07 A | 2012-05-09 |  | 79% | 0.64d? | 37d |  |  |  | 56h | 44h |
| 97 | 3.3.3.1 | 战斗模块-好友协助修改 | 1d? | 2012-05-07 A | 2012-05-07 A |  | 100% |  |  |  | start no earlier than 2012-05-07 | 余晓丽 | 8h | 8h |
| 98 | 3.3.3.2 | 订单修改 | 1d? | 2012-05-07 A | 2012-05-07 A |  | 100% |  |  |  | start no earlier than 2012-05-07 | 余晓丽 | 8h | 8h |
| 99 | 3.3.3.3 | 好友家接受订单 | 1d? | 2012-05-07 A | 2012-05-07 A |  | 100% |  |  |  | start no earlier than 2012-05-07 | 余晓丽 | 8h | 8h |
| 100 | 3.3.3.4 | 酒馆-加酒互动 | 1d? | 2012-05-08 A | 2012-05-08 A |  | 100% |  |  |  | start no earlier than 2012-05-08 | 余晓丽 | 8h | 8h |
| 101 | 3.3.3.5 | 老虎机 | 1d? | 2012-05-08 A | 2012-05-08 A |  | 100% |  |  |  | start no earlier than 2012-05-08 | 余晓丽 | 8h | 8h |
| 102 | 3.3.3.6 | 占领 | 2d? | 2012-05-08 A | 2012-05-09 |  | 25% | 1.5d? | 37d |  | finish no earlier than 2012-05-09 | 余晓丽 | 16h | 4h |
| 103 | 3.3.4 | **开发** | 2d? | 2012-05-08 | 2012-05-09 |  |  |  | 36d |  |  | 张琦; 夏俊杰; 李钊; 章昕; 张诚; 小庆 | 288h |  |
| 104 | 3.3.4.1 | 访问好友家信息 | 2d? | 2012-05-08 | 2012-05-09 |  |  |  | 37d |  | start no earlier than 2012-05-08 | 章昕; 张琦 | 32h |  |
| 105 | 3.3.4.2 | 战斗交互-侵略，救援，反抗 | 2d? | 2012-05-08 | 2012-05-09 |  |  |  | 36d | 0d | start no earlier than 2012-05-08 | 章昕; 夏俊杰 | 32h |  |
| 106 | 3.3.4.3 | 战斗中好友技能协助 | 2d? | 2012-05-08 | 2012-05-09 |  |  |  | 37d |  | start no earlier than 2012-05-08 | 章昕; 夏俊杰 | 32h |  |
| 107 | 3.3.4.4 | 橙色订单 | 2d | 2012-05-08 | 2012-05-09 |  |  |  | 37d |  | start no earlier than 2012-05-08 | 李钊; 小庆 | 32h |  |
| 108 | 3.3.4.5 | 好友订单 | 2d? | 2012-05-08 | 2012-05-09 |  |  |  | 37d |  | start no earlier than 2012-05-08 | 李钊; 小庆 | 32h |  |
| 109 | 3.3.4.6 | 酒馆加酒 | 2d? | 2012-05-08 | 2012-05-09 |  |  |  | 37d |  | start no earlier than 2012-05-08 | 李钊; 小庆 | 32h |  |
| 110 | 3.3.5 | 联调 | 1d? | 2012-05-10 | 2012-05-10 | 105 |  |  | 36d |  | start no earlier than 2012-05-04 | 张琦; 夏俊杰; 李钊; 章昕; 张诚; 小庆 | 48h |  |
| 111 | 3.3.6 | 测试 | 2d | 2012-05-14 | 2012-05-15 |  |  |  | 33d |  | start no earlier than 2012-05-14 | 桃子 | 16h |  |

Notes:
- 82: 交互系统 / 礼物系统 / 消息和日志 / 新手引导 / 每日登陆 / 数据监控
- 86: 完成 15% -- 5.8
- 87: 5.14 核对第一次意见
- 89: 预计 5.14 完成 -- 5.14
- 94: 4.24 下午核对策划 -- 4.23
- 103: 2月12日，13日讨论2稿确定后，可以开始开发

| ID | WBS | Task | Duration | Start | Finish | Complete | Remaining | Total slack | Constraint | Resources | Work | Actual work |
| --- | --- | --- | --- | --- | --- | --- | --- | --- | --- | --- | --- | --- |
| 112 | 3.4 | **交互系统-第二期** | 2d? | 2012-05-14 A | 2012-05-15 | 33% | 1.33d? | 33d |  |  | 24h | 16h |
| 113 | 3.4.1 | 策划初稿审核 | 1d? | 2012-05-14 A | 2012-05-14 A | 100% |  |  | start no earlier than 2012-05-14 | Eric; 八代 | 16h | 16h |
| 114 | 3.4.2 | 策划-详细进度核对 | 1d? | 2012-05-15 | 2012-05-15 |  |  | 33d | start no earlier than 2012-05-15 | 八代 | 8h |  |
| 115 | 3.4.3 | 开发-进度 | 1d? | 2012-05-14 | 2012-05-14 |  |  | 34d | start no earlier than 2012-05-14 |  |  |  |
| 116 | 3.5 | **交互系统-第三期** | 1d? | 2012-05-18 | 2012-05-18 |  |  | 30d |  |  | 16h |  |
| 117 | 3.5.1 | 策划初稿审核 | 1d? | 2012-05-18 | 2012-05-18 |  |  | 30d | start no earlier than 2012-05-18 | Eric; 八代 | 16h |  |
| 118 | 3.6 | **礼物系统 - 移植** | 2d? | 2012-04-23 | 2012-04-24 |  |  | 49d |  | Eric | 72h |  |
| 119 | 3.6.1 | 礼物通知系统策划 | 1d? | 2012-04-23 | 2012-04-23 |  |  | 50d | start no earlier than 2012-04-23 | 八代 | 8h |  |
| 120 | 3.6.2 | UI | 1d? | 2012-04-23 | 2012-04-23 |  |  | 50d | start no earlier than 2012-04-23 | 余晓丽 | 8h |  |
| 121 | 3.6.3 | 后端 | 1d? | 2012-04-23 | 2012-04-23 |  |  | 50d | start no earlier than 2012-04-23 | 章昕 | 8h |  |
| 122 | 3.6.4 | 前端 | 2d | 2012-04-23 | 2012-04-24 |  |  | 49d | start no earlier than 2012-04-23 | 张诚 | 16h |  |
| 123 | 3.6.5 | 导入礼物的内容和数值 | 1d | 2012-04-23 | 2012-04-23 |  |  | 50d | start no earlier than 2012-04-23 | Eric; 姜浩 | 16h |  |
| 124 | 3.6.6 | 测试 | 1d? | 2012-04-23 | 2012-04-23 |  |  | 50d | start no earlier than 2012-04-23 |  |  |  |
| 125 | 3.7 | **消息和日志** | 14d? | 2012-04-18 A | 2012-05-04 | 8% | 12.83d? | 40d |  | Eric; 姜浩 | 344h | 26.67h |
| 126 | 3.7.1 | 姜浩策划 | 1d | 2012-04-28 | 2012-04-28 |  |  | 45d | start no earlier than 2012-04-28 | 姜浩 | 8h |  |
| 127 | 3.7.2 | Eric策划 | 4d? | 2012-04-28 | 2012-05-02 |  |  | 42d | finish no earlier than 2012-05-02 | Eric | 32h |  |
| 128 | 3.7.3 | 前端 | 1d? | 2012-04-23 | 2012-04-23 |  |  | 50d | start no earlier than 2012-04-23 | 小庆 | 8h |  |
| 129 | 3.7.4 | 后端数据 | 2d | 2012-04-18 | 2012-04-19 |  |  | 52d | start no earlier than 2012-04-18 | 李钊; 章昕 | 32h |  |
| 130 | 3.7.5 | 后端框架 | 1d? | 2012-05-04 A | 2012-05-04 A | 100% |  |  | start no earlier than 2012-05-04 | 李钊 | 8h | 8h |
| 131 | 3.7.6 | 导入礼物的内容 | 2d | 2012-04-18 | 2012-04-19 |  |  | 52d | start no earlier than 2012-04-18 | Eric; 姜浩 | 32h |  |
| 132 | 3.7.7 | 测试 | 1d? | 2012-04-18 | 2012-04-18 |  |  | 53d | start no earlier than 2012-04-18 |  |  |  |
| 133 | 3.8 | **新手引导** | 2d? | 2012-04-18 | 2012-04-19 |  |  | 52d |  | 姜浩 | 16h |  |
| 134 | 3.8.1 | 移植 | 2d | 2012-04-18 | 2012-04-19 |  |  | 52d | start no earlier than 2012-04-18 |  |  |  |
| 135 | 3.8.2 | 导入礼物的内容 | 2d | 2012-04-18 | 2012-04-19 |  |  | 52d | start no earlier than 2012-04-18 |  |  |  |
| 136 | 3.8.3 | 测试 | 1d? | 2012-04-18 | 2012-04-18 |  |  | 53d | start no earlier than 2012-04-18 |  |  |  |

Notes:
- 118: IPANDA的移植，有HTML系统的通知，有FLASH，有HTML / 4.24 移植第一版完成，需策划详细确认（数值） -- BY 4.25
- 122: 具体包括： 1个场景，一个人物，1个UI初稿
- 127: 第一版框架已经完成 - 5.2
- 129: 具体包括： 1个场景，一个人物，1个UI初稿
- 134: 具体包括： 1个场景，一个人物，1个UI初稿

| ID | WBS | Task | Duration | Start | Finish | Complete | Remaining | Total slack | Constraint | Resources | Work | Actual work |
| --- | --- | --- | --- | --- | --- | --- | --- | --- | --- | --- | --- | --- |
| 137 | 3.9 | **每日登陆奖励** | 5d? | 2012-04-13 | 2012-04-19 |  |  | 52d |  | 柱子 | 64h |  |
| 138 | 3.9.1 | 审评 | 0.5d? | 2012-04-13 | 2012-04-13 |  |  | 56.5d | start no earlier than 2012-04-13 | Eric; 柱子 | 8h |  |
| 139 | 3.9.2 | 移植 | 2d | 2012-04-18 | 2012-04-19 |  |  | 52d | start no earlier than 2012-04-18 | 张诚 | 16h |  |
| 140 | 3.9.3 | 导入礼物的内容 | 2d | 2012-04-18 | 2012-04-19 |  |  | 52d | start no earlier than 2012-04-18 |  |  |  |
| 141 | 3.9.4 | 测试 | 1d? | 2012-04-18 | 2012-04-18 |  |  | 53d | start no earlier than 2012-04-18 |  |  |  |
| 142 | 3.10 | 运营工具 | 1d? | 2012-04-23 | 2012-04-23 |  |  | 50d | start no earlier than 2012-04-23 |  |  |  |
| 143 | 3.11 | **后台统计工具** | 1d? | 2012-05-14 | 2012-05-14 |  |  | 34d |  |  | 24h |  |
| 144 | 3.11.1 | 需求 | 1d? | 2012-05-14 | 2012-05-14 |  |  | 34d | start no earlier than 2012-05-14 | Eric; 姜浩; 柱子 | 24h |  |
| 145 | 4 | **美术部分** | 526d? | 2010-06-25 A | 2012-06-29 | 25% | 395.9d? | 0d |  |  | 3178.82h | 896.27h |
| 146 | 4.1 | **副本部分** | 25d? | 2012-04-26 A | 2012-05-29 | 39% | 15.24d? | 23d |  | 卢靖 | 1778.82h | 874.61h |
| 147 | 4.1.1 | **村庄的场景** | 11d? | 2012-04-26 A | 2012-05-09 | 89% | 1.22d? | 37d |  | 卢靖; 蒋德仁 | 312h | 256h |
| 148 | 4.1.1.1 | 地形制作 | 8d? | 2012-04-26 A | 2012-05-04 A | 100% |  |  | start no earlier than 2012-04-26 | 卢靖 | 64h | 64h |
| 149 | 4.1.1.2 | 装饰物 | 8d? | 2012-04-26 A | 2012-05-04 A | 100% |  |  | finish no earlier than 2012-05-04 | 蒋德仁 | 64h | 64h |
| 150 | 4.1.1.3 | 副本编辑 | 1d? | 2012-05-09 | 2012-05-09 |  |  | 37d | start no earlier than 2012-05-09 | 陈志荣 | 8h |  |
| 151 | 4.1.1.4 | 优化 | 1d? | 2012-05-09 | 2012-05-09 |  |  | 37d | start no earlier than 2012-05-09 |  |  |  |
| 152 | 4.1.2 | **矿洞的场景** | 11d? | 2012-04-26 A | 2012-05-09 | 90% | 1.05d? | 37d |  | 卢靖; 蒋德仁 | 336h | 280h |
| 153 | 4.1.2.1 | 地形快制作 | 8d? | 2012-04-26 A | 2012-05-04 A | 100% |  |  | finish no earlier than 2012-05-04 | 卢靖 | 64h | 64h |
| 154 | 4.1.2.2 | 装饰物 | 8d? | 2012-04-26 A | 2012-05-04 A | 100% |  |  | finish no earlier than 2012-05-04 | 蒋德仁 | 64h | 64h |
| 155 | 4.1.2.3 | 矿以及宝箱 | 3d? | 2012-05-02 A | 2012-05-04 A | 100% |  |  | finish no earlier than 2012-05-04 | 蒋德仁 | 24h | 24h |
| 156 | 4.1.2.4 | 副本编辑 | 1d? | 2012-05-09 | 2012-05-09 |  |  | 37d | start no earlier than 2012-05-09 | 陈志荣 | 8h |  |
| 157 | 4.1.2.5 | 优化 | 1d? | 2012-05-09 | 2012-05-09 |  |  | 37d | start no earlier than 2012-05-09 |  |  |  |
| 158 | 4.1.3 | **房屋DIY** | 6d? | 2012-05-02 A | 2012-05-09 | 69% | 1.85d? | 37d |  | 邹慧; 卢靖; 蒋德仁 | 300h | 207.69h |
| 159 | 4.1.3.1 | 概念图 | 1.5d | 2012-05-07 A | 2012-05-08 A | 100% |  |  | start no earlier than 2012-05-07 | 卢靖 | 12h | 12h |
| 160 | 4.1.3.2 | 炼金炉调整 | 6d? | 2012-05-02 A | 2012-05-09 A | 100% |  |  | finish no earlier than 2012-05-09 | 卢靖 | 48h | 48h |
| 161 | 4.1.3.3 | 地形快 | 6d? | 2012-05-02 | 2012-05-09 |  |  | 37d | finish no earlier than 2012-05-09 | 邹慧 | 48h |  |
| 162 | 4.1.3.4 | 炼金炉制作 | 6d? | 2012-05-02 A | 2012-05-09 A | 100% |  |  | finish no earlier than 2012-05-09 | 蒋德仁 | 48h | 48h |

Notes:
- 139: 具体包括： 1个场景，一个人物，1个UI初稿
- 152: 周六完成 / 进度进行中 - 5.2
- 160: 第一期总8个不同的炼金炉 / 8号先出：2个炼金炉，12个装饰物

| ID | WBS | Task | Duration | Start | Finish | Predecessors | Complete | Remaining | Total slack | Free slack | Constraint | Resources | Work | Actual work |
| --- | --- | --- | --- | --- | --- | --- | --- | --- | --- | --- | --- | --- | --- | --- |
| 163 | 4.1.4 | **王城** | 8d? | 2012-05-09 A | 2012-05-18 |  | 32% | 5.43d? | 30d |  |  |  | 160h | 54h |
| 164 | 4.1.4.1 | 概念设定 | 5d? | 2012-05-09 | 2012-05-15 |  |  |  | 33d |  | finish no earlier than 2012-05-15 | 卢靖 | 40h |  |
| 165 | 4.1.4.2 | 地形块制作 | 2d? | 2012-05-16 A | 2012-05-17 A |  | 100% |  |  |  | finish no earlier than 2012-05-17 | 邹慧 | 16h | 16h |
| 166 | 4.1.4.3 | 建筑物线稿 | 5d? | 2012-05-09 A | 2012-05-15 |  | 95% | 0.25d? | 33d |  | finish no earlier than 2012-05-15 | 卢靖 | 40h | 38h |
| 167 | 4.1.4.4 | 建筑物制作 | 3d? | 2012-05-15 | 2012-05-17 |  |  |  | 31d |  | finish no earlier than 2012-05-17 | 蒋德仁 | 24h |  |
| 168 | 4.1.4.5 | 地图装饰元件补充 | 2d? | 2012-05-16 | 2012-05-17 |  |  |  | 30d | 0d | finish no earlier than 2012-05-17 | 蒋德仁 | 16h |  |
| 169 | 4.1.4.6 | 可采集物品的元件 | 2d? | 2012-05-16 | 2012-05-17 |  |  |  | 30d | 0d | finish no earlier than 2012-05-17 | 蒋德仁 | 16h |  |
| 170 | 4.1.4.7 | 副本编辑 | 1d? | 2012-05-18 | 2012-05-18 | 169 |  |  | 30d |  | start no earlier than 2012-05-17 | 陈志荣 | 8h |  |
| 171 | 4.1.4.8 | 优化 | 1d? | 2012-05-18 | 2012-05-18 | 168 |  |  | 30d |  |  |  |  |  |
| 172 | 4.1.5 | **监狱（王城副本）** | 6d? | 2012-05-16 | 2012-05-23 |  |  |  | 27d |  |  |  | 160h |  |
| 173 | 4.1.5.1 | 概念设定 | 3d? | 2012-05-16 | 2012-05-18 |  |  |  | 30d |  | finish no earlier than 2012-05-18 | 卢靖 | 24h |  |
| 174 | 4.1.5.2 | 地形块制作 | 3d? | 2012-05-17 | 2012-05-21 |  |  |  | 29d |  | finish no earlier than 2012-05-21 | 邹慧 | 24h |  |
| 175 | 4.1.5.3 | 建筑物线稿 | 3d? | 2012-05-17 | 2012-05-21 |  |  |  | 29d |  | start no earlier than 2012-05-17 | 卢靖 | 24h |  |
| 176 | 4.1.5.4 | 建筑物制作 | 3d? | 2012-05-17 | 2012-05-21 |  |  |  | 29d |  | start no earlier than 2012-05-17 | 蒋德仁 | 24h |  |
| 177 | 4.1.5.5 | 地图装饰元件补充 | 3d? | 2012-05-17 | 2012-05-21 |  |  |  | 29d |  | start no earlier than 2012-05-17 | 蒋德仁 | 24h |  |
| 178 | 4.1.5.6 | 可采集物品的元件 | 3d? | 2012-05-17 | 2012-05-21 |  |  |  | 27d | 0d | start no earlier than 2012-05-17 | 蒋德仁 | 24h |  |
| 179 | 4.1.5.7 | 副本编辑 | 2d | 2012-05-22 | 2012-05-23 | 178 |  |  | 27d |  | start no earlier than 2012-05-17 | 陈志荣 | 16h |  |
| 180 | 4.1.5.8 | 优化 | 1d? | 2012-05-22 | 2012-05-22 |  |  |  | 28d |  | start no earlier than 2012-05-22 |  |  |  |
| 181 | 4.1.6 | **教堂（王城副本）** | 5d? | 2012-05-18 | 2012-05-24 |  |  |  | 26d |  |  |  | 144h |  |
| 182 | 4.1.6.1 | 概念设定 | 2d? | 2012-05-18 | 2012-05-21 |  |  |  | 29d |  | finish no earlier than 2012-05-21 | 卢靖 | 16h |  |
| 183 | 4.1.6.2 | 地形块制作 | 3d? | 2012-05-21 | 2012-05-23 |  |  |  | 27d |  | finish no earlier than 2012-05-23 | 邹慧 | 24h |  |
| 184 | 4.1.6.3 | 建筑物线稿 | 3d? | 2012-05-21 | 2012-05-23 |  |  |  | 27d |  | start no earlier than 2012-05-21 | 卢靖 | 24h |  |
| 185 | 4.1.6.4 | 建筑物制作 | 3d? | 2012-05-21 | 2012-05-23 |  |  |  | 27d |  | start no earlier than 2012-05-21 | 蒋德仁 | 24h |  |
| 186 | 4.1.6.5 | 地图装饰元件补充 | 3d? | 2012-05-21 | 2012-05-23 |  |  |  | 26d | 0d | start no earlier than 2012-05-21 | 蒋德仁 | 24h |  |
| 187 | 4.1.6.6 | 可采集物品的元件 | 3d? | 2012-05-21 | 2012-05-23 |  |  |  | 26d | 0d | start no earlier than 2012-05-21 | 蒋德仁 | 24h |  |
| 188 | 4.1.6.7 | 副本编辑 | 1d? | 2012-05-24 | 2012-05-24 | 187 |  |  | 26d |  | start no earlier than 2012-05-17 | 陈志荣 | 8h |  |
| 189 | 4.1.6.8 | 优化 | 1d? | 2012-05-24 | 2012-05-24 | 186 |  |  | 26d |  |  |  |  |  |

Notes:
- 179: 需要提前和姜浩核对需求

| ID | WBS | Task | Duration | Start | Finish | Predecessors | Complete | Remaining | Total slack | Free slack | Constraint | Resources | Work | Actual work |
| --- | --- | --- | --- | --- | --- | --- | --- | --- | --- | --- | --- | --- | --- | --- |
| 190 | 4.1.7 | **翡翠森林** | 6d? | 2012-05-22 | 2012-05-29 |  |  |  | 23d |  |  |  | 96h |  |
| 191 | 4.1.7.1 | 概念设定 | 3d? | 2012-05-22 | 2012-05-24 |  |  |  | 26d |  | finish no earlier than 2012-05-24 | 卢靖 | 24h |  |
| 192 | 4.1.7.2 | 地形块制作 | 2d? | 2012-05-24 | 2012-05-25 |  |  |  | 25d |  | finish no earlier than 2012-05-25 | 邹慧 | 16h |  |
| 193 | 4.1.7.3 | 地图元件线稿 | 2d? | 2012-05-24 | 2012-05-25 |  |  |  | 25d |  | finish no earlier than 2012-05-25 | 卢靖 | 16h |  |
| 194 | 4.1.7.4 | 地图装饰元件补充 | 2d? | 2012-05-24 | 2012-05-25 |  |  |  | 25d |  | finish no earlier than 2012-05-25 | 蒋德仁 | 16h |  |
| 195 | 4.1.7.5 | 可采集物品的元件 | 2d? | 2012-05-24 | 2012-05-25 |  |  |  | 23d | 0d | finish no earlier than 2012-05-25 | 蒋德仁 | 16h |  |
| 196 | 4.1.7.6 | 副本编辑 | 1d? | 2012-05-28 | 2012-05-28 | 195 |  |  | 23d | 0d | start no earlier than 2012-05-17 | 陈志荣 | 8h |  |
| 197 | 4.1.7.7 | 优化 | 1d? | 2012-05-29 | 2012-05-29 | 196 |  |  | 23d |  | start no earlier than 2012-05-11 |  |  |  |
| 198 | 4.1.8 | **沼泽** | 3d? | 2012-05-25 | 2012-05-29 |  |  |  | 23d |  |  |  | 72h |  |
| 199 | 4.1.8.1 | 概念设定 | 1d | 2012-05-25 | 2012-05-26 |  |  |  | 25d |  | finish no earlier than 2012-05-26 | 卢靖 | 8h |  |
| 200 | 4.1.8.2 | 地形块制作 | 2d? | 2012-05-28 | 2012-05-29 |  |  |  | 23d |  | finish no earlier than 2012-05-29 | 邹慧 | 16h |  |
| 201 | 4.1.8.3 | 地图元件线稿 | 2d? | 2012-05-28 | 2012-05-29 |  |  |  | 23d |  | finish no earlier than 2012-05-29 | 卢靖 | 16h |  |
| 202 | 4.1.8.4 | 地图装饰元件补充 | 2d? | 2012-05-28 | 2012-05-29 |  |  |  | 23d |  | finish no earlier than 2012-05-29 | 蒋德仁 | 16h |  |
| 203 | 4.1.8.5 | 可采集物品的元件 | 2d? | 2012-05-28 | 2012-05-29 |  |  |  | 23d |  | finish no earlier than 2012-05-29 | 蒋德仁 | 16h |  |
| 204 | 4.2 | **大地图** | 2d | 2012-05-14 | 2012-05-15 |  |  |  | 33d |  |  |  | 16h |  |
| 205 | 4.2.1 | 优化 | 2d | 2012-05-14 | 2012-05-15 |  |  |  | 33d |  | start no earlier than 2012-05-14 | 大强 | 16h |  |
| 206 | 4.3 | **战斗背景** | 1d? | 2012-05-07 | 2012-05-07 |  |  |  | 39d |  |  |  | 40h |  |
| 207 | 4.3.1 | 翡翠森林-完成 | 1d? | 2012-05-07 | 2012-05-07 |  |  |  | 39d |  | start no earlier than 2012-05-07 |  |  |  |
| 208 | 4.3.2 | 矿洞 | 1d? | 2012-05-07 | 2012-05-07 |  |  |  | 39d |  | start no earlier than 2012-05-07 | 卢靖 | 8h |  |
| 209 | 4.3.3 | 沼泽 | 1d? | 2012-05-07 | 2012-05-07 |  |  |  | 39d |  | start no earlier than 2012-05-07 | 卢靖 | 8h |  |
| 210 | 4.3.4 | 监狱 | 1d? | 2012-05-07 | 2012-05-07 |  |  |  | 39d |  | start no earlier than 2012-05-07 | 卢靖 | 8h |  |
| 211 | 4.3.5 | 教堂 | 1d? | 2012-05-07 | 2012-05-07 |  |  |  | 39d |  | start no earlier than 2012-05-07 | 卢靖 | 8h |  |
| 212 | 4.3.6 | 村庄（备选） | 1d? | 2012-05-07 | 2012-05-07 |  |  |  | 39d |  | start no earlier than 2012-05-07 | 卢靖 | 8h |  |
| 213 | 4.4 | **人物模块** | 39d? | 2012-05-08 A | 2012-06-29 |  | 1% | 38.69d? | 0d |  |  | 赵子敬 | 928h | 16.67h |
| 214 | 4.4.1 | **NPC制作** | 39d? | 2012-05-08 A | 2012-06-29 |  | 1% | 38.69d? | 0d |  |  |  | 616h | 14.15h |
| 215 | 4.4.1.1 | **现已完成15个，后续制作25个** | 14d | 2012-05-08 A | 2012-05-25 |  | 4% | 13.5d | 24d |  |  | 赵子敬 | 232h | 14.15h |
| 216 | 4.4.1.1.1 | 需求核对 | 0.5d | 2012-05-08 A | 2012-05-08 A |  | 100% |  |  |  | start no earlier than 2012-05-08 | 姜浩; 大强; 赵子敬 | 12h | 12h |
| 217 | 4.4.1.1.2 | 制作-25NPC和头像 | 13.5d | 2012-05-08 | 2012-05-25 | 216 |  |  | 24d | 0d | finish no earlier than 2012-05-25 | 赵子敬 | 108h |  |

| ID | WBS | Task | Duration | Start | Finish | Predecessors | Complete | Remaining | Total slack | Constraint | Resources | Work | Actual work |
| --- | --- | --- | --- | --- | --- | --- | --- | --- | --- | --- | --- | --- | --- |
| 218 | 4.4.1.2 | **超级佣兵总87个** | 36d? | 2012-05-11 | 2012-06-29 |  |  |  | 0d |  |  | 376h |  |
| 219 | 4.4.1.2.1 | 外包 | 36d? | 2012-05-11 | 2012-06-29 |  |  |  | 0d | start no earlier than 2012-05-11 | 外包 | 288h |  |
| 220 | 4.4.1.2.2 | 自制作-10个 | 11d? | 2012-05-11 | 2012-05-25 |  |  |  | 25d | start no earlier than 2012-05-11 | 赵子敬 | 88h |  |
| 221 | 4.4.1.3 | 5个NPC跟佣兵格式相同 | 1d? | 2012-05-28 | 2012-05-28 | 217 |  |  | 24d | start no earlier than 2012-05-07 | 赵子敬 | 8h |  |
| 222 | 4.5 | **特效** | 499d? | 2010-06-25 A | 2012-05-23 |  | 29% | 356.03d? | 27d |  |  | 304h | 5h |
| 223 | 4.5.1 | **战斗特效(技能)** | 493d? | 2010-06-25 A | 2012-05-15 |  | 36% | 315.94d? | 33d |  | 宋文卿 | 112h | 5h |
| 224 | 4.5.1.1 | 战士 分系技能 | 14d? | 2012-04-26 A | 2012-05-15 |  | 25% | 10.5d? | 33d | finish no earlier than 2012-05-15 |  |  |  |
| 225 | 4.5.1.2 | 弓手 分系技能 | 14d? | 2012-04-26 A | 2012-05-15 |  | 25% | 10.5d? | 33d | finish no earlier than 2012-05-15 |  |  |  |
| 226 | 4.5.1.3 | 法师 分系技能 | 14d? | 2012-04-26 A | 2012-05-15 |  | 25% | 10.5d? | 33d | finish no earlier than 2012-05-15 |  |  |  |
| 227 | 4.5.1.4 | 法师 通用技能 | 14d? | 2012-04-26 A | 2012-05-15 |  | 25% | 10.5d? | 33d | finish no earlier than 2012-05-15 |  |  |  |
| 228 | 4.5.1.5 | 使用道具 | 10d? | 2012-04-26 A | 2012-05-09 |  | 75% | 2.5d? | 37d | finish no earlier than 2012-05-09 |  |  |  |
| 229 | 4.5.1.6 | 好友协助技能 | 1d? | 2010-06-25 | 2010-06-25 |  |  |  | 525d |  |  |  |  |
| 230 | 4.5.1.7 | 战士 通用技能 | 1d? | 2012-04-26 A | 2012-04-26 A |  | 100% |  |  |  |  |  |  |
| 231 | 4.5.1.8 | 弓手 通用技能 | 1d? | 2012-04-26 A | 2012-04-26 A |  | 100% |  |  |  |  |  |  |
| 232 | 4.5.1.9 | 全职业技能 | 1d? | 2012-04-26 A | 2012-04-26 A |  | 100% |  |  |  |  |  |  |
| 233 | 4.5.1.10 | 各种状态特效 | 1d? | 2012-04-26 A | 2012-04-26 A |  | 100% |  |  |  |  |  |  |
| 234 | 4.5.2 | **UI特效** | 6d? | 2012-05-16 | 2012-05-23 |  |  |  | 27d |  | 宋文卿 | 192h |  |
| 235 | 4.5.2.1 | UI特效需求分析 | 6d? | 2012-05-16 | 2012-05-23 |  |  |  | 27d | finish no earlier than 2012-05-23 | 梁新强 | 48h |  |
| 236 | 4.5.2.2 | 人物事件特效 | 6d? | 2012-05-16 | 2012-05-23 |  |  |  | 27d | finish no earlier than 2012-05-23 | 宋文卿 | 48h |  |
| 237 | 4.5.2.3 | UI事件特效 | 6d? | 2012-05-16 | 2012-05-23 |  |  |  | 27d | finish no earlier than 2012-05-23 | 宋文卿 | 48h |  |
| 238 | 4.6 | **游戏内串场的内容** | 7d? | 2012-05-10 | 2012-05-18 |  |  |  | 30d |  | 余晓丽; 大强 | 112h |  |
| 239 | 4.6.1 | 进入游戏场景 | 7d? | 2012-05-10 | 2012-05-18 |  |  |  | 30d | start no earlier than 2012-05-10 |  |  |  |
| 240 | 4.6.2 | 场景切换 | 7d? | 2012-05-10 | 2012-05-18 |  |  |  | 30d | start no earlier than 2012-05-10 |  |  |  |
| 241 | 4.6.3 | 剧情切换 | 7d? | 2012-05-10 | 2012-05-18 |  |  |  | 30d | start no earlier than 2012-05-10 |  |  |  |
| 242 | 4.6.4 | Loading | 7d? | 2012-05-10 | 2012-05-18 |  |  |  | 30d | start no earlier than 2012-05-10 |  |  |  |

Notes:
- 219: 一周两次的反馈结果，一次大概有6，7个
- 221: 包括 战斗动作（姜浩，Eric核对）
- 224: 火焰斩 寒冰斩 疾风斩
- 225: 火箭 冰箭 疾风箭
- 226: 火球术 冰球术/ 狂风术
- 227: 陨石术（改为落石形式） 石化术 全体石化术 魔法弹
- 228: 补血物品（血瓶、食品等） / 解除状态物品（各种解除效果的药剂） / 攻击物品（石头、炸弹）------缺石头（0509）
- 229: 待定，5月30日版本前的特效
- 230: 一字斩 贯通斩 十字斩 怒气
- 231: 毒箭 散射 迅驰 贯通射 乱射
- 232: 攻击力上升 防御力上升
- 233: 中毒，石化
- 238: 场景切换，游戏进场

| ID | WBS | Task | Duration | Start | Finish | Predecessors | Complete | Remaining | Total slack | Free slack | Constraint | Resources | Work | Actual work |
| --- | --- | --- | --- | --- | --- | --- | --- | --- | --- | --- | --- | --- | --- | --- |
| 243 | 5 | **策划部分** | 2d? | 2012-05-04 A | 2012-05-07 A |  | 100% |  |  |  |  |  | 24h | 24h |
| 244 | 5.1 | 订单数据 | 0.5d? | 2012-05-04 A | 2012-05-04 A |  | 100% |  |  |  | start no earlier than 2012-05-04 | Eric; 八代 | 8h | 8h |
| 245 | 5.2 | 整体系统框架-核对 | 1d? | 2012-05-07 A | 2012-05-07 A |  | 100% |  |  |  | start no earlier than 2012-05-07 | Eric; 姜浩 | 16h | 16h |
| 246 | 6 | **测试部分** | 6d? | 2012-05-08 A | 2012-05-15 |  | 25% | 4.5d? | 33d |  |  |  | 32h | 8h |
| 247 | 6.1 | **交互第一期** | 6d? | 2012-05-08 A | 2012-05-15 |  | 25% | 4.5d? | 33d |  |  |  | 32h | 8h |
| 248 | 6.1.1 | 测试用例 | 1d? | 2012-05-08 A | 2012-05-08 A |  | 100% |  |  |  | start no earlier than 2012-05-08 | 桃子 | 8h | 8h |
| 249 | 6.1.2 | 测试 | 3d | 2012-05-11 | 2012-05-15 |  |  |  | 33d |  | finish no earlier than 2012-05-15 | 桃子 | 24h |  |
| 250 | 7 | **音乐** | 17d? | 2012-05-08 | 2012-05-30 |  |  |  | 22d |  |  | Eric | 136h |  |
| 251 | 7.1 | 一个副本一个音乐，7个 | 17d? | 2012-05-08 | 2012-05-30 |  |  |  | 22d |  | start no earlier than 2012-05-08 |  |  |  |
| 252 | 7.2 | 剧情音乐（讨论中，第二期） | 17d? | 2012-05-08 | 2012-05-30 |  |  |  | 22d |  | start no earlier than 2012-05-08 |  |  |  |
| 253 | 8 | **音效** | 9d? | 2012-05-08 | 2012-05-18 |  |  |  | 30d |  |  | Eric | 144h |  |
| 254 | 8.1 | 5.20 核对进度 | 9d? | 2012-05-08 | 2012-05-18 |  |  |  | 30d |  | start no earlier than 2012-05-08 | Eric | 72h |  |
| 255 | 9 | **服务器** | 7d? | 2012-05-04 | 2012-05-14 |  |  |  | 34d |  |  |  | 64h |  |
| 256 | 9.1 | 服务器配置需求 | 4d | 2012-05-04 | 2012-05-09 |  |  |  | 35d | 0d | start no earlier than 2012-05-04 | 张黎明 | 32h |  |
| 257 | 9.2 | 运营-服务器要求 | 2d | 2012-05-10 | 2012-05-11 | 256 |  |  | 35d |  | start no earlier than 2012-05-04 | 柱子 | 16h |  |
| 258 | 9.3 | 上线服务器备案核定 | 1d? | 2012-05-14 | 2012-05-14 |  |  |  | 34d |  | start no earlier than 2012-05-14 | 张黎明; 立军 | 16h |  |
| 259 | 10 | **运营** | 8d? | 2012-05-10 | 2012-05-21 |  |  |  | 29d |  |  |  | 200h |  |
| 260 | 10.1 | 运营上线前的整体计划 | 6d? | 2012-05-10 | 2012-05-17 |  |  |  | 31d |  | start no earlier than 2012-05-10 | 柱子 | 48h |  |
| 261 | 10.2 | 运营修改建议 | 5d | 2012-05-10 | 2012-05-16 |  |  |  | 32d |  | start no earlier than 2012-05-10 | 柱子 | 40h |  |
| 262 | 10.3 | 后台需求 | 3d | 2012-05-10 | 2012-05-14 |  |  |  | 34d |  | start no earlier than 2012-05-10 | 柱子 | 24h |  |
| 263 | 10.4 | 统计需求 | 3d | 2012-05-10 | 2012-05-14 |  |  |  | 29d | 0d | start no earlier than 2012-05-10 | 柱子 | 24h |  |
| 264 | 10.5 | 初期活动需求（活动模块） | 2d | 2012-05-15 | 2012-05-16 | 263 |  |  | 29d | 0d | start no earlier than 2012-05-07 | 柱子 | 16h |  |
| 265 | 10.6 | 公司网站（项目网站） | 1d? | 2012-05-17 | 2012-05-17 | 264 |  |  | 31d |  | start no earlier than 2012-05-07 | 柱子 | 8h |  |
| 266 | 10.7 | 上线准备（平台） | 2d | 2012-05-17 | 2012-05-18 | 264 |  |  | 30d |  | start no earlier than 2012-05-07 | 柱子 | 16h |  |
| 267 | 10.8 | 宣传 | 3d | 2012-05-17 | 2012-05-21 | 264 |  |  | 29d |  | start no earlier than 2012-05-07 | 柱子 | 24h |  |

Notes:
- 250: 最后一周前核对进度
- 267: 图片，文档，帖子，论坛，用户调查，导入用户

| ID | WBS | Task | Duration | Start | Finish | Total slack | Constraint | Resources | Work |
| --- | --- | --- | --- | --- | --- | --- | --- | --- | --- |
| 268 | 11 | **炼金项目第二版功能核对** | 5d? | 2012-05-14 | 2012-05-18 | 30d |  | Eric | 56h |
| 269 | 11.1 | 策划概念讨论 | 1d? | 2012-05-14 | 2012-05-14 | 34d | start no earlier than 2012-05-14 | Eric | 8h |
| 270 | 11.2 | 后续新版本的规划和项目进度以及更进度倒推时间点 | 1d? | 2012-05-18 | 2012-05-18 | 30d | finish no earlier than 2012-05-18 | 老大 | 8h |
