# 魔法项目进度表20120302V

Schedule from MS Project, 2012-04-23 to 2012-06-29, A marks actual dates.

## Calendars

- 标准: Mon-Fri 08:00-12:00, 13:00-17:00; Sat-Sun off. Exceptions (off unless hours are given): 2012-04-28 08:00-12:00, 13:00-17:00.

## Resources

| Resource |
| --- |
| 柱子 |
| 李钊 |
| 张琦 |
| 大强 |
| 立军 |
| 王晔 |
| Eric |
| 姜浩 |
| 章昕 |
| 夏俊杰 |
| 赵子敬 |
| 张诚 |
| 小庆 |
| 陈志荣 |
| 桃子 |
| 八代 |
| 余晓丽 |
| 卢靖 |
| 蒋德仁 |
| 邹慧 |
| 老大 |
| 张黎明 |
| 外包 |
| 宋文卿 |
| 梁新强 |
| 张小庆 |
| LIZ |
| 庆 |
| 诚 |
| 琦 |

## Schedule

| ID | WBS | Task | Duration | Start | Finish | Predecessors | Complete | Remaining | Total slack | Constraint | Resources | Work | Actual work |
| --- | --- | --- | --- | --- | --- | --- | --- | --- | --- | --- | --- | --- | --- |
| 1 | 1 | **5月30日内测版本后续内容进度** | 51d? | 2012-04-23 A | 2012-06-29 |  | 22% | 39.77d? | 0d |  |  | 5283.62h | 1152.04h |
| 2 | 1.1 | **产品功能模块** | 24d? | 2012-04-23 A | 2012-05-23 |  | 47% | 12.66d? | 27d |  |  | 328h | 184h |
| 3 | 1.1.1 | **维修** | 6d? | 2012-05-16 A | 2012-05-23 |  | 92% | 0.48d? | 27d |  |  | 104h | 96h |
| 4 | 1.1.1.1 | 策划 | 1d? | 2012-05-16 A | 2012-05-16 A |  | 100% |  |  | start no earlier than 2012-05-16 | Eric | 8h | 8h |
| 5 | 1.1.1.2 | 核对详细策划 | 1d? | 2012-05-16 A | 2012-05-16 A |  | 100% |  |  | start no earlier than 2012-05-16 | Eric | 8h | 8h |
| 6 | 1.1.1.3 | 美术UI初稿 | 1d? | 2012-05-16 A | 2012-05-16 A |  | 100% |  |  | start no earlier than 2012-05-16 | 余晓丽 | 8h | 8h |
| 7 | 1.1.1.4 | 美术铁匠铺素材 | 1d? | 2012-05-17 | 2012-05-17 | 6 |  |  | 31d |  | 余晓丽 | 8h |  |
| 8 | 1.1.1.5 | 前端 | 4d? | 2012-05-16 A | 2012-05-21 A |  | 100% |  |  | finish no earlier than 2012-05-21 | 张小庆 | 32h | 32h |
| 9 | 1.1.1.6 | 后端 | 0.5d? | 2012-05-16 A | 2012-05-16 A |  | 100% |  |  | start no earlier than 2012-05-16 | 李钊; 章昕 | 8h | 8h |
| 10 | 1.1.1.7 | 测试 | 4d? | 2012-05-18 A | 2012-05-23 A |  | 100% |  |  | finish no earlier than 2012-05-23 | 桃子 | 32h | 32h |
| 11 | 1.1.2 | **强化** | 5d? | 2012-05-17 A | 2012-05-23 A |  | 100% |  |  |  |  | 64h | 64h |
| 12 | 1.1.2.1 | 策划 | 1d? | 2012-05-17 A | 2012-05-17 A |  | 100% |  |  | start no earlier than 2012-05-17 | Eric | 8h | 8h |
| 13 | 1.1.2.2 | 核对详细策划 | 1d? | 2012-05-17 A | 2012-05-17 A |  | 100% |  |  | start no earlier than 2012-05-17 |  |  |  |
| 14 | 1.1.2.3 | 美术UI | 2d? | 2012-05-18 A | 2012-05-21 A |  | 100% |  |  | finish no earlier than 2012-05-21 | 余晓丽 | 16h | 16h |
| 15 | 1.1.2.4 | 前端 | 2d? | 2012-05-21 A | 2012-05-22 A |  | 100% |  |  | finish no earlier than 2012-05-22 | 张诚 | 16h | 16h |
| 16 | 1.1.2.5 | 后端 | 2d? | 2012-05-21 A | 2012-05-22 A |  | 100% |  |  | finish no earlier than 2012-05-22 | 李钊 | 16h | 16h |
| 17 | 1.1.2.6 | 测试 | 1d? | 2012-05-23 A | 2012-05-23 A | 15 | 100% |  |  | finish no earlier than 2012-05-23 | 桃子 | 8h | 8h |
| 18 | 1.1.3 | **佣兵派驻打工（30号之后）** | 1d? | 2012-05-21 A | 2012-05-21 |  | 17% | 0.83d? | 29d |  |  | 40h | 8h |
| 19 | 1.1.3.1 | 策划 | 1d? | 2012-05-21 A | 2012-05-21 A |  | 100% |  |  | start no earlier than 2012-05-21 | Eric | 8h | 8h |
| 20 | 1.1.3.2 | 核对详细策划 | 1d? | 2012-05-21 | 2012-05-21 |  |  |  | 29d | start no earlier than 2012-05-21 |  |  |  |
| 21 | 1.1.3.3 | 美术 | 1d? | 2012-05-21 | 2012-05-21 |  |  |  | 29d | start no earlier than 2012-05-21 | 余晓丽 | 8h |  |
| 22 | 1.1.3.4 | 前端 | 1d? | 2012-05-21 | 2012-05-21 |  |  |  | 29d | start no earlier than 2012-05-21 | 夏俊杰 | 8h |  |
| 23 | 1.1.3.5 | 后端 | 1d? | 2012-05-21 | 2012-05-21 |  |  |  | 29d | start no earlier than 2012-05-21 | 章昕 | 8h |  |
| 24 | 1.1.3.6 | 测试 | 1d? | 2012-05-21 | 2012-05-21 |  |  |  | 29d | start no earlier than 2012-05-21 | 桃子 | 8h |  |

Notes:
- 1: 5月30日版本是封闭内测，只有邀请才能进入
- 14: 周一上午完成

| ID | WBS | Task | Duration | Start | Finish | Remaining | Total slack | Constraint | Resources | Work | Actual work |
| --- | --- | --- | --- | --- | --- | --- | --- | --- | --- | --- | --- |
| 25 | 1.1.4 | **两个新酒馆(需要2个策划确认）** | 1d? | 2012-05-15 | 2012-05-15 |  | 33d |  |  | 24h |  |
| 26 | 1.1.4.1 | 策划 | 1d? | 2012-05-15 | 2012-05-15 |  | 33d | start no earlier than 2012-05-15 | Eric | 8h |  |
| 27 | 1.1.4.2 | 前端 | 1d? | 2012-05-15 | 2012-05-15 |  | 33d | start no earlier than 2012-05-15 | 张小庆 | 8h |  |
| 28 | 1.1.4.3 | 后端 | 1d? | 2012-05-15 | 2012-05-15 |  | 33d | start no earlier than 2012-05-15 | 李钊 | 8h |  |
| 29 | 1.1.5 | **礼物系统** | 18d? | 2012-04-23 | 2012-05-15 |  | 33d |  |  |  |  |
| 30 | 1.1.5.1 | 数值 | 1d? | 2012-05-15 | 2012-05-15 |  | 33d | start no earlier than 2012-05-15 |  |  |  |
| 31 | 1.1.5.2 | 测试 | 1d? | 2012-04-23 | 2012-04-23 |  | 50d | start no earlier than 2012-04-23 |  |  |  |
| 32 | 1.1.6 | **日志消息(30日之后）** | 1d? | 2012-05-15 A | 2012-05-15 | 1d? | 33d |  | Eric; 姜浩 | 56h | 16h |
| 33 | 1.1.6.1 | 姜浩策划 | 1d | 2012-05-15 | 2012-05-15 |  | 33d | start no earlier than 2012-05-15 | 姜浩 | 8h |  |
| 34 | 1.1.6.2 | Eric策划 | 1d? | 2012-05-15 | 2012-05-15 |  | 33d | finish no earlier than 2012-05-15 | Eric | 8h |  |
| 35 | 1.1.6.3 | 前端 | 1d? | 2012-05-15 | 2012-05-15 |  | 33d | start no earlier than 2012-05-15 | 小庆 | 8h |  |
| 36 | 1.1.6.4 | 后端数据 | 1d | 2012-05-15 | 2012-05-15 |  | 33d | finish no earlier than 2012-05-15 | 李钊; 章昕 | 16h |  |
| 37 | 1.1.6.5 | 测试 | 1d? | 2012-05-15 | 2012-05-15 |  | 33d | start no earlier than 2012-05-15 |  |  |  |
| 38 | 1.1.7 | **新手引导(5月30日之后）** | 1d? | 2012-05-15 | 2012-05-15 |  | 33d |  | 姜浩 | 8h |  |
| 39 | 1.1.7.1 | 移植 | 1d? | 2012-05-15 | 2012-05-15 |  | 33d | start no earlier than 2012-05-15 |  |  |  |
| 40 | 1.1.7.2 | 导入礼物的内容 | 1d? | 2012-05-15 | 2012-05-15 |  | 33d | start no earlier than 2012-05-15 |  |  |  |
| 41 | 1.1.7.3 | 测试 | 1d? | 2012-05-15 | 2012-05-15 |  | 33d | start no earlier than 2012-05-15 |  |  |  |
| 42 | 1.1.8 | **每日登陆奖励（5月30日之后）** | 1d? | 2012-05-15 | 2012-05-15 |  | 33d |  | 柱子 | 32h |  |
| 43 | 1.1.8.1 | 审评 | 1d? | 2012-05-15 | 2012-05-15 |  | 33d | start no earlier than 2012-05-15 | Eric; 柱子 | 16h |  |
| 44 | 1.1.8.2 | 移植 | 1d? | 2012-05-15 | 2012-05-15 |  | 33d | start no earlier than 2012-05-15 | 张诚 | 8h |  |
| 45 | 1.1.8.3 | 导入礼物的内容 | 1d? | 2012-05-15 | 2012-05-15 |  | 33d | start no earlier than 2012-05-15 |  |  |  |
| 46 | 1.1.8.4 | 测试 | 1d? | 2012-05-15 | 2012-05-15 |  | 33d | start no earlier than 2012-05-15 |  |  |  |
| 47 | 1.1.9 | **平台FEED** | 1d? | 2012-05-16 | 2012-05-16 |  | 32d |  |  |  |  |
| 48 | 1.1.9.1 | 策划需求 | 1d? | 2012-05-16 | 2012-05-16 |  | 32d | start no earlier than 2012-05-16 |  |  |  |

Notes:
- 29: IPANDA的移植，有HTML系统的通知，有FLASH，有HTML / 4.24 移植第一版完成，需策划详细确认（数值） -- BY 4.25
- 34: 第一版框架已经完成 - 5.2
- 36: 具体包括： 1个场景，一个人物，1个UI初稿
- 39: 具体包括： 1个场景，一个人物，1个UI初稿
- 44: 具体包括： 1个场景，一个人物，1个UI初稿

| ID | WBS | Task | Duration | Start | Finish | Complete | Remaining | Total slack | Constraint | Resources | Work | Actual work |
| --- | --- | --- | --- | --- | --- | --- | --- | --- | --- | --- | --- | --- |
| 49 | 1.2 | **交互模块** | 17d? | 2012-05-15 A | 2012-06-06 | 39% | 10.35d? | 17d |  |  | 280h | 98.61h |
| 50 | 1.2.1 | **交互第一期** | 8d? | 2012-05-15 A | 2012-05-24 A | 100% |  |  |  |  | 32h | 32h |
| 51 | 1.2.1.1 | 测试 | 1d? | 2012-05-15 A | 2012-05-15 A | 100% |  |  | start no earlier than 2012-05-15 | 桃子 | 8h | 8h |
| 52 | 1.2.1.2 | 拉霸形式调整 | 2d? | 2012-05-22 A | 2012-05-23 A | 100% |  |  | start no earlier than 2012-05-22 | 张琦 | 16h | 16h |
| 53 | 1.2.1.3 | 援助技能 | 1d? | 2012-05-24 A | 2012-05-24 A | 100% |  |  | finish no earlier than 2012-05-24 | 王晔 | 8h | 8h |
| 54 | 1.2.2 | **交互第二期-P1** | 11d? | 2012-05-16 A | 2012-05-30 | 35% | 7.17d? | 22d |  |  | 184h | 62.61h |
| 55 | 1.2.2.1 | **策划** | 11d? | 2012-05-16 A | 2012-05-30 | 35% | 7.17d? | 22d |  | 八代 | 184h | 62.61h |
| 56 | 1.2.2.1.1 | 竞技场1V1 | 4d? | 2012-05-16 A | 2012-05-21 A | 100% |  |  | finish no earlier than 2012-05-21 | 八代 | 32h | 32h |
| 57 | 1.2.2.1.2 | 资源抢占 | 2d? | 2012-05-28 | 2012-05-29 |  |  | 23d | finish no earlier than 2012-05-29 | 八代 | 16h |  |
| 58 | 1.2.2.1.3 | 训练营 | 3d | 2012-05-28 | 2012-05-30 |  |  | 22d | finish no earlier than 2012-05-30 | 八代 | 24h |  |
| 59 | 1.2.2.1.4 | 神勇店 | 0.5d? | 2012-05-23 | 2012-05-23 |  |  | 27d | finish no earlier than 2012-05-23 | 八代; Eric | 8h |  |
| 60 | 1.2.2.1.5 | 详细策划优化 | 2d? | 2012-05-24 | 2012-05-25 |  |  | 25d | finish no earlier than 2012-05-25 | 八代 | 16h |  |
| 61 | 1.2.3 | **交互第二期-P2** | 6d? | 2012-05-25 A | 2012-06-01 | 18% | 4.91d? | 20d |  |  | 48h | 4h |
| 62 | 1.2.3.1 | **策划** | 6d? | 2012-05-25 A | 2012-06-01 | 18% | 4.91d? | 20d |  |  | 48h | 4h |
| 63 | 1.2.3.1.1 | **竞技场3V3** | 1d? | 2012-05-25 A | 2012-05-25 | 50% | 0.5d? | 25d |  | 八代 | 16h | 4h |
| 64 | 1.2.3.1.1.1 | 初期第一稿 | 1d? | 2012-05-25 A | 2012-05-25 A | 100% |  |  | start no earlier than 2012-05-25 |  |  |  |
| 65 | 1.2.3.1.1.2 | 第二稿修改 | 1d? | 2012-05-25 | 2012-05-25 |  |  | 25d | start no earlier than 2012-05-25 | 八代 | 8h |  |
| 66 | 1.2.3.1.2 | 世界BOSS | 2d | 2012-05-31 | 2012-06-01 |  |  | 20d | start no earlier than 2012-05-31 | 八代 | 16h |  |
| 67 | 1.2.3.1.3 | 声望店 | 0.5d? | 2012-05-28 | 2012-05-28 |  |  | 24.5d | start no earlier than 2012-05-28 | 八代; Eric | 8h |  |
| 68 | 1.2.3.1.4 | 详细策划优化 | 1d? | 2012-05-29 | 2012-05-29 |  |  | 23d | start no earlier than 2012-05-29 | 八代 | 8h |  |
| 69 | 1.2.4 | **交互第二期-P3** | 1d? | 2012-06-06 | 2012-06-06 |  |  | 17d |  |  | 8h |  |
| 70 | 1.2.4.1 | **策划** | 1d? | 2012-06-06 | 2012-06-06 |  |  | 17d |  |  | 8h |  |
| 71 | 1.2.4.1.1 | 详细策划优化 | 1d? | 2012-06-06 | 2012-06-06 |  |  | 17d | start no earlier than 2012-06-06 | 八代 | 8h |  |
| 72 | 1.2.5 | **交互第三期-待定** | 1d? | 2012-05-15 | 2012-05-15 |  |  | 33d |  |  | 8h |  |
| 73 | 1.2.5.1 | 策划 | 1d? | 2012-05-15 | 2012-05-15 |  |  | 33d | start no earlier than 2012-05-15 | 八代 | 8h |  |

Notes:
- 53: 差美术 / 美术已完成，前端调整在5.24完成 -- 5.23
- 56: 延迟至 21日核对
- 59: 延迟半天，周四上午11:00核对3V3 -- 5.23

| ID | WBS | Task | Duration | Start | Finish | Predecessors | Complete | Remaining | Total slack | Constraint | Resources | Work | Actual work |
| --- | --- | --- | --- | --- | --- | --- | --- | --- | --- | --- | --- | --- | --- |
| 74 | 1.3 | **统计平台，LOG需求** | 7d? | 2012-05-16 A | 2012-05-24 |  | 60% | 2.8d? | 26d |  |  | 116h | 44h |
| 75 | 1.3.1 | 产品和运营需求核对 | 0.5d? | 2012-05-16 A | 2012-05-16 A |  | 100% |  |  | start no earlier than 2012-05-16 | Eric; 姜浩; 柱子 | 12h | 12h |
| 76 | 1.3.2 | 基础类型的Log需求-运营 | 2d? | 2012-05-16 A | 2012-05-18 A | 75 | 100% |  |  | start no earlier than 2012-05-16 | 柱子 | 16h | 16h |
| 77 | 1.3.3 | 产品级别的Log需求-产品 | 1d? | 2012-05-24 A | 2012-05-24 A | 75 | 100% |  |  | finish no earlier than 2012-05-24 | Eric; 姜浩 | 16h | 16h |
| 78 | 1.3.4 | **后端开发** | 3d? | 2012-05-21 | 2012-05-23 |  |  |  | 27d |  | 李钊; 章昕 | 72h |  |
| 79 | 1.3.4.1 | 进度核对 | 0.33d? | 2012-05-21 | 2012-05-21 |  |  |  | 29.67d | start no earlier than 2012-05-21 | 立军; 李钊; 章昕 | 8h |  |
| 80 | 1.3.4.2 | 基础类型统计 | 1d? | 2012-05-23 | 2012-05-23 |  |  |  | 27d | start no earlier than 2012-05-23 | 章昕 | 8h |  |
| 81 | 1.3.4.3 | 基础类型统计 | 1d? | 2012-05-23 | 2012-05-23 |  |  |  | 27d | start no earlier than 2012-05-23 | 李钊 | 8h |  |
| 82 | 1.4 | **剧情和任务内容模块** | 10d? | 2012-05-17 A | 2012-05-30 |  | 52% | 4.78d? | 22d |  |  | 164h | 72h |
| 83 | 1.4.1 | **对白完成** | 2d? | 2012-05-17 A | 2012-05-18 |  | 80% | 0.4d? | 30d |  | 姜浩 | 40h | 36h |
| 84 | 1.4.1.1 | **主线** | 2d? | 2012-05-17 A | 2012-05-18 |  | 75% | 0.5d? | 30d |  |  | 16h | 12h |
| 85 | 1.4.1.1.1 | 矿洞 | 1d? | 2012-05-17 A | 2012-05-17 A |  | 100% |  |  | start no earlier than 2012-05-17 | 姜浩 | 8h | 8h |
| 86 | 1.4.1.1.2 | 王城 | 1d? | 2012-05-18 A | 2012-05-18 |  | 50% | 0.5d? | 30d | start no earlier than 2012-05-18 | 姜浩 | 8h | 4h |
| 87 | 1.4.1.2 | 支线-周五确认矿洞进度 | 0.5d? | 2012-05-18 A | 2012-05-18 A | 85 | 100% |  |  | start no earlier than 2012-05-16 | 姜浩; Eric | 8h | 8h |
| 88 | 1.4.2 | **脚本完成** | 6.5d? | 2012-05-18 A | 2012-05-28 | 87 | 60% | 2.6d? | 24d |  | 姜浩 | 100h | 36h |
| 89 | 1.4.2.1 | 矿洞-19个剧情脚本,3个对白 | 1d? | 2012-05-18 A | 2012-05-21 A |  | 100% |  |  | start no earlier than 2012-05-18 | 姜浩 | 8h | 8h |
| 90 | 1.4.2.2 | 触发点核对 | 1d? | 2012-05-28 A | 2012-05-28 A |  | 100% |  |  | finish no earlier than 2012-05-28 | 姜浩; 李钊 | 16h | 16h |
| 91 | 1.4.2.3 | 任务-剧情-对白 的关联性调试 | 1d | 2012-05-28 A | 2012-05-28 A |  | 100% |  |  | finish no earlier than 2012-05-28 | 姜浩 | 8h | 8h |
| 92 | 1.4.2.4 | 剧情触发战斗的功能核对 | 1d? | 2012-05-25 | 2012-05-25 |  |  |  | 25d | start no earlier than 2012-05-25 | 姜浩 | 8h |  |
| 93 | 1.4.2.5 | 新手引导剧情 | 1d? | 2012-05-25 | 2012-05-25 |  |  |  | 25d | start no earlier than 2012-05-25 | 姜浩 | 8h |  |
| 94 | 1.4.3 | **支线任务的添加** | 2d? | 2012-05-29 | 2012-05-30 |  |  |  | 22d |  |  | 16h |  |
| 95 | 1.4.3.1 | 到矿洞的支线任务 | 1d? | 2012-05-29 | 2012-05-29 |  |  |  | 23d | finish no earlier than 2012-05-29 | 姜浩 | 8h |  |
| 96 | 1.4.3.2 | 矿洞配方掉落，任务奖励 | 1d? | 2012-05-30 | 2012-05-30 |  |  |  | 22d | start no earlier than 2012-05-30 | 姜浩 | 8h |  |
| 97 | 1.4.4 | **NPC头像的替换** | 2d? | 2012-05-25 A | 2012-05-28 |  | 50% | 1d? | 24d |  |  | 8h |  |
| 98 | 1.4.4.1 | 美术制作 | 1d? | 2012-05-25 A | 2012-05-25 A |  | 100% |  |  | start no earlier than 2012-05-25 |  |  |  |
| 99 | 1.4.4.2 | 策划替换 | 1d? | 2012-05-28 | 2012-05-28 |  |  |  | 24d | start no earlier than 2012-05-28 | 姜浩 | 8h |  |

Notes:
- 75: 半天时间 产品和运营 核对需求
- 77: 周四上午
- 83: 矿洞，村子 完成

| ID | WBS | Task | Duration | Start | Finish | Complete | Remaining | Total slack | Constraint | Resources | Work | Actual work |
| --- | --- | --- | --- | --- | --- | --- | --- | --- | --- | --- | --- | --- |
| 100 | 1.5 | **数值模块** | 6d? | 2012-05-21 | 2012-05-28 |  |  | 24d |  |  | 96h |  |
| 101 | 1.5.1 | 酒馆升级 | 4d? | 2012-05-21 | 2012-05-24 |  |  | 26d | finish no earlier than 2012-05-24 | Eric | 32h |  |
| 102 | 1.5.2 | 自宅升级 | 4d? | 2012-05-21 | 2012-05-24 |  |  | 26d | finish no earlier than 2012-05-24 | Eric | 32h |  |
| 103 | 1.5.3 | 主角晋级 | 4d? | 2012-05-21 | 2012-05-24 |  |  | 26d | finish no earlier than 2012-05-24 | Eric | 32h |  |
| 104 | 1.5.4 | 维修，铁匠铺 | 1d? | 2012-05-23 | 2012-05-23 |  |  | 27d | start no earlier than 2012-05-23 |  |  |  |
| 105 | 1.5.5 | 强化 | 1d? | 2012-05-23 | 2012-05-23 |  |  | 27d | start no earlier than 2012-05-23 |  |  |  |
| 106 | 1.5.6 | 佣兵位置扩展 | 1d? | 2012-05-28 | 2012-05-28 |  |  | 24d | start no earlier than 2012-05-28 |  |  |  |
| 107 | 1.6 | **副本模块** | 5d? | 2012-05-29 | 2012-06-04 |  |  | 19d |  |  |  |  |
| 108 | 1.6.1 | **制作流程** | 5d? | 2012-05-29 | 2012-06-04 |  |  | 19d |  |  |  |  |
| 109 | 1.6.1.1 | **策划** | 2d? | 2012-05-29 | 2012-05-30 |  |  | 22d |  |  |  |  |
| 110 | 1.6.1.1.1 | 简单核对 | 0.5d? | 2012-05-29 | 2012-05-29 |  |  | 23.5d | start no earlier than 2012-05-29 |  |  |  |
| 111 | 1.6.1.1.2 | 场景概念图 | 1d? | 2012-05-29 | 2012-05-29 |  |  | 23d | start no earlier than 2012-05-29 |  |  |  |
| 112 | 1.6.1.1.3 | 详细需求分析，文档 | 2d | 2012-05-29 | 2012-05-30 |  |  | 22d | start no earlier than 2012-05-29 |  |  |  |
| 113 | 1.6.1.1.4 | 剧情和任务的文字 | 2d | 2012-05-29 | 2012-05-30 |  |  | 22d | start no earlier than 2012-05-29 |  |  |  |
| 114 | 1.6.1.2 | **美术** | 5d | 2012-05-29 | 2012-06-04 |  |  | 19d |  |  |  |  |
| 115 | 1.6.1.2.1 | 美术制作 | 5d | 2012-05-29 | 2012-06-04 |  |  | 19d | start no earlier than 2012-05-29 |  |  |  |
| 116 | 1.6.1.3 | **策划** | 3d? | 2012-05-29 | 2012-05-31 |  |  | 21d |  |  |  |  |
| 117 | 1.6.1.3.1 | 副本编辑 | 3d | 2012-05-29 | 2012-05-31 |  |  | 21d | start no earlier than 2012-05-29 |  |  |  |
| 118 | 1.6.1.3.2 | 怪物摆放 | 1d? | 2012-05-29 | 2012-05-29 |  |  | 23d | start no earlier than 2012-05-29 |  |  |  |
| 119 | 1.6.1.3.3 | 任务和剧情的编辑 | 3d | 2012-05-29 | 2012-05-31 |  |  | 21d | start no earlier than 2012-05-29 |  |  |  |
| 120 | 1.6.1.4 | 调试 | 5d | 2012-05-29 | 2012-06-04 |  |  | 19d | start no earlier than 2012-05-29 |  |  |  |
| 121 | 1.7 | **美术模块** | 20d? | 2012-05-15 A | 2012-06-11 | 42% | 11.69d? | 14d |  |  | 1336h | 578h |
| 122 | 1.7.1 | **UI** | 10d? | 2012-05-16 A | 2012-05-29 | 17% | 8.33d? | 23d |  |  | 56h | 16h |
| 123 | 1.7.1.1 | UI表现效果优化核对 | 1d? | 2012-05-16 A | 2012-05-16 A | 100% |  |  | finish no earlier than 2012-05-16 | 大强; 余晓丽 | 16h | 16h |

Notes:
- 100: 游戏内一些小功能的具体数值，策划需要给到
- 122: UI表现效果，UI特效 没有，需要补充优化； / UE交互已经和策划核对过，暂时OK； / 美观度方便，请大强安排王晔一并参与，配合优化； / 5月15日 余晓丽 确认下UI替换是否已经都完成 -- 5.15

| ID | WBS | Task | Duration | Start | Finish | Predecessors | Complete | Remaining | Total slack | Constraint | Resources | Work | Actual work |
| --- | --- | --- | --- | --- | --- | --- | --- | --- | --- | --- | --- | --- | --- |
| 124 | 1.7.1.2 | **UI特效优化** | 1d? | 2012-05-28 | 2012-05-28 | 123 |  |  | 24d |  |  | 8h |  |
| 125 | 1.7.1.2.1 | 进度安排 | 1d? | 2012-05-28 | 2012-05-28 |  |  |  | 24d | start no earlier than 2012-05-28 | 宋文卿 | 8h |  |
| 126 | 1.7.1.3 | **整体美观度** | 2d? | 2012-05-28 | 2012-05-29 |  |  |  | 23d |  |  | 16h |  |
| 127 | 1.7.1.3.1 | 美术制作 | 1d? | 2012-05-28 | 2012-05-28 |  |  |  | 24d | start no earlier than 2012-05-28 | 宋文卿 | 8h |  |
| 128 | 1.7.1.3.2 | 特效添加 | 1d? | 2012-05-29 | 2012-05-29 |  |  |  | 23d | finish no earlier than 2012-05-29 | 张琦 | 8h |  |
| 129 | 1.7.1.4 | 主界面图标 | 2d? | 2012-05-28 | 2012-05-29 |  |  |  | 23d | finish no earlier than 2012-05-29 | 王晔 | 16h |  |
| 130 | 1.7.2 | **特效** | 7d? | 2012-05-16 A | 2012-05-24 A |  | 100% |  |  |  |  | 56h | 56h |
| 131 | 1.7.2.1 | 技能特效 | 1d? | 2012-05-16 A | 2012-05-16 A |  | 100% |  |  | finish no earlier than 2012-05-16 | 宋文卿; 夏俊杰 | 16h | 16h |
| 132 | 1.7.2.2 | 特效优化方案 | 0.5d? | 2012-05-16 A | 2012-05-16 A |  | 100% |  |  | start no earlier than 2012-05-16 | 宋文卿; 大强 | 8h | 8h |
| 133 | 1.7.2.3 | **好友援助技能** | 4d? | 2012-05-21 A | 2012-05-24 A |  | 100% |  |  |  |  | 32h | 32h |
| 134 | 1.7.2.3.1 | 特效 | 2d? | 2012-05-21 A | 2012-05-22 A |  | 100% |  |  | start no earlier than 2012-05-21 | 宋文卿 | 16h | 16h |
| 135 | 1.7.2.3.2 | 图标-8个 | 2d? | 2012-05-23 A | 2012-05-24 A |  | 100% |  |  | start no earlier than 2012-05-23 | 王晔 | 16h | 16h |
| 136 | 1.7.3 | **动作** | 11d? | 2012-05-15 A | 2012-05-29 |  | 92% | 0.92d? | 23d |  |  | 96h | 88h |
| 137 | 1.7.3.1 | **人物** | 11d? | 2012-05-15 A | 2012-05-29 |  | 91% | 1d? | 23d |  |  | 88h | 80h |
| 138 | 1.7.3.1.1 | 25个NPC制作 | 4d? | 2012-05-15 A | 2012-05-18 A |  | 100% |  |  | finish no earlier than 2012-05-30 | 赵子敬 | 32h | 32h |
| 139 | 1.7.3.1.2 | 人物头像 | 6d? | 2012-05-18 A | 2012-05-25 A |  | 100% |  |  | start no earlier than 2012-05-18 | 赵子敬 | 48h | 48h |
| 140 | 1.7.3.1.3 | NPC头像 | 1d? | 2012-05-29 | 2012-05-29 |  |  |  | 23d | start no earlier than 2012-05-29 | 大强 | 8h |  |
| 141 | 1.7.3.2 | 战斗动作优化 | 1d? | 2012-05-15 A | 2012-05-15 A |  | 100% |  |  | start no earlier than 2012-05-15 | 赵子敬 | 8h | 8h |
| 142 | 1.7.4 | **道具** | 12d? | 2012-05-15 A | 2012-05-30 |  | 25% | 9d? | 22d |  |  | 24h |  |
| 143 | 1.7.4.1 | 道具制作-已完成 | 1d? | 2012-05-15 A | 2012-05-15 A |  | 100% |  |  | start no earlier than 2012-05-15 |  |  |  |
| 144 | 1.7.4.2 | **工作台-剩余6个** | 1d? | 2012-05-30 | 2012-05-30 |  |  |  | 22d |  | 蒋德仁 | 16h |  |
| 145 | 1.7.4.2.1 | 缝纫机和铁毡 | 1d? | 2012-05-30 | 2012-05-30 |  |  |  | 22d | finish no earlier than 2012-05-30 | 蒋德仁 | 8h |  |
| 146 | 1.7.4.3 | **任务道具-信、材料之类-30号之后** | 2d? | 2012-05-25 | 2012-05-28 |  |  |  | 24d |  |  | 8h |  |
| 147 | 1.7.4.3.1 | 策划需求 | 1d? | 2012-05-28 | 2012-05-28 |  |  |  | 24d | start no earlier than 2012-05-28 | 姜浩 | 8h |  |
| 148 | 1.7.4.3.2 | 美术制作 | 1d? | 2012-05-25 | 2012-05-25 |  |  |  | 25d | start no earlier than 2012-05-25 |  |  |  |

Notes:
- 125: 美术进度初步核对已完成，预计在 23号， / 周一需要跟张琦再次核对，同步进度 -- 5.18
- 126: 大强安排王晔参加，配合修改
- 130: 表现力不强，需要优化
- 131: 5月16日全部替换完成 -- 5.15
- 137: 5月30日 NPC全部完成， / 赵子敬每天做2个，每周四上一批人物，节点为 5月 17/24/31 。 / 超级佣兵 6月20日完成 。 -- 5.15
- 140: 外包已完成，需要大强安排加一下类名，把新版的素材上传到服务器 - 5.29
- 141: 战斗动作已完成，但希望表现可以更强，动作幅度，战斗动作，人物死亡动作 等 能够继续优化
- 143: 已经全部替换上去了

| ID | WBS | Task | Duration | Start | Finish | Predecessors | Complete | Remaining | Total slack | Free slack | Constraint | Resources | Work | Actual work |
| --- | --- | --- | --- | --- | --- | --- | --- | --- | --- | --- | --- | --- | --- | --- |
| 149 | 1.7.5 | **场景** | 20d? | 2012-05-15 A | 2012-06-11 |  | 31% | 13.76d? | 14d |  |  |  | 672h | 272h |
| 150 | 1.7.5.1 | **王城** | 14d? | 2012-05-15 A | 2012-06-01 |  | 8% | 12.86d? | 20d |  |  |  | 216h | 32h |
| 151 | 1.7.5.1.1 | 美术制作 | 5d? | 2012-05-15 | 2012-05-21 |  |  |  | 29d |  | finish no earlier than 2012-05-21 | 卢靖; 邹慧; 蒋德仁 | 120h |  |
| 152 | 1.7.5.1.2 | 监狱部分 | 0.33d? | 2012-05-22 A | 2012-05-22 A | 151 | 100% |  |  |  | start no earlier than 2012-05-21 | 卢靖; 邹慧; 蒋德仁 | 8h | 8h |
| 153 | 1.7.5.1.3 | 教堂部分 | 1d? | 2012-05-22 A | 2012-05-23 A | 152 | 100% |  |  |  | start no earlier than 2012-05-21 | 卢靖; 邹慧; 蒋德仁 | 24h | 24h |
| 154 | 1.7.5.1.4 | **美术调整** | 2d? | 2012-05-25 | 2012-05-28 | 153 |  |  | 24d |  |  |  | 32h |  |
| 155 | 1.7.5.1.4.1 | 调整需求核对 | 1d? | 2012-05-25 | 2012-05-25 |  |  |  | 25d |  | start no earlier than 2012-05-25 | 陈志荣 | 8h |  |
| 156 | 1.7.5.1.4.2 | 王城地形块 | 1d? | 2012-05-28 | 2012-05-28 |  |  |  | 24d |  | finish no earlier than 2012-05-28 | 邹慧 | 8h |  |
| 157 | 1.7.5.1.4.3 | 监狱-颜色 | 1d? | 2012-05-28 | 2012-05-28 |  |  |  | 24d |  | finish no earlier than 2012-05-28 | 邹慧 | 8h |  |
| 158 | 1.7.5.1.4.4 | 装饰 | 1d? | 2012-05-28 | 2012-05-28 |  |  |  | 24d |  | finish no earlier than 2012-05-28 | 蒋德仁 | 8h |  |
| 159 | 1.7.5.1.5 | **副本编辑** | 4d? | 2012-05-29 | 2012-06-01 |  |  |  | 20d |  |  |  | 32h |  |
| 160 | 1.7.5.1.5.1 | 监狱 | 3d? | 2012-05-30 | 2012-06-01 |  |  |  | 20d |  | start no earlier than 2012-05-30 | 陈志荣 | 24h |  |
| 161 | 1.7.5.1.5.2 | 王城 | 1d? | 2012-05-29 | 2012-05-29 |  |  |  | 23d |  | finish no earlier than 2012-05-29 |  |  |  |
| 162 | 1.7.5.1.5.3 | 教堂 | 1d? | 2012-05-29 | 2012-05-29 |  |  |  | 22d | 0d | finish no earlier than 2012-05-29 | 陈志荣 | 8h |  |
| 163 | 1.7.5.1.6 | 修改优化 | 1d? | 2012-05-30 | 2012-05-30 | 162 |  |  | 22d |  | start no earlier than 2012-05-15 |  |  |  |
| 164 | 1.7.5.2 | **翡翠森林** | 13d? | 2012-05-21 A | 2012-06-06 |  | 50% | 6.5d? | 17d |  |  |  | 216h | 120h |
| 165 | 1.7.5.2.1 | 美术制作 | 5d? | 2012-05-21 A | 2012-05-25 A |  | 100% |  |  |  | finish no earlier than 2012-05-25 | 卢靖; 邹慧; 蒋德仁 | 120h | 120h |
| 166 | 1.7.5.2.2 | **副本编辑** | 8d? | 2012-05-28 | 2012-06-06 | 165 |  |  | 17d |  |  | 陈志荣 | 96h |  |
| 167 | 1.7.5.2.2.1 | 森林初稿 | 3d? | 2012-06-04 | 2012-06-06 |  |  |  | 17d |  | finish no earlier than 2012-06-06 | 陈志荣 | 24h |  |
| 168 | 1.7.5.2.2.2 | 摆放-怪物，NPC | 1d? | 2012-05-28 | 2012-05-28 |  |  |  | 24d |  | start no earlier than 2012-05-28 | 陈志荣 | 8h |  |
| 169 | 1.7.5.2.3 | 修改优化 | 1d? | 2012-05-30 | 2012-05-30 |  |  |  | 22d |  | start no earlier than 2012-05-30 |  |  |  |
| 170 | 1.7.5.3 | **沼泽** | 16d? | 2012-05-21 A | 2012-06-11 |  | 50% | 8d? | 14d |  |  |  | 240h | 120h |
| 171 | 1.7.5.3.1 | 美术制作 | 5d? | 2012-05-21 A | 2012-05-25 A |  | 100% |  |  |  | finish no earlier than 2012-05-25 | 卢靖; 邹慧; 蒋德仁 | 120h | 120h |
| 172 | 1.7.5.3.2 | **副本编辑** | 11d? | 2012-05-28 | 2012-06-11 | 171 |  |  | 14d |  |  | 陈志荣 | 120h |  |
| 173 | 1.7.5.3.2.1 | 沼泽初稿 | 3d | 2012-06-07 | 2012-06-11 |  |  |  | 14d |  | start no earlier than 2012-06-07 | 陈志荣 | 24h |  |
| 174 | 1.7.5.3.2.2 | 摆放-怪物，NPC | 1d? | 2012-05-28 | 2012-05-28 |  |  |  | 24d |  | start no earlier than 2012-05-28 | 陈志荣 | 8h |  |
| 175 | 1.7.5.3.3 | 修改优化 | 1d? | 2012-05-30 | 2012-05-30 |  |  |  | 22d |  | start no earlier than 2012-05-30 |  |  |  |

| ID | WBS | Task | Duration | Start | Finish | Complete | Remaining | Total slack | Constraint | Resources | Work | Actual work |
| --- | --- | --- | --- | --- | --- | --- | --- | --- | --- | --- | --- | --- |
| 176 | 1.7.6 | **战斗背景-7个** | 4d? | 2012-05-28 | 2012-05-31 |  |  | 21d |  | 卢靖 | 192h |  |
| 177 | 1.7.6.1 | **卡尔萨斯** | 2d? | 2012-05-28 | 2012-05-29 |  |  | 23d |  | 卢靖 | 24h |  |
| 178 | 1.7.6.1.1 | 监狱（副本） | 1d? | 2012-05-28 | 2012-05-28 |  |  | 24d | start no earlier than 2012-05-28 | 卢靖 | 8h |  |
| 179 | 1.7.6.1.2 | 教堂（副本） | 2d? | 2012-05-28 | 2012-05-29 |  |  | 23d | start no earlier than 2012-05-28 |  |  |  |
| 180 | 1.7.6.2 | 矮人矿洞 | 2d? | 2012-05-29 | 2012-05-30 |  |  | 22d | finish no earlier than 2012-05-30 | 卢靖 | 16h |  |
| 181 | 1.7.6.3 | 主角村子（PK、剧情） | 1d? | 2012-05-29 | 2012-05-29 |  |  | 23d | start no earlier than 2012-05-29 | 卢靖 | 8h |  |
| 182 | 1.7.6.4 | 翡翠森林 | 1d? | 2012-05-30 | 2012-05-30 |  |  | 22d | start no earlier than 2012-05-30 | 卢靖 | 8h |  |
| 183 | 1.7.6.5 | 泡沫沼泽 | 1d? | 2012-05-30 | 2012-05-30 |  |  | 22d | start no earlier than 2012-05-30 | 卢靖 | 8h |  |
| 184 | 1.7.6.6 | 墨堡 | 1d? | 2012-05-31 | 2012-05-31 |  |  | 21d | start no earlier than 2012-05-31 | 卢靖 | 8h |  |
| 185 | 1.7.6.7 | 古代遗迹 | 1d? | 2012-05-31 | 2012-05-31 |  |  | 21d | start no earlier than 2012-05-31 | 卢靖 | 8h |  |
| 186 | 1.7.6.8 | 雪漫镇 | 1d? | 2012-05-31 | 2012-05-31 |  |  | 21d | start no earlier than 2012-05-31 | 卢靖 | 8h |  |
| 187 | 1.7.6.9 | 冰之墙堡 | 1d? | 2012-05-31 | 2012-05-31 |  |  | 21d | start no earlier than 2012-05-31 | 卢靖 | 8h |  |
| 188 | 1.7.6.10 | 兽人码头 | 1d? | 2012-05-31 | 2012-05-31 |  |  | 21d | start no earlier than 2012-05-31 | 卢靖 | 8h |  |
| 189 | 1.7.6.11 | 龙顶山 | 1d? | 2012-05-31 | 2012-05-31 |  |  | 21d | start no earlier than 2012-05-31 | 卢靖 | 8h |  |
| 190 | 1.7.6.12 | 黑暗村 | 1d? | 2012-05-31 | 2012-05-31 |  |  | 21d | start no earlier than 2012-05-31 | 卢靖 | 8h |  |
| 191 | 1.7.6.13 | 黑森林 | 1d? | 2012-05-31 | 2012-05-31 |  |  | 21d | start no earlier than 2012-05-31 | 卢靖 | 8h |  |
| 192 | 1.7.6.14 | 尼玛神庙 | 1d? | 2012-05-31 | 2012-05-31 |  |  | 21d | start no earlier than 2012-05-31 | 卢靖 | 8h |  |
| 193 | 1.7.6.15 | 精灵城 | 1d? | 2012-05-31 | 2012-05-31 |  |  | 21d | start no earlier than 2012-05-31 | 卢靖 | 8h |  |
| 194 | 1.7.6.16 | 黑河谷 | 1d? | 2012-05-31 | 2012-05-31 |  |  | 21d | start no earlier than 2012-05-31 | 卢靖 | 8h |  |
| 195 | 1.7.6.17 | 龙骨墓园 | 1d? | 2012-05-31 | 2012-05-31 |  |  | 21d | start no earlier than 2012-05-31 | 卢靖 | 8h |  |
| 196 | 1.7.7 | **世界地图** | 6d? | 2012-05-21 A | 2012-05-28 | 63% | 2.25d? | 24d |  |  | 48h | 30h |
| 197 | 1.7.7.1 | 世界地图优化 | 6d? | 2012-05-21 A | 2012-05-28 | 63% | 2.25d? | 24d | finish no earlier than 2012-05-28 | 大强 | 48h | 30h |
| 198 | 1.7.8 | **技能卷轴** | 10d? | 2012-05-17 A | 2012-05-30 A | 100% |  |  |  |  | 80h | 80h |
| 199 | 1.7.8.1 | 美术制作 | 10d? | 2012-05-17 A | 2012-05-30 A | 100% |  |  | start no earlier than 2012-05-17 | 王晔 | 80h | 80h |

Notes:
- 198: 240个文件（一天），28个卷轴图标（？周四核对进度）
- 199: 王晔备选完成

| ID | WBS | Task | Duration | Start | Finish | Predecessors | Complete | Remaining | Total slack | Constraint | Resources | Work | Actual work |
| --- | --- | --- | --- | --- | --- | --- | --- | --- | --- | --- | --- | --- | --- |
| 200 | 1.7.9 | **铁匠铺** | 1d? | 2012-05-28 A | 2012-05-28 |  | 50% | 0.5d? | 24d |  |  | 8h | 4h |
| 201 | 1.7.9.1 | 美术制作-放村子 | 1d? | 2012-05-28 A | 2012-05-28 |  | 50% | 0.5d? | 24d | start no earlier than 2012-05-15 | 卢靖 | 8h | 4h |
| 202 | 1.7.10 | **LOGO，片头，场景切换，串场内容** | 9d? | 2012-05-18 | 2012-05-30 |  |  |  | 22d |  |  | 72h |  |
| 203 | 1.7.10.1 | 美术制作 | 9d? | 2012-05-18 | 2012-05-30 |  |  |  | 22d | start no earlier than 2012-05-18 | 大强 | 72h |  |
| 204 | 1.7.11 | **战斗动画和特效调整-方法调整** | 2d? | 2012-05-18 A | 2012-05-21 A |  | 100% |  |  |  |  | 32h | 32h |
| 205 | 1.7.11.1 | 插入特效时间点，停顿点 等 | 1d? | 2012-05-18 A | 2012-05-18 A |  | 100% |  |  | start no earlier than 2012-05-18 | 大强; 夏俊杰 | 16h | 16h |
| 206 | 1.7.11.2 | 演示完成 | 0.67d? | 2012-05-21 A | 2012-05-21 A |  | 100% |  |  | start no earlier than 2012-05-21 | 大强; 夏俊杰; Eric | 16h | 16h |
| 207 | 1.7.11.3 | 核对是否需要修改，程序、美术、策划 三方核对 | 1d? | 2012-05-21 A | 2012-05-21 A |  | 100% |  |  | start no earlier than 2012-05-21 |  |  |  |
| 208 | 1.8 | 替换素材的时间和流程 核对？ | 1d? | 2012-05-15 A | 2012-05-15 A |  | 100% |  |  | start no earlier than 2012-05-15 |  |  |  |
| 209 | 1.9 | **其他** | 14d? | 2012-05-15 A | 2012-06-01 |  | 24% | 10.67d? | 20d |  |  | 168h | 48h |
| 210 | 1.9.1 | **剧情编辑器的开发** | 1d? | 2012-05-29 A | 2012-05-29 |  | 50% | 0.5d? | 23d |  |  | 16h | 8h |
| 211 | 1.9.1.1 | 需求核对 | 1d? | 2012-05-29 A | 2012-05-29 A |  | 100% |  |  | start no earlier than 2012-05-29 | 张琦 | 8h | 8h |
| 212 | 1.9.1.2 | 开发 | 1d? | 2012-05-29 | 2012-05-29 |  |  |  | 23d | start no earlier than 2012-05-29 | 张琦 | 8h |  |
| 213 | 1.9.2 | **副本编辑器的修改** | 1d? | 2012-05-29 | 2012-05-29 |  |  |  | 23d |  |  | 16h |  |
| 214 | 1.9.2.1 | 保存后可以继续编辑 | 1d? | 2012-05-29 | 2012-05-29 |  |  |  | 23d | start no earlier than 2012-05-29 | 张琦 | 8h |  |
| 215 | 1.9.2.2 | 批处理，整体迁移 | 1d? | 2012-05-29 | 2012-05-29 |  |  |  | 23d | start no earlier than 2012-05-29 | 张琦 | 8h |  |
| 216 | 1.9.3 | **技能编辑器的开发** | 1d? | 2012-05-28 | 2012-05-28 |  |  |  | 24d |  |  | 8h |  |
| 217 | 1.9.3.1 | 需求 | 1d? | 2012-05-28 | 2012-05-28 |  |  |  | 24d | start no earlier than 2012-05-28 | Eric | 8h |  |
| 218 | 1.9.4 | **30号的进度核对** | 2d? | 2012-05-28 | 2012-05-29 |  |  |  | 23d |  |  | 24h |  |
| 219 | 1.9.4.1 | 6月份进度核对 | 2d? | 2012-05-28 | 2012-05-29 |  |  |  | 23d | finish no earlier than 2012-05-29 | 老大 | 16h |  |
| 220 | 1.9.4.2 | 炼金下个版本的内容 | 1d? | 2012-05-28 | 2012-05-28 |  |  |  | 24d | start no earlier than 2012-05-28 | 老大 | 8h |  |
| 221 | 1.9.5 | 剧情任务模块的迷雾默认全部展开 | 5d? | 2012-05-21 | 2012-05-25 |  |  |  | 25d | start no earlier than 2012-05-21 | 夏俊杰 | 40h |  |
| 222 | 1.9.6 | 各模块优化-每周四上午核对 | 1d? | 2012-05-24 A | 2012-05-24 A |  | 100% |  |  | start no earlier than 2012-05-24 | Eric | 8h | 8h |
| 223 | 1.9.7 | CID的号码冲突如何解决，类名统一管理 | 1d? | 2012-05-15 A | 2012-05-15 A |  | 100% |  |  | start no earlier than 2012-05-15 |  |  |  |
| 224 | 1.9.8 | 测服设立 | 1d? | 2012-05-28 A | 2012-05-28 A | 221 | 100% |  |  | finish no earlier than 2012-05-28 | 张黎明; 立军 | 16h | 16h |
| 225 | 1.9.9 | 应用发布-限额25个 | 1d? | 2012-05-28 A | 2012-05-28 A |  | 100% |  |  | start no earlier than 2012-05-28 | 立军; 章昕 | 16h | 16h |
| 226 | 1.9.10 | 下个版本的内容确认 | 3d? | 2012-05-28 | 2012-05-30 |  |  |  | 22d | finish no earlier than 2012-05-30 | LIZ | 24h |  |
| 227 | 1.9.11 | 新手引导和FEED-6月初 | 1d? | 2012-06-01 | 2012-06-01 |  |  |  | 20d | start no earlier than 2012-06-01 |  |  |  |

Notes:
- 207: 放在三十号以后调整
- 208: （16日核对UI，17日特效和战斗动作，模拟器，以上线版本来确认下一步修改的内容，策划，美术）； / 美术替换素材之后，由陈志荣要求美术这里核对下替换的素材是否正确
- 224: 28日设立测服，发布应用需要半天时间，常规接口已完成
- 226: 5月第三周下个版本的内容和时间点确认完成

| ID | WBS | Task | Duration | Start | Finish | Predecessors | Complete | Remaining | Total slack | Free slack | Constraint | Resources | Work | Actual work |
| --- | --- | --- | --- | --- | --- | --- | --- | --- | --- | --- | --- | --- | --- | --- |
| 228 | 1.10 | **音乐 (30号之后)** | 17d? | 2012-05-08 | 2012-05-30 |  |  |  | 22d |  |  | Eric | 168h |  |
| 229 | 1.10.1 | 一个副本一个音乐，7个 | 4d? | 2012-05-25 | 2012-05-30 |  |  |  | 22d |  | start no earlier than 2012-05-25 | 姜浩 | 32h |  |
| 230 | 1.10.2 | 剧情音乐（讨论中，第二期） | 17d? | 2012-05-08 | 2012-05-30 |  |  |  | 22d |  | start no earlier than 2012-05-08 |  |  |  |
| 231 | 1.11 | **音效 (30号之后)** | 9d? | 2012-05-08 | 2012-05-18 |  |  |  | 30d |  |  | Eric | 144h |  |
| 232 | 1.11.1 | 5.21 核对进度 | 9d? | 2012-05-08 | 2012-05-18 |  |  |  | 30d |  | start no earlier than 2012-05-08 | Eric | 72h |  |
| 233 | 1.12 | **运营** | 15d? | 2012-05-10 A | 2012-05-30 |  | 17% | 12.46d? | 22d |  |  |  | 248h | 42h |
| 234 | 1.12.1 | **产品说明** | 3d? | 2012-05-28 A | 2012-05-30 |  | 50% | 1.5d? | 22d |  |  | 柱子 | 40h | 12h |
| 235 | 1.12.1.1 | 第一稿完成后续需要修改 | 1d? | 2012-05-28 A | 2012-05-28 A |  | 100% |  |  |  | start no earlier than 2012-05-28 | 柱子 | 8h | 8h |
| 236 | 1.12.1.2 | 修改 | 1d? | 2012-05-30 | 2012-05-30 |  |  |  | 22d |  | finish no earlier than 2012-05-30 | 柱子 | 8h |  |
| 237 | 1.12.2 | 发行计划 | 1d? | 2012-05-29 | 2012-05-29 |  |  |  | 23d |  | start no earlier than 2012-05-29 | 柱子 | 8h |  |
| 238 | 1.12.3 | 运营上线前的整体计划 | 6d? | 2012-05-10 | 2012-05-17 |  |  |  | 31d |  | start no earlier than 2012-05-10 | 柱子 | 48h |  |
| 239 | 1.12.4 | 运营修改建议 | 5d | 2012-05-10 | 2012-05-16 |  |  |  | 32d |  | start no earlier than 2012-05-10 | 柱子 | 40h |  |
| 240 | 1.12.5 | 后台需求 | 3d | 2012-05-10 A | 2012-05-14 |  | 25% | 2.25d | 34d |  | start no earlier than 2012-05-10 | 柱子 | 24h | 6h |
| 241 | 1.12.6 | 统计需求 | 3d | 2012-05-10 A | 2012-05-14 A |  | 100% |  |  |  | start no earlier than 2012-05-10 | 柱子 | 24h | 24h |
| 242 | 1.12.7 | 初期活动需求（活动模块） | 2d | 2012-05-15 | 2012-05-16 | 241 |  |  | 29d | 0d | start no earlier than 2012-05-07 | 柱子 | 16h |  |
| 243 | 1.12.8 | 公司网站（项目网站） | 1d? | 2012-05-17 | 2012-05-17 | 242 |  |  | 31d |  | start no earlier than 2012-05-07 | 柱子 | 8h |  |
| 244 | 1.12.9 | 上线准备（平台） | 2d | 2012-05-17 | 2012-05-18 | 242 |  |  | 30d |  | start no earlier than 2012-05-07 | 柱子 | 16h |  |
| 245 | 1.12.10 | 宣传 | 3d | 2012-05-17 | 2012-05-21 | 242 |  |  | 29d |  | start no earlier than 2012-05-07 | 柱子 | 24h |  |
| 246 | 1.13 | **美术模块 - （老版本，详细）** | 48d? | 2012-04-26 A | 2012-06-29 |  | 12% | 42.18d? | 0d |  |  |  | 2150.82h | 85.43h |
| 247 | 1.13.1 | **副本部分** | 15d? | 2012-05-09 A | 2012-05-29 |  | 8% | 13.78d? | 23d |  |  | 卢靖 | 750.82h | 63.76h |
| 248 | 1.13.1.1 | **王城** | 8d? | 2012-05-09 A | 2012-05-18 |  | 32% | 5.43d? | 30d |  |  |  | 160h | 54h |
| 249 | 1.13.1.1.1 | 概念设定 | 5d? | 2012-05-09 | 2012-05-15 |  |  |  | 33d |  | finish no earlier than 2012-05-15 | 卢靖 | 40h |  |
| 250 | 1.13.1.1.2 | 地形块制作 | 2d? | 2012-05-16 A | 2012-05-17 A |  | 100% |  |  |  | finish no earlier than 2012-05-17 | 邹慧 | 16h | 16h |
| 251 | 1.13.1.1.3 | 建筑物线稿 | 5d? | 2012-05-09 A | 2012-05-15 |  | 95% | 0.25d? | 33d |  | finish no earlier than 2012-05-15 | 卢靖 | 40h | 38h |
| 252 | 1.13.1.1.4 | 建筑物制作 | 3d? | 2012-05-15 | 2012-05-17 |  |  |  | 31d |  | finish no earlier than 2012-05-17 | 蒋德仁 | 24h |  |
| 253 | 1.13.1.1.5 | 地图装饰元件补充 | 2d? | 2012-05-16 | 2012-05-17 |  |  |  | 30d | 0d | finish no earlier than 2012-05-17 | 蒋德仁 | 16h |  |
| 254 | 1.13.1.1.6 | 可采集物品的元件 | 2d? | 2012-05-16 | 2012-05-17 |  |  |  | 30d | 0d | finish no earlier than 2012-05-17 | 蒋德仁 | 16h |  |
| 255 | 1.13.1.1.7 | 副本编辑 | 1d? | 2012-05-18 | 2012-05-18 | 254 |  |  | 30d |  | start no earlier than 2012-05-17 | 陈志荣 | 8h |  |
| 256 | 1.13.1.1.8 | 优化 | 1d? | 2012-05-18 | 2012-05-18 | 253 |  |  | 30d |  |  |  |  |  |

Notes:
- 228: 最后一周前核对进度
- 245: 图片，文档，帖子，论坛，用户调查，导入用户

| ID | WBS | Task | Duration | Start | Finish | Predecessors | Total slack | Free slack | Constraint | Resources | Work |
| --- | --- | --- | --- | --- | --- | --- | --- | --- | --- | --- | --- |
| 257 | 1.13.1.2 | **监狱（王城副本）** | 6d? | 2012-05-16 | 2012-05-23 |  | 27d |  |  |  | 160h |
| 258 | 1.13.1.2.1 | 概念设定 | 3d? | 2012-05-16 | 2012-05-18 |  | 30d |  | finish no earlier than 2012-05-18 | 卢靖 | 24h |
| 259 | 1.13.1.2.2 | 地形块制作 | 3d? | 2012-05-17 | 2012-05-21 |  | 29d |  | finish no earlier than 2012-05-21 | 邹慧 | 24h |
| 260 | 1.13.1.2.3 | 建筑物线稿 | 3d? | 2012-05-17 | 2012-05-21 |  | 29d |  | start no earlier than 2012-05-17 | 卢靖 | 24h |
| 261 | 1.13.1.2.4 | 建筑物制作 | 3d? | 2012-05-17 | 2012-05-21 |  | 29d |  | start no earlier than 2012-05-17 | 蒋德仁 | 24h |
| 262 | 1.13.1.2.5 | 地图装饰元件补充 | 3d? | 2012-05-17 | 2012-05-21 |  | 29d |  | start no earlier than 2012-05-17 | 蒋德仁 | 24h |
| 263 | 1.13.1.2.6 | 可采集物品的元件 | 3d? | 2012-05-17 | 2012-05-21 |  | 27d | 0d | start no earlier than 2012-05-17 | 蒋德仁 | 24h |
| 264 | 1.13.1.2.7 | 副本编辑 | 2d | 2012-05-22 | 2012-05-23 | 263 | 27d |  | start no earlier than 2012-05-17 | 陈志荣 | 16h |
| 265 | 1.13.1.2.8 | 优化 | 1d? | 2012-05-22 | 2012-05-22 |  | 28d |  | start no earlier than 2012-05-22 |  |  |
| 266 | 1.13.1.3 | **教堂（王城副本）** | 5d? | 2012-05-18 | 2012-05-24 |  | 26d |  |  |  | 144h |
| 267 | 1.13.1.3.1 | 概念设定 | 2d? | 2012-05-18 | 2012-05-21 |  | 29d |  | finish no earlier than 2012-05-21 | 卢靖 | 16h |
| 268 | 1.13.1.3.2 | 地形块制作 | 3d? | 2012-05-21 | 2012-05-23 |  | 27d |  | finish no earlier than 2012-05-23 | 邹慧 | 24h |
| 269 | 1.13.1.3.3 | 建筑物线稿 | 3d? | 2012-05-21 | 2012-05-23 |  | 27d |  | start no earlier than 2012-05-21 | 卢靖 | 24h |
| 270 | 1.13.1.3.4 | 建筑物制作 | 3d? | 2012-05-21 | 2012-05-23 |  | 27d |  | start no earlier than 2012-05-21 | 蒋德仁 | 24h |
| 271 | 1.13.1.3.5 | 地图装饰元件补充 | 3d? | 2012-05-21 | 2012-05-23 |  | 26d | 0d | start no earlier than 2012-05-21 | 蒋德仁 | 24h |
| 272 | 1.13.1.3.6 | 可采集物品的元件 | 3d? | 2012-05-21 | 2012-05-23 |  | 26d | 0d | start no earlier than 2012-05-21 | 蒋德仁 | 24h |
| 273 | 1.13.1.3.7 | 副本编辑 | 1d? | 2012-05-24 | 2012-05-24 | 272 | 26d |  | start no earlier than 2012-05-17 | 陈志荣 | 8h |
| 274 | 1.13.1.3.8 | 优化 | 1d? | 2012-05-24 | 2012-05-24 | 271 | 26d |  |  |  |  |
| 275 | 1.13.1.4 | **翡翠森林** | 6d? | 2012-05-22 | 2012-05-29 |  | 23d |  |  |  | 96h |
| 276 | 1.13.1.4.1 | 概念设定 | 3d? | 2012-05-22 | 2012-05-24 |  | 26d |  | finish no earlier than 2012-05-24 | 卢靖 | 24h |
| 277 | 1.13.1.4.2 | 地形块制作 | 2d? | 2012-05-24 | 2012-05-25 |  | 25d |  | finish no earlier than 2012-05-25 | 邹慧 | 16h |
| 278 | 1.13.1.4.3 | 地图元件线稿 | 2d? | 2012-05-24 | 2012-05-25 |  | 25d |  | finish no earlier than 2012-05-25 | 卢靖 | 16h |
| 279 | 1.13.1.4.4 | 地图装饰元件补充 | 2d? | 2012-05-24 | 2012-05-25 |  | 25d |  | finish no earlier than 2012-05-25 | 蒋德仁 | 16h |
| 280 | 1.13.1.4.5 | 可采集物品的元件 | 2d? | 2012-05-24 | 2012-05-25 |  | 23d | 0d | finish no earlier than 2012-05-25 | 蒋德仁 | 16h |
| 281 | 1.13.1.4.6 | 副本编辑 | 1d? | 2012-05-28 | 2012-05-28 | 280 | 23d | 0d | start no earlier than 2012-05-17 | 陈志荣 | 8h |
| 282 | 1.13.1.4.7 | 优化 | 1d? | 2012-05-29 | 2012-05-29 | 281 | 23d |  | start no earlier than 2012-05-11 |  |  |

Notes:
- 264: 需要提前和姜浩核对需求

| ID | WBS | Task | Duration | Start | Finish | Predecessors | Complete | Remaining | Total slack | Free slack | Constraint | Resources | Work | Actual work |
| --- | --- | --- | --- | --- | --- | --- | --- | --- | --- | --- | --- | --- | --- | --- |
| 283 | 1.13.1.5 | **沼泽** | 3d? | 2012-05-25 | 2012-05-29 |  |  |  | 23d |  |  |  | 72h |  |
| 284 | 1.13.1.5.1 | 概念设定 | 1d | 2012-05-25 | 2012-05-26 |  |  |  | 25d |  | finish no earlier than 2012-05-26 | 卢靖 | 8h |  |
| 285 | 1.13.1.5.2 | 地形块制作 | 2d? | 2012-05-28 | 2012-05-29 |  |  |  | 23d |  | finish no earlier than 2012-05-29 | 邹慧 | 16h |  |
| 286 | 1.13.1.5.3 | 地图元件线稿 | 2d? | 2012-05-28 | 2012-05-29 |  |  |  | 23d |  | finish no earlier than 2012-05-29 | 卢靖 | 16h |  |
| 287 | 1.13.1.5.4 | 地图装饰元件补充 | 2d? | 2012-05-28 | 2012-05-29 |  |  |  | 23d |  | finish no earlier than 2012-05-29 | 蒋德仁 | 16h |  |
| 288 | 1.13.1.5.5 | 可采集物品的元件 | 2d? | 2012-05-28 | 2012-05-29 |  |  |  | 23d |  | finish no earlier than 2012-05-29 | 蒋德仁 | 16h |  |
| 289 | 1.13.2 | **大地图** | 2d | 2012-05-14 | 2012-05-15 |  |  |  | 33d |  |  |  | 16h |  |
| 290 | 1.13.2.1 | 优化 | 2d | 2012-05-14 | 2012-05-15 |  |  |  | 33d |  | start no earlier than 2012-05-14 | 大强 | 16h |  |
| 291 | 1.13.3 | **战斗背景** | 1d? | 2012-05-07 | 2012-05-07 |  |  |  | 39d |  |  |  | 40h |  |
| 292 | 1.13.3.1 | 翡翠森林-完成 | 1d? | 2012-05-07 | 2012-05-07 |  |  |  | 39d |  | start no earlier than 2012-05-07 |  |  |  |
| 293 | 1.13.3.2 | 矿洞 | 1d? | 2012-05-07 | 2012-05-07 |  |  |  | 39d |  | start no earlier than 2012-05-07 | 卢靖 | 8h |  |
| 294 | 1.13.3.3 | 沼泽 | 1d? | 2012-05-07 | 2012-05-07 |  |  |  | 39d |  | start no earlier than 2012-05-07 | 卢靖 | 8h |  |
| 295 | 1.13.3.4 | 监狱 | 1d? | 2012-05-07 | 2012-05-07 |  |  |  | 39d |  | start no earlier than 2012-05-07 | 卢靖 | 8h |  |
| 296 | 1.13.3.5 | 教堂 | 1d? | 2012-05-07 | 2012-05-07 |  |  |  | 39d |  | start no earlier than 2012-05-07 | 卢靖 | 8h |  |
| 297 | 1.13.3.6 | 村庄（备选） | 1d? | 2012-05-07 | 2012-05-07 |  |  |  | 39d |  | start no earlier than 2012-05-07 | 卢靖 | 8h |  |
| 298 | 1.13.4 | **人物模块** | 39d? | 2012-05-08 A | 2012-06-29 |  | 1% | 38.69d? | 0d |  |  | 赵子敬 | 928h | 16.67h |
| 299 | 1.13.4.1 | **NPC制作** | 39d? | 2012-05-08 A | 2012-06-29 |  | 1% | 38.69d? | 0d |  |  |  | 616h | 14.15h |
| 300 | 1.13.4.1.1 | **现已完成15个，后续制作25个** | 14d | 2012-05-08 A | 2012-05-25 |  | 4% | 13.5d | 24d |  |  | 赵子敬 | 232h | 14.15h |
| 301 | 1.13.4.1.1.1 | 需求核对 | 0.5d | 2012-05-08 A | 2012-05-08 A |  | 100% |  |  |  | start no earlier than 2012-05-08 | 姜浩; 大强; 赵子敬 | 12h | 12h |
| 302 | 1.13.4.1.1.2 | 制作-25NPC和头像 | 13.5d | 2012-05-08 | 2012-05-25 | 301 |  |  | 24d | 0d | finish no earlier than 2012-05-25 | 赵子敬 | 108h |  |
| 303 | 1.13.4.1.2 | **超级佣兵总87个** | 36d? | 2012-05-11 | 2012-06-29 |  |  |  | 0d |  |  |  | 376h |  |
| 304 | 1.13.4.1.2.1 | 外包 | 36d? | 2012-05-11 | 2012-06-29 |  |  |  | 0d |  | start no earlier than 2012-05-11 | 外包 | 288h |  |
| 305 | 1.13.4.1.2.2 | 自制作-10个 | 11d? | 2012-05-11 | 2012-05-25 |  |  |  | 25d |  | start no earlier than 2012-05-11 | 赵子敬 | 88h |  |
| 306 | 1.13.4.1.3 | 5个NPC跟佣兵格式相同 | 1d? | 2012-05-28 | 2012-05-28 | 302 |  |  | 24d |  | start no earlier than 2012-05-07 | 赵子敬 | 8h |  |

Notes:
- 304: 一周两次的反馈结果，一次大概有6，7个
- 306: 包括 战斗动作（姜浩，Eric核对）

| ID | WBS | Task | Duration | Start | Finish | Predecessors | Complete | Remaining | Total slack | Free slack | Constraint | Resources | Work | Actual work |
| --- | --- | --- | --- | --- | --- | --- | --- | --- | --- | --- | --- | --- | --- | --- |
| 307 | 1.13.5 | **特效** | 21d? | 2012-04-26 A | 2012-05-23 |  | 29% | 14.98d? | 27d |  |  |  | 304h | 5h |
| 308 | 1.13.5.1 | **战斗特效(技能)** | 15d? | 2012-04-26 A | 2012-05-15 |  | 36% | 9.61d? | 33d |  |  | 宋文卿 | 112h | 5h |
| 309 | 1.13.5.1.1 | 战士 分系技能 | 14d? | 2012-04-26 A | 2012-05-15 |  | 25% | 10.5d? | 33d |  | finish no earlier than 2012-05-15 |  |  |  |
| 310 | 1.13.5.1.2 | 弓手 分系技能 | 14d? | 2012-04-26 A | 2012-05-15 |  | 25% | 10.5d? | 33d |  | finish no earlier than 2012-05-15 |  |  |  |
| 311 | 1.13.5.1.3 | 法师 分系技能 | 14d? | 2012-04-26 A | 2012-05-15 |  | 25% | 10.5d? | 33d |  | finish no earlier than 2012-05-15 |  |  |  |
| 312 | 1.13.5.1.4 | 法师 通用技能 | 14d? | 2012-04-26 A | 2012-05-15 |  | 25% | 10.5d? | 33d |  | finish no earlier than 2012-05-15 |  |  |  |
| 313 | 1.13.5.1.5 | 使用道具 | 10d? | 2012-04-26 A | 2012-05-09 |  | 75% | 2.5d? | 37d |  | finish no earlier than 2012-05-09 |  |  |  |
| 314 | 1.13.5.1.6 | 好友协助技能 | 1d? | 2012-05-15 | 2012-05-15 |  |  |  | 33d |  |  |  |  |  |
| 315 | 1.13.5.1.7 | 战士 通用技能 | 1d? | 2012-04-26 A | 2012-04-26 A |  | 100% |  |  |  |  |  |  |  |
| 316 | 1.13.5.1.8 | 弓手 通用技能 | 1d? | 2012-04-26 A | 2012-04-26 A |  | 100% |  |  |  |  |  |  |  |
| 317 | 1.13.5.1.9 | 全职业技能 | 1d? | 2012-04-26 A | 2012-04-26 A |  | 100% |  |  |  |  |  |  |  |
| 318 | 1.13.5.1.10 | 各种状态特效 | 1d? | 2012-04-26 A | 2012-04-26 A |  | 100% |  |  |  |  |  |  |  |
| 319 | 1.13.5.2 | **UI特效** | 6d? | 2012-05-16 | 2012-05-23 |  |  |  | 27d |  |  | 宋文卿 | 192h |  |
| 320 | 1.13.5.2.1 | UI特效需求分析 | 6d? | 2012-05-16 | 2012-05-23 |  |  |  | 27d |  | finish no earlier than 2012-05-23 | 梁新强 | 48h |  |
| 321 | 1.13.5.2.2 | 人物事件特效 | 6d? | 2012-05-16 | 2012-05-23 |  |  |  | 27d |  | finish no earlier than 2012-05-23 | 宋文卿 | 48h |  |
| 322 | 1.13.5.2.3 | UI事件特效 | 6d? | 2012-05-16 | 2012-05-23 |  |  |  | 27d |  | finish no earlier than 2012-05-23 | 宋文卿 | 48h |  |
| 323 | 1.13.6 | **游戏内串场的内容** | 7d? | 2012-05-10 | 2012-05-18 |  |  |  | 30d |  |  | 余晓丽; 大强 | 112h |  |
| 324 | 1.13.6.1 | 进入游戏场景 | 7d? | 2012-05-10 | 2012-05-18 |  |  |  | 30d |  | start no earlier than 2012-05-10 |  |  |  |
| 325 | 1.13.6.2 | 场景切换 | 7d? | 2012-05-10 | 2012-05-18 |  |  |  | 30d |  | start no earlier than 2012-05-10 |  |  |  |
| 326 | 1.13.6.3 | 剧情切换 | 7d? | 2012-05-10 | 2012-05-18 |  |  |  | 30d |  | start no earlier than 2012-05-10 |  |  |  |
| 327 | 1.13.6.4 | Loading | 7d? | 2012-05-10 | 2012-05-18 |  |  |  | 30d |  | start no earlier than 2012-05-10 |  |  |  |
| 328 | 1.14 | **UI表现优化 - 前端版本** | 5.4d? | 2012-05-17 | 2012-05-24 |  |  |  | 26.6d |  |  |  | 84.8h |  |
| 329 | 1.14.1 | **佣兵面板** | 0.7d | 2012-05-17 | 2012-05-17 |  |  |  | 29.5d | 0d |  | 庆 | 11.2h |  |
| 330 | 1.14.1.1 | 解锁时有解锁的特效 | 0.2d | 2012-05-17 | 2012-05-17 |  |  |  | 29.5d | 0d | start no earlier than 2012-05-17 | 庆 | 1.6h |  |
| 331 | 1.14.1.2 | 解雇确认面板内会有佣兵头像和一句话 | 0.2d | 2012-05-17 | 2012-05-17 | 330 |  |  | 29.5d | 0d | start no earlier than 2012-05-17 | 庆 | 1.6h |  |
| 332 | 1.14.1.3 | 布阵面板人放入一个格子时会在该格播放一个动效 | 0.3d | 2012-05-17 | 2012-05-17 | 331 |  |  | 29.5d |  | start no earlier than 2012-05-17 | 庆 | 2.4h |  |

Notes:
- 309: 火焰斩 寒冰斩 疾风斩
- 310: 火箭 冰箭 疾风箭
- 311: 火球术 冰球术/ 狂风术
- 312: 陨石术（改为落石形式） 石化术 全体石化术 魔法弹
- 313: 补血物品（血瓶、食品等） / 解除状态物品（各种解除效果的药剂） / 攻击物品（石头、炸弹）------缺石头（0509）
- 314: 待定，5月30日版本前的特效
- 315: 一字斩 贯通斩 十字斩 怒气
- 316: 毒箭 散射 迅驰 贯通射 乱射
- 317: 攻击力上升 防御力上升
- 318: 中毒，石化
- 323: 场景切换，游戏进场

| ID | WBS | Task | Duration | Start | Finish | Predecessors | Total slack | Free slack | Constraint | Resources | Work |
| --- | --- | --- | --- | --- | --- | --- | --- | --- | --- | --- | --- |
| 333 | 1.14.2 | **订单面板** | 1d? | 2012-05-17 | 2012-05-18 | 329 | 29.5d | 0d |  | 庆 | 16h |
| 334 | 1.14.2.1 | 满意度面板移入订单面板，增加满意度时面板会闪一下 | 1d? | 2012-05-17 | 2012-05-18 |  | 29.5d |  | start no earlier than 2012-05-17 | 庆 | 8h |
| 335 | 1.14.3 | **合成模块** | 0.8d | 2012-05-18 | 2012-05-21 | 333 | 29.5d |  |  | 庆 | 12.8h |
| 336 | 1.14.3.1 | 合成面板上的标题换成工作台的名字 | 0.2d | 2012-05-18 | 2012-05-18 |  | 29.5d | 0d | start no earlier than 2012-05-17 | 庆 | 1.6h |
| 337 | 1.14.3.2 | 材料足时会有动效叠在合成物上，合成物上下飘动 | 0.2d | 2012-05-18 | 2012-05-21 | 336 | 29.5d | 0d | start no earlier than 2012-05-17 | 庆 | 1.6h |
| 338 | 1.14.3.3 | 开始合成时有一个动画 | 0.1d | 2012-05-21 | 2012-05-21 | 337 | 29.5d | 0d | start no earlier than 2012-05-17 | 庆 | 0.8h |
| 339 | 1.14.3.4 | 合成中面板里的合成物图标太大了，顶框了 | 0.1d | 2012-05-21 | 2012-05-21 | 338 | 29.5d | 0d | start no earlier than 2012-05-17 | 庆 | 0.8h |
| 340 | 1.14.3.5 | 合成完成的收取图标上下飘动，代码实现 | 0.2d | 2012-05-21 | 2012-05-21 | 339 | 29.5d |  | start no earlier than 2012-05-17 | 庆 | 1.6h |
| 341 | 1.14.4 | **图鉴面板** | 1d? | 2012-05-22 | 2012-05-22 |  | 26.6d | 0d |  | 诚 | 16h |
| 342 | 1.14.4.1 | 目录与内页之间切换时增加翻页动画 | 1d? | 2012-05-22 | 2012-05-22 |  | 26.6d |  | start no earlier than 2012-05-22 | 诚 | 8h |
| 343 | 1.14.5 | **仓库面板** | 0.3d | 2012-05-23 | 2012-05-23 | 341 | 26.6d | 0d |  | 诚 | 4.8h |
| 344 | 1.14.5.1 | 格子内道具的图标位置固定对齐 | 0.3d | 2012-05-23 | 2012-05-23 |  | 26.6d |  | start no earlier than 2012-05-17 | 诚 | 2.4h |
| 345 | 1.14.6 | 人物升级动画 | 0.2d | 2012-05-23 | 2012-05-23 | 343 | 26.6d | 0d | start no earlier than 2012-05-17 | 诚 | 1.6h |
| 346 | 1.14.7 | 所有建筑升级动画 | 0.2d | 2012-05-23 | 2012-05-23 | 345 | 26.6d | 0d | start no earlier than 2012-05-17 | 诚 | 1.6h |
| 347 | 1.14.8 | 人物晋级完成时有动画 | 0.2d | 2012-05-23 | 2012-05-23 | 346 | 26.6d | 0d | start no earlier than 2012-05-17 | 诚 | 1.6h |
| 348 | 1.14.9 | **场景相关** | 0.5d | 2012-05-23 | 2012-05-24 | 347 | 26.6d |  |  | 诚 | 8h |
| 349 | 1.14.9.1 | 场景切换打开幕布后，显示场景名动画 | 0.5d | 2012-05-23 | 2012-05-24 |  | 26.6d |  | start no earlier than 2012-05-17 | 诚 | 4h |
| 350 | 1.14.10 | **人物创建** | 0.5d | 2012-05-17 | 2012-05-17 |  | 31.3d | 0d |  | 琦 | 8h |
| 351 | 1.14.10.1 | 人物切进作效果，文字从右侧滑入 | 0.5d | 2012-05-17 | 2012-05-17 |  | 31.3d |  | start no earlier than 2012-05-17 | 琦 | 4h |
| 352 | 1.14.11 | **战斗模块** | 0.2d | 2012-05-17 | 2012-05-17 | 350 | 31.3d |  |  | 琦 | 3.2h |
| 353 | 1.14.11.1 | 战斗胜利、失败动画 | 0.2d | 2012-05-17 | 2012-05-17 |  | 31.3d |  | start no earlier than 2012-05-17 | 琦 | 1.6h |
