# 魔法项目进度表20120302V

Schedule from MS Project, 2012-05-15 to 2012-10-01, A marks actual dates.

## Calendars

- 标准: Mon-Fri 08:00-12:00, 13:00-17:00; Sat-Sun off.

## Resources

| Resource |
| --- |
| 柱子 |
| 李钊 |
| 张琦 |
| 大强 |
| 立军 |
| 王晔 |
| Eric |
| 姜浩 |
| 章昕 |
| 夏俊杰 |
| 赵子敬 |
| 张诚 |
| 小庆 |
| 陈志荣 |
| 桃子 |
| 八代 |
| 余晓丽 |
| 卢靖 |
| 蒋德仁 |
| 邹慧 |
| 老大 |
| 张黎明 |
| 外包 |
| 宋文卿 |
| 梁新强 |
| 张小庆 |
| LIZ |
| 庆 |
| 诚 |
| 琦 |
| 策划 |
| 卢靖场景组 |
| 素材 |
| 孙文豪 |

## Schedule

| ID | WBS | Task | Duration | Start | Finish | Complete | Remaining | Total slack | Constraint | Resources | Work | Actual work |
| --- | --- | --- | --- | --- | --- | --- | --- | --- | --- | --- | --- | --- |
| 1 | 1 | **5月30日内测版本后续内容进度** | 27d? | 2012-05-21 A | 2012-06-26 | 27% | 19.75d? | 69d |  |  | 1577h | 509.69h |
| 2 | 1.1 | **5月30日测试版本的修改和优化** | 13d? | 2012-05-30 A | 2012-06-15 | 14% | 11.16d? | 76d |  |  | 372h | 160h |
| 3 | 1.1.1 | 核对游戏整体目标清晰度 | 1d? | 2012-06-15 | 2012-06-15 |  |  | 76d | finish no earlier than 2012-06-15 |  |  |  |
| 4 | 1.1.2 | 整组人员对项目进行评测和修改方案 | 5d? | 2012-06-04 A | 2012-06-08 A | 100% |  |  | finish no earlier than 2012-06-08 | Eric; 姜浩; 八代 | 120h | 120h |
| 5 | 1.1.3 | 增加立刻完成类的需求列表 | 1d? | 2012-06-05 A | 2012-06-05 A | 100% |  |  | start no earlier than 2012-06-05 | Eric; 姜浩 | 16h | 16h |
| 6 | 1.1.4 | **修改方案确定** | 10d? | 2012-05-30 | 2012-06-12 |  |  | 79d |  |  | 212h |  |
| 7 | 1.1.4.1 | 各类建筑升级需要有CD时间 | 1d? | 2012-05-30 | 2012-05-30 |  |  | 88d | start no earlier than 2012-05-30 |  |  |  |
| 8 | 1.1.4.2 | 没有出现图鉴的物品，即使道具是可出售，也不能出售 | 1d? | 2012-05-30 | 2012-05-30 |  |  | 88d | start no earlier than 2012-05-30 |  |  |  |
| 9 | 1.1.4.3 | 主角站立不动5秒以上，会做随机休闲动作 | 1d? | 2012-05-30 | 2012-05-30 |  |  | 88d | start no earlier than 2012-05-30 |  |  |  |
| 10 | 1.1.4.4 | 胜利随即语句，失败随机语句 | 1d? | 2012-05-30 | 2012-05-30 |  |  | 88d | start no earlier than 2012-05-30 |  |  |  |
| 11 | 1.1.4.5 | 交互老虎机拉杆核对 | 1d? | 2012-06-01 | 2012-06-01 |  |  | 86d | start no earlier than 2012-06-01 |  |  |  |
| 12 | 1.1.4.6 | **Eric需求** | 5d? | 2012-06-06 | 2012-06-12 |  |  | 79d |  |  | 92h |  |
| 13 | 1.1.4.6.1 | 战斗时，当攻击力大于怪物生命最大值2倍时有50%的几率把怪物击飞，怪物在画面中几个弹射后飞出 | 1d? | 2012-06-06 | 2012-06-06 |  |  | 83d | start no earlier than 2012-06-06 |  |  |  |
| 14 | 1.1.4.6.2 | 武器合成中，最终的属性值产出是会在最大值向下20的随机数范围内随机一个值 | 2d | 2012-06-11 | 2012-06-12 |  |  | 79d | start no earlier than 2012-06-11 | 孙文豪 | 16h |  |
| 15 | 1.1.4.6.3 | 解雇的时候随机抽取一句话，解雇的弹出面板有人物和气泡 | 1d? | 2012-06-06 | 2012-06-06 |  |  | 83d | start no earlier than 2012-06-06 |  |  |  |
| 16 | 1.1.4.6.4 | 主角站立不动5秒以上，会做随机休闲动作 张琦 | 1d? | 2012-06-06 | 2012-06-06 |  |  | 83d | start no earlier than 2012-06-06 |  |  |  |
| 17 | 1.1.4.6.5 | 道具受经营等级限制 李钊 张诚 | 0.5d? | 2012-06-06 | 2012-06-06 |  |  | 83.5d | start no earlier than 2012-06-06 | 李钊; 张诚 | 8h |  |
| 18 | 1.1.4.6.6 | 修改经营等级改叫炼金等级,并设定相关图标 大强 | 1d? | 2012-06-06 | 2012-06-06 |  |  | 83d | start no earlier than 2012-06-06 |  |  |  |
| 19 | 1.1.4.6.7 | 炼金等级1级时只有一个物品可炼，作为体验和围绕展开的剧情 | 1d? | 2012-06-06 | 2012-06-06 |  |  | 83d | start no earlier than 2012-06-06 |  |  |  |
| 20 | 1.1.4.6.8 | 遇到怪物的横排和竖排概率50% 章欣 | 1d? | 2012-06-06 | 2012-06-06 |  |  | 83d | start no earlier than 2012-06-06 | 李钊 | 8h |  |
| 21 | 1.1.4.6.9 | 自己村里需要出现雇佣的佣兵跑来跑去 张琦 | 1d? | 2012-06-06 | 2012-06-06 |  |  | 83d | start no earlier than 2012-06-06 |  |  |  |
| 22 | 1.1.4.6.10 | 酒馆雇佣，佣兵种类区域影响，英雄名字按等级出现 李钊 | 0.5d? | 2012-06-06 | 2012-06-06 |  |  | 83.5d | start no earlier than 2012-06-06 | 李钊; Eric | 8h |  |
| 23 | 1.1.4.6.11 | 最优先的主线任务，需要写在外面 张琦 | 1d? | 2012-06-06 | 2012-06-06 |  |  | 83d | start no earlier than 2012-06-06 |  |  |  |
| 24 | 1.1.4.6.12 | 战斗自动功能在15秒后自动启动，自动攻击边上有倒计时 | 1d? | 2012-06-06 | 2012-06-06 |  |  | 83d | start no earlier than 2012-06-06 |  |  |  |
| 25 | 1.1.4.6.13 | 战斗自动后，保持自动10回合，恢复手动后面有次数记录 李钊 | 0.5d? | 2012-06-06 | 2012-06-06 |  |  | 83.5d | start no earlier than 2012-06-06 | 孙文豪 | 4h |  |
| 26 | 1.1.4.6.14 | 战斗胜利和失败的时候随机显示FEEL文字 张琦 | 1d? | 2012-06-06 | 2012-06-06 |  |  | 83d | start no earlier than 2012-06-06 |  |  |  |
| 27 | 1.1.4.6.15 | VIP培养暂时锁掉，设置99级 李钊 | 1d? | 2012-06-06 | 2012-06-06 |  |  | 83d | start no earlier than 2012-06-06 | Eric | 8h |  |
| 28 | 1.1.4.6.16 | 战斗血包（急救箱）道具设置 李钊 | 0.5d? | 2012-06-06 | 2012-06-06 |  |  | 83.5d | start no earlier than 2012-06-06 | 孙文豪; Eric | 8h |  |
| 29 | 1.1.4.6.17 | 战斗UI在战斗胜利或者失败的时候，立刻全部消失 张琦 | 1d? | 2012-06-06 | 2012-06-06 |  |  | 83d | start no earlier than 2012-06-06 |  |  |  |
| 30 | 1.1.4.6.18 | 大三角石像怪放大大大 | 1d? | 2012-06-06 | 2012-06-06 |  |  | 83d | start no earlier than 2012-06-06 |  |  |  |
| 31 | 1.1.4.6.19 | 怪物选中后一直发亮 小夏 | 1d? | 2012-06-06 | 2012-06-06 |  |  | 83d | start no earlier than 2012-06-06 |  |  |  |
| 32 | 1.1.4.6.20 | 战斗时，主角的小头像不对,问大强 张琦 | 1d? | 2012-06-06 | 2012-06-06 |  |  | 83d | start no earlier than 2012-06-06 |  |  |  |
| 33 | 1.1.4.6.21 | 世界地图的副本，进入条件：佣兵最低等级、经营等级、完成的剧情 李钊 | 0.5d? | 2012-06-06 | 2012-06-06 |  |  | 83.5d | start no earlier than 2012-06-06 | 孙文豪; Eric | 8h |  |
| 34 | 1.1.4.6.22 | 解雇时返还经验卷轴 李钊 | 1d? | 2012-06-06 | 2012-06-06 |  |  | 83d | start no earlier than 2012-06-06 | 李钊 | 8h |  |
| 35 | 1.1.4.6.23 | 矿不像采集类 大强 | 1d? | 2012-06-06 | 2012-06-06 |  |  | 83d | start no earlier than 2012-06-06 |  |  |  |
| 36 | 1.1.4.6.24 | 战斗时候需要消耗体力，每场战斗消耗一格 | 1d? | 2012-06-08 | 2012-06-08 |  |  | 81d | start no earlier than 2012-06-08 |  |  |  |
| 37 | 1.1.4.6.25 | 战斗失败时，大幅降低装备耐久度5%-10% 李钊 | 2d? | 2012-06-08 | 2012-06-11 |  |  | 80d | start no earlier than 2012-06-08 | 孙文豪 | 16h |  |

Notes:
- 1: 5月30日版本是封闭内测，只有邀请才能进入
- 4: 第一稿完成
- 5: 立刻完成，不是用宝石，是用道具，换成道具图标 (任务的立刻完成，换成不同的道具，详细资料）合成是沙漏，美酒

| ID | WBS | Task | Duration | Start | Finish | Predecessors | Complete | Remaining | Total slack | Free slack | Constraint | Resources | Work | Actual work |
| --- | --- | --- | --- | --- | --- | --- | --- | --- | --- | --- | --- | --- | --- | --- |
| 38 | 1.1.4.7 | **八代需求** | 1d? | 2012-06-08 | 2012-06-08 |  |  |  | 81d |  |  |  | 120h |  |
| 39 | 1.1.4.7.1 | 佣兵选择更换技能的时候 打开面板后 应该显示一下目前有多少数量这个技能。看图。这样玩家在选择更换技能的时候就会有数，并且不会重复更换消耗掉 ,0001115 | 0.5d? | 2012-06-08 | 2012-06-08 |  |  |  | 81.5d |  | start no earlier than 2012-06-08 | 张琦; 余晓丽 | 8h |  |
| 40 | 1.1.4.7.2 | 鼠标放在村庄的建筑上应该显示是什么建筑。不然根本不知道,0001120 | 1d? | 2012-06-08 | 2012-06-08 |  |  |  | 81d |  | start no earlier than 2012-06-08 | 张琦 | 8h |  |
| 41 | 1.1.4.7.3 | 在战斗中，选择技能使用的时候应该显示该技能的TIPS解释 ,0001121 需要需求 | 0.5d? | 2012-06-08 | 2012-06-08 |  |  |  | 81.5d |  | start no earlier than 2012-06-08 | 张琦; 八代 | 8h |  |
| 42 | 1.1.4.7.4 | 在副本野外山洞的时候，不能设置阵型。应该可以设置,0001119 | 0.67d? | 2012-06-08 | 2012-06-08 |  |  |  | 81.33d |  | start no earlier than 2012-06-08 | 八代; Eric; 张琦 | 16h |  |
| 43 | 1.1.4.7.5 | 游戏设置的按钮关闭不掉 ,0001122 | 1d? | 2012-06-08 | 2012-06-08 |  |  |  | 81d |  | start no earlier than 2012-06-08 | 张琦 | 8h |  |
| 44 | 1.1.4.7.6 | 所有制作物的时间显示方法 ,0001123 ， 需要UI先给到样式 | 0.5d? | 2012-06-08 | 2012-06-08 |  |  |  | 81.5d |  | start no earlier than 2012-06-08 | 张琦; 余晓丽 | 8h |  |
| 45 | 1.1.4.7.7 | 订单里面的需求道具点击后会跳到图鉴里面介绍面板,0001125 | 1d? | 2012-06-08 | 2012-06-08 |  |  |  | 81d |  | start no earlier than 2012-06-08 | 张琦 | 8h |  |
| 46 | 1.1.4.7.8 | 副本洞穴的名字问题,0001117 | 1d? | 2012-06-08 | 2012-06-08 |  |  |  | 81d |  | start no earlier than 2012-06-08 | 张琦 | 8h |  |
| 47 | 1.1.4.7.9 | 0001116: 培养佣兵的问题 | 1d? | 2012-06-08 | 2012-06-08 |  |  |  | 81d |  | start no earlier than 2012-06-08 | 张琦 | 8h |  |
| 48 | 1.1.4.7.10 | 0001113: 物品条件不够情况下字体显色 | 1d? | 2012-06-08 | 2012-06-08 |  |  |  | 81d |  | start no earlier than 2012-06-08 | 张琦 | 8h |  |
| 49 | 1.1.4.7.11 | 0001111: 好友援助TIS问题 | 1d? | 2012-06-08 | 2012-06-08 |  |  |  | 81d |  | start no earlier than 2012-06-08 | 张琦 | 8h |  |
| 50 | 1.1.4.7.12 | 0001110: 佣兵进攻别人村庄进入冷却时间问题 | 1d? | 2012-06-08 | 2012-06-08 |  |  |  | 81d |  | start no earlier than 2012-06-08 | 张琦 | 8h |  |
| 51 | 1.1.4.7.13 | 0001109: 去好友家入侵问题 | 1d? | 2012-06-08 | 2012-06-08 |  |  |  | 81d |  | start no earlier than 2012-06-08 | 张琦 | 8h |  |
| 52 | 1.1.4.7.14 | 0001108: 老虎机时候的动画调整 | 1d? | 2012-06-08 | 2012-06-08 |  |  |  | 81d |  | start no earlier than 2012-06-08 | 张琦 | 8h |  |
| 53 | 1.1.5 | **矿洞配方掉落分布，任务奖励** | 1d? | 2012-06-01 A | 2012-06-01 A |  | 100% |  |  |  |  | 姜浩 | 16h | 16h |
| 54 | 1.1.5.1 | 配方掉落数值配置，上传 | 1d? | 2012-06-01 A | 2012-06-01 A |  | 100% |  |  |  | start no earlier than 2012-06-01 | Eric | 8h | 8h |
| 55 | 1.1.6 | 支线任务调试 | 1d? | 2012-05-31 A | 2012-05-31 A |  | 100% |  |  |  | start no earlier than 2012-05-31 | 桃子 | 8h | 8h |
| 56 | 1.1.7 | 美术修改 | 2d | 2012-05-30 | 2012-05-31 |  |  |  | 83d | 0d | start no earlier than 2012-05-30 |  |  |  |
| 57 | 1.1.8 | 技术修改 | 4d | 2012-06-01 | 2012-06-06 | 56 |  |  | 83d |  | start no earlier than 2012-05-30 |  |  |  |
| 58 | 1.2 | **剧情和任务内容模块** | 21d? | 2012-05-29 A | 2012-06-26 |  | 10% | 18.96d? | 69d |  |  |  | 596h | 93.69h |
| 59 | 1.2.1 | **主线剧情和任务的添加** | 20d? | 2012-05-30 A | 2012-06-26 |  | 13% | 17.38d? | 69d |  |  |  | 532h | 93.69h |
| 60 | 1.2.1.1 | **监狱副本编辑和怪物摆放** | 4d? | 2012-06-01 A | 2012-06-06 |  | 81% | 0.77d? | 83d |  |  | 陈志荣; Eric | 120h | 93.69h |
| 61 | 1.2.1.1.1 | 定义素材CLASS NAME | 1d? | 2012-06-01 A | 2012-06-01 A |  | 100% |  |  |  | start no earlier than 2012-06-01 | 陈志荣 | 8h | 8h |
| 62 | 1.2.1.1.2 | 监狱副本初稿核对（一层，包括所有怪物） | 1d? | 2012-06-01 A | 2012-06-01 A |  | 100% |  |  |  | start no earlier than 2012-06-01 | 陈志荣 | 8h | 8h |
| 63 | 1.2.1.1.3 | 美术素材修改和增补 | 1d? | 2012-06-01 A | 2012-06-01 A |  | 100% |  |  |  | start no earlier than 2012-06-01 | 大强 | 8h | 8h |
| 64 | 1.2.1.1.4 | 全套副本的编辑和怪物的摆放 | 3d? | 2012-06-04 A | 2012-06-06 |  | 75% | 0.75d? | 83d |  | finish no earlier than 2012-06-06 | 陈志荣 | 24h | 18h |
| 65 | 1.2.1.1.5 | 数值核对怪物和掉落内容，矿物内容 | 0.5d? | 2012-06-01 | 2012-06-01 |  |  |  | 86.5d |  | start no earlier than 2012-06-01 | 陈志荣; Eric | 8h |  |
| 66 | 1.2.1.2 | 到王城，教堂，监狱的任务和剧情（文字） | 7d | 2012-06-04 | 2012-06-12 |  |  |  | 79d |  | finish no earlier than 2012-06-12 | 姜浩 | 56h |  |

Notes:
- 60: 怪物有素材，再次确认
- 66: 延迟，延迟到6月第二周，需要再次确认下进度安排

| ID | WBS | Task | Duration | Start | Finish | Predecessors | Total slack | Free slack | Constraint | Resources | Work |
| --- | --- | --- | --- | --- | --- | --- | --- | --- | --- | --- | --- |
| 67 | 1.2.1.3 | **森林副本编辑和摆放** | 5d? | 2012-06-05 | 2012-06-11 |  | 73d |  |  | 陈志荣; Eric | 180h |
| 68 | 1.2.1.3.1 | 森林的修改方案确定和素材提供 | 2d? | 2012-06-07 | 2012-06-08 |  | 81d |  | finish no earlier than 2012-06-08 | 素材 | 16h |
| 69 | 1.2.1.3.2 | 定义素材CLASS NAME | 1d | 2012-06-05 | 2012-06-05 |  | 84d |  | start no earlier than 2012-06-05 | 陈志荣 | 8h |
| 70 | 1.2.1.3.3 | 副本初稿核对（一层，包括所有怪物） | 1d | 2012-06-06 | 2012-06-06 |  | 72d | 3d | start no earlier than 2012-06-06 | 陈志荣 | 8h |
| 71 | 1.2.1.3.4 | 核对并美术素材修改和增补 | 1.5d | 2012-06-07 | 2012-06-08 |  | 81.5d |  | start no earlier than 2012-06-07 | 大强; 策划; 卢靖场景组 | 36h |
| 72 | 1.2.1.3.5 | 全套副本的编辑和怪物的摆放 | 3d | 2012-06-07 | 2012-06-11 |  | 80d |  | start no earlier than 2012-06-07 | 陈志荣 | 24h |
| 73 | 1.2.1.3.6 | 数值核对怪物和掉落内容，矿物内容 | 1d | 2012-06-11 | 2012-06-11 |  | 80d |  | start no earlier than 2012-06-11 | 陈志荣 | 8h |
| 74 | 1.2.1.4 | **沼泽副本编辑和摆放** | 5d? | 2012-06-11 | 2012-06-15 |  | 70d |  |  |  | 56h |
| 75 | 1.2.1.4.1 | 定义素材CLASS NAME | 1d? | 2012-06-11 | 2012-06-11 |  | 80d |  | start no earlier than 2012-06-11 | 陈志荣 | 8h |
| 76 | 1.2.1.4.2 | 副本初稿核对（一层，包括所有怪物） | 1d? | 2012-06-12 | 2012-06-12 |  | 79d |  | start no earlier than 2012-06-12 | 陈志荣 | 8h |
| 77 | 1.2.1.4.3 | 美术素材修改和增补 | 1d? | 2012-06-12 | 2012-06-12 | 70 | 69d | 0d | start no earlier than 2012-06-12 | 大强 | 8h |
| 78 | 1.2.1.4.4 | 全套副本的编辑和怪物的摆放 | 2d | 2012-06-13 | 2012-06-14 | 77 | 69d | 0d | start no earlier than 2012-06-01 | 陈志荣 | 16h |
| 79 | 1.2.1.4.5 | 数值核对怪物和掉落内容，矿物内容 | 1d | 2012-06-15 | 2012-06-15 | 78 | 69d | 0d | start no earlier than 2012-06-01 | 陈志荣; Eric | 16h |
| 80 | 1.2.1.5 | 到沼泽，森林的任务和剧情（文字） | 7d | 2012-06-18 | 2012-06-26 | 79 | 69d |  |  | 姜浩 | 56h |
| 81 | 1.2.1.6 | **森林副本编辑和摆放** | 4d | 2012-05-30 | 2012-06-04 |  | 73d |  |  | 陈志荣; Eric | 64h |
| 82 | 1.2.1.6.1 | 剧情编辑 | 4d | 2012-05-30 | 2012-06-04 |  | 73d | 0d | start no earlier than 2012-05-30 |  |  |
| 83 | 1.2.2 | **支线剧情的添加** | 12d | 2012-06-05 | 2012-06-20 |  | 73d |  |  |  | 48h |
| 84 | 1.2.2.1 | 到矿洞的支线剧情文字修改和编辑 | 3d | 2012-06-05 | 2012-06-07 | 82 | 73d | 0d | finish no earlier than 2012-05-29 | 姜浩 | 24h |
| 85 | 1.2.2.2 | 王城副本支线剧情文字修改和编辑 | 3d | 2012-06-08 | 2012-06-12 | 84 | 73d | 0d | start no earlier than 2012-05-30 | 姜浩 | 24h |
| 86 | 1.2.2.3 | 沼泽副本支线剧情文字修改和编辑 | 3d | 2012-06-13 | 2012-06-15 | 85 | 73d | 0d | start no earlier than 2012-05-30 |  |  |
| 87 | 1.2.2.4 | 森林副本支线剧情文字修改和编辑 | 3d | 2012-06-18 | 2012-06-20 | 86 | 73d |  | start no earlier than 2012-05-30 |  |  |
| 88 | 1.2.3 | **支线任务的添加** | 2d? | 2012-05-29 | 2012-05-30 |  | 88d |  |  |  | 16h |
| 89 | 1.2.3.1 | 到矿洞的支线任务 | 1d? | 2012-05-29 | 2012-05-29 |  | 89d |  | finish no earlier than 2012-05-29 | 姜浩 | 8h |
| 90 | 1.2.3.2 | 矿洞配方掉落，任务奖励 | 1d? | 2012-05-30 | 2012-05-30 |  | 88d |  | start no earlier than 2012-05-30 | 姜浩 | 8h |

| ID | WBS | Task | Duration | Start | Finish | Predecessors | Complete | Remaining | Total slack | Free slack | Constraint | Resources | Work | Actual work |
| --- | --- | --- | --- | --- | --- | --- | --- | --- | --- | --- | --- | --- | --- | --- |
| 91 | 1.3 | **数值系统的修改** | 10d? | 2012-05-21 A | 2012-06-01 |  | 88% | 1.25d? | 86d |  |  |  | 96h | 96h |
| 92 | 1.3.1 | 酒馆升级 | 4d? | 2012-05-21 A | 2012-05-24 A |  | 100% |  |  |  | finish no earlier than 2012-05-24 | Eric | 32h | 32h |
| 93 | 1.3.2 | 自宅升级 | 4d? | 2012-05-21 A | 2012-05-24 A |  | 100% |  |  |  | finish no earlier than 2012-05-24 | Eric | 32h | 32h |
| 94 | 1.3.3 | 主角晋级 | 4d? | 2012-05-21 A | 2012-05-24 A |  | 100% |  |  |  | finish no earlier than 2012-05-24 | Eric | 32h | 32h |
| 95 | 1.3.4 | 维修，铁匠铺 | 1d? | 2012-05-23 A | 2012-05-23 A |  | 100% |  |  |  | start no earlier than 2012-05-23 |  |  |  |
| 96 | 1.3.5 | 强化 | 1d? | 2012-05-23 A | 2012-05-23 A |  | 100% |  |  |  | start no earlier than 2012-05-23 |  |  |  |
| 97 | 1.3.6 | 佣兵位置扩展 | 1d? | 2012-05-28 | 2012-05-28 |  |  |  | 90d |  | start no earlier than 2012-05-28 |  |  |  |
| 98 | 1.3.7 | 运营的参与数值测试 | 1d? | 2012-06-01 | 2012-06-01 |  |  |  | 86d |  | start no earlier than 2012-06-01 |  |  |  |
| 99 | 1.4 | **产品功能模块** | 22d? | 2012-05-21 A | 2012-06-19 |  | 43% | 12.52d? | 74d |  |  |  | 513h | 160h |
| 100 | 1.4.1 | **佣兵派驻打工** | 15d? | 2012-05-21 A | 2012-06-08 A |  | 100% |  |  |  |  |  | 104h | 104h |
| 101 | 1.4.1.1 | 策划 | 1d? | 2012-05-21 A | 2012-05-21 A |  | 100% |  |  |  | start no earlier than 2012-05-21 | Eric | 8h | 8h |
| 102 | 1.4.1.2 | 核对详细策划 | 1d? | 2012-05-31 A | 2012-05-31 A |  | 100% |  |  |  | start no earlier than 2012-05-31 | Eric | 8h | 8h |
| 103 | 1.4.1.3 | 美术UI | 2d? | 2012-06-01 A | 2012-06-04 A | 102 | 100% |  |  |  | finish no earlier than 2012-05-31 | 余晓丽 | 16h | 16h |
| 104 | 1.4.1.4 | 地图动效 | 1d? | 2012-06-01 A | 2012-06-01 A | 102 | 100% |  |  |  | start no earlier than 2012-05-30 | 宋文卿 | 8h | 8h |
| 105 | 1.4.1.5 | 技术需求分析 | 1d? | 2012-06-01 A | 2012-06-01 A |  | 100% |  |  |  | start no earlier than 2012-06-01 | 张琦 | 8h | 8h |
| 106 | 1.4.1.6 | 前端 | 3d | 2012-06-05 A | 2012-06-07 A | 103 | 100% |  |  |  | start no earlier than 2012-05-21 | 夏俊杰 | 24h | 24h |
| 107 | 1.4.1.7 | 后端 | 3d | 2012-06-05 A | 2012-06-07 A | 103 | 100% |  |  |  | start no earlier than 2012-05-21 | 李钊 | 24h | 24h |
| 108 | 1.4.1.8 | 测试 | 1d? | 2012-06-08 A | 2012-06-08 A | 106 | 100% |  |  |  | start no earlier than 2012-05-21 | 桃子 | 8h | 8h |
| 109 | 1.4.2 | **升级建筑（自宅，3个酒馆，铁匠铺）** | 3d? | 2012-06-01 A | 2012-06-05 |  | 56% | 1.31d? | 84d |  |  |  | 32h | 18h |
| 110 | 1.4.2.1 | 策划 | 1d? | 2012-06-01 A | 2012-06-01 A |  | 100% |  |  |  | start no earlier than 2012-06-01 | Eric | 8h | 8h |
| 111 | 1.4.2.2 | 美术（3个酒馆，自宅，铁匠铺） | 1d? | 2012-06-04 A | 2012-06-04 | 110 | 25% | 0.75d? | 84.5d | 0d | start no earlier than 2012-06-01 | 卢靖 | 8h | 2h |
| 112 | 1.4.2.3 | 前端 | 1d? | 2012-06-05 A | 2012-06-05 | 111 | 50% | 0.5d? | 84d |  | start no earlier than 2012-05-15 | 张小庆 | 8h | 4h |
| 113 | 1.4.2.4 | 后端 | 1d? | 2012-06-04 A | 2012-06-04 | 110 | 50% | 0.5d? | 85d |  | start no earlier than 2012-05-15 | 李钊 | 8h | 4h |
| 114 | 1.4.3 | **礼物系统（调整）** | 4d? | 2012-06-14 A | 2012-06-19 |  | 16% | 3.38d? | 74d |  |  |  | 25h | 6h |
| 115 | 1.4.3.1 | 数值，送的具体内容 | 3d? | 2012-06-14 A | 2012-06-18 |  | 21% | 2.38d? | 74d | 0d | finish no earlier than 2012-06-18 | Eric; 姜浩 | 25h | 6h |
| 116 | 1.4.3.2 | 测试 | 1d? | 2012-06-19 | 2012-06-19 | 115 |  |  | 74d |  | start no earlier than 2012-04-23 |  |  |  |

Notes:
- 98: 每次需要开新号来测试
- 109: 1个在自村（普通战士，雇佣兵）， 1个在王城（主要刷法师），1个在森林部落（主要刷弓手），要求酒馆的针对不同的属性和环境，酒馆的建筑有不同点（界面,UI，建筑都会有不同）
- 114: IPANDA的移植，有HTML系统的通知，有FLASH，有HTML / 4.24 移植第一版完成，需策划详细确认（数值） -- BY 4.25
- 115: 礼物系统需要核对下内容

| ID | WBS | Task | Duration | Start | Finish | Predecessors | Complete | Remaining | Total slack | Free slack | Constraint | Resources | Work | Actual work |
| --- | --- | --- | --- | --- | --- | --- | --- | --- | --- | --- | --- | --- | --- | --- |
| 117 | 1.4.4 | **日志消息** | 9d? | 2012-06-04 | 2012-06-14 |  |  |  | 0d | 77d |  | Eric; 姜浩 | 208h | 16h |
| 118 | 1.4.4.1 | 姜浩策划 | 1d | 2012-06-04 | 2012-06-04 |  |  |  | 85d |  | start no earlier than 2012-06-04 | 姜浩 | 8h |  |
| 119 | 1.4.4.2 | Eric策划 | 1d? | 2012-06-04 | 2012-06-04 |  |  |  | 81d | 0d | start no earlier than 2012-06-04 | Eric | 8h |  |
| 120 | 1.4.4.3 | 八代交互 | 1d? | 2012-06-05 | 2012-06-05 | 119 |  |  | 81d | 3d | start no earlier than 2012-06-04 | 八代 | 8h |  |
| 121 | 1.4.4.4 | 前端 | 3d? | 2012-06-11 | 2012-06-13 | 120 |  |  | 78d |  | finish no earlier than 2012-06-13 | 小庆 | 24h |  |
| 122 | 1.4.4.5 | 后端数据 | 1d | 2012-06-13 | 2012-06-13 | 119 |  |  | 77d | 0d | finish no earlier than 2012-06-13 | 李钊; 章昕 | 16h |  |
| 123 | 1.4.4.6 | 测试 | 1d? | 2012-06-14 | 2012-06-14 | 122 |  |  | 77d |  | start no earlier than 2012-05-15 |  |  |  |
| 124 | 1.4.5 | **新手引导** | 11d? | 2012-06-01 | 2012-06-15 |  |  |  | 76d |  |  | 姜浩 | 128h |  |
| 125 | 1.4.5.1 | 策划和具体内容 | 1d? | 2012-06-01 | 2012-06-01 |  |  |  | 77.5d | 0d | start no earlier than 2012-06-01 | 姜浩 | 8h |  |
| 126 | 1.4.5.2 | 需求分析核对 | 0.5d | 2012-06-04 | 2012-06-04 | 125 |  |  | 77.5d | 0d | start no earlier than 2012-05-30 | 立军; 张琦 | 8h |  |
| 127 | 1.4.5.3 | UI | 3d | 2012-06-04 | 2012-06-07 | 126 |  |  | 77.5d | 1.5d | start no earlier than 2012-05-15 | 余晓丽 | 24h |  |
| 128 | 1.4.5.4 | 技术 | 3d | 2012-06-11 | 2012-06-13 | 127 |  |  | 76d | 0d | finish no earlier than 2012-06-13 |  |  |  |
| 129 | 1.4.5.5 | 测试 | 2d? | 2012-06-14 | 2012-06-15 | 128 |  |  | 76d |  | finish no earlier than 2012-06-14 |  |  |  |
| 130 | 1.4.6 | **矿洞配方掉落分布，任务奖励** | 8d? | 2012-06-01 A | 2012-06-12 |  | 67% | 2.67d? | 79d |  |  |  | 16h | 16h |
| 131 | 1.4.6.1 | 配方的等级和主角等级对应框架 | 1d? | 2012-06-04 A | 2012-06-04 A |  | 100% |  |  |  | finish no earlier than 2012-06-04 | 姜浩 | 8h | 8h |
| 132 | 1.4.6.2 | 和剧情，任务等交叉的内容（穿插于各个副本） | 1d? | 2012-06-01 A | 2012-06-01 A |  | 100% |  |  |  | start no earlier than 2012-06-01 | 姜浩 | 8h | 8h |
| 133 | 2 | **美术模块整体补充和优化** | 100d? | 2012-05-15 A | 2012-10-01 |  | 13% | 86.58d? | 0d |  |  |  | 2179.2h | 293.44h |
| 134 | 2.1 | **LOGO，片头，场景切换，串场内容（补充）** | 12d? | 2012-05-30 A | 2012-06-14 |  | 15% | 10.15d? | 77d |  |  | 卢靖 | 160h | 30.77h |
| 135 | 2.1.1 | 进入游戏场景 | 5d | 2012-05-30 | 2012-06-05 |  |  |  | 84d |  | start no earlier than 2012-05-30 |  |  |  |
| 136 | 2.1.2 | 场景切换 | 2d | 2012-06-07 A | 2012-06-08 A |  | 100% |  |  |  | finish no earlier than 2012-06-08 | 卢靖 | 16h | 16h |
| 137 | 2.1.3 | Loading动画 | 5d | 2012-06-07 | 2012-06-13 |  |  |  | 78d |  | finish no earlier than 2012-06-13 | 赵子敬 | 40h |  |
| 138 | 2.1.4 | 场景名称显示修改 | 1d? | 2012-06-14 | 2012-06-14 | 136 |  |  | 77d |  | start no earlier than 2012-06-14 | 宋文卿 | 8h |  |
| 139 | 2.2 | **UI整体优化** | 15d? | 2012-05-28 A | 2012-06-15 |  | 45% | 8.18d? | 76d |  |  |  | 304h | 98.67h |
| 140 | 2.2.1 | **UI界面优化（用户体验和顺手）** | 12d? | 2012-05-31 A | 2012-06-15 |  | 50% | 6d? | 76d |  |  | 大强; 余晓丽 | 280h | 90.67h |
| 141 | 2.2.1.1 | UI界面核对优化的整体调整方案 | 3d? | 2012-05-31 A | 2012-06-04 A |  | 100% |  |  |  | finish no earlier than 2012-06-04 | 大强; 余晓丽; 策划 | 72h | 72h |
| 142 | 2.2.1.2 | UI零星修改,合成/订单美术制作 | 3d | 2012-06-12 | 2012-06-14 | 144 |  |  | 77d |  | finish no earlier than 2012-06-14 |  |  |  |
| 143 | 2.2.1.3 | 前端替换 | 1d? | 2012-06-15 | 2012-06-15 |  |  |  | 76d |  | finish no earlier than 2012-06-15 | 张琦 | 8h |  |
| 144 | 2.2.1.4 | 技能卷轴图标素材 | 1d? | 2012-06-07 A | 2012-06-07 A |  | 100% |  |  |  | start no earlier than 2012-06-07 | 余晓丽 | 8h | 8h |

Notes:
- 117: 包含大喇叭，日志需要调整，交互的日志消息要加上去
- 118: 大喇叭，稀有的内容，需要发布
- 119: 第一版框架已经完成 - 5.2
- 122: 具体包括： 1个场景，一个人物，1个UI初稿
- 125: 操作引导，先出文档，然后美术跟进素材，技术最后实现
- 139: UI表现效果，UI特效 没有，需要补充优化； / UE交互已经和策划核对过，暂时OK； / 美观度方便，请大强安排王晔一并参与，配合优化； / 5月15日 余晓丽 确认下UI替换是否已经都完成 -- 5.15
- 141: 包括图标的漂亮，排版 / 顺手，体现策划的意思，内容（用户操作习惯，策划的需求） / 需要特别关注合成一块

| ID | WBS | Task | Duration | Start | Finish | Predecessors | Complete | Remaining | Total slack | Free slack | Constraint | Resources | Work | Actual work |
| --- | --- | --- | --- | --- | --- | --- | --- | --- | --- | --- | --- | --- | --- | --- |
| 145 | 2.2.2 | **UI特效优化** | 1d? | 2012-06-05 A | 2012-06-05 A | 141 | 100% |  |  |  |  |  | 8h | 8h |
| 146 | 2.2.2.1 | 进度安排 | 1d? | 2012-06-05 A | 2012-06-05 A |  | 100% |  |  |  | finish no earlier than 2012-06-05 | 宋文卿 | 8h | 8h |
| 147 | 2.2.3 | **整体美观度** | 2d? | 2012-05-28 | 2012-05-29 |  |  |  | 89d |  |  |  | 16h |  |
| 148 | 2.2.3.1 | 美术制作 | 1d? | 2012-05-28 | 2012-05-28 |  |  |  | 90d |  | start no earlier than 2012-05-28 | 宋文卿 | 8h |  |
| 149 | 2.2.3.2 | 特效添加 | 1d? | 2012-05-29 | 2012-05-29 |  |  |  | 89d |  | finish no earlier than 2012-05-29 | 张琦 | 8h |  |
| 150 | 2.3 | 主界面图标 | 2d? | 2012-05-28 | 2012-05-29 |  |  |  | 89d |  | finish no earlier than 2012-05-29 | 王晔 | 16h |  |
| 151 | 2.4 | **战斗场景特效优化** | 12d? | 2012-05-31 A | 2012-06-15 |  | 6% | 11.23d? | 76d |  |  |  | 63.2h | 16h |
| 152 | 2.4.1 | 特效修改方案需求分析再次核对 | 0.5d | 2012-05-31 A | 2012-05-31 A |  | 100% |  |  |  | start no earlier than 2012-05-31 | 梁新强; 宋文卿 | 8h | 8h |
| 153 | 2.4.2 | 技能特效 | 9.5d | 2012-05-31 | 2012-06-13 | 152 |  |  | 0d |  | finish no earlier than 2012-06-13 | 宋文卿 [10%]; 夏俊杰 [10%] | 15.2h |  |
| 154 | 2.4.3 | 上传 | 1d? | 2012-06-14 A | 2012-06-14 | 153 | 33% | 0.67d? | 77d |  | finish no earlier than 2012-06-15 | 宋文卿; 大强; 夏俊杰 | 24h | 8h |
| 155 | 2.4.4 | 好友援助技能特效 | 1d? | 2012-06-15 A | 2012-06-15 |  |  | 1d? | 76d |  |  |  |  |  |
| 156 | 2.4.5 | 新加3个场景特效 | 1d? | 2012-06-06 | 2012-06-06 |  |  |  | 83d |  | start no earlier than 2012-06-06 | 姜浩; 宋文卿 | 16h |  |
| 157 | 2.5 | **动作优化** | 11d? | 2012-05-15 A | 2012-05-29 |  | 92% | 0.92d? | 89d |  |  |  | 96h | 88h |
| 158 | 2.5.1 | **人物优化方案核对** | 11d? | 2012-05-15 A | 2012-05-29 |  | 91% | 1d? | 89d |  |  |  | 88h | 80h |
| 159 | 2.5.1.1 | 25个NPC制作 | 4d? | 2012-05-15 A | 2012-05-18 A |  | 100% |  |  |  | finish no earlier than 2012-05-30 | 赵子敬 | 32h | 32h |
| 160 | 2.5.1.2 | 人物头像 | 6d? | 2012-05-18 A | 2012-05-25 A |  | 100% |  |  |  | start no earlier than 2012-05-18 | 赵子敬 | 48h | 48h |
| 161 | 2.5.1.3 | NPC头像 | 1d? | 2012-05-29 | 2012-05-29 |  |  |  | 89d |  | start no earlier than 2012-05-29 | 大强 | 8h |  |
| 162 | 2.5.2 | 战斗动作优化 | 1d? | 2012-05-15 A | 2012-05-15 A |  | 100% |  |  |  | start no earlier than 2012-05-15 | 赵子敬 | 8h | 8h |
| 163 | 2.6 | **道具** | 29d? | 2012-05-15 A | 2012-06-22 |  | 33% | 19.33d? | 71d |  |  |  | 56h | 20h |
| 164 | 2.6.1 | 道具制作-已完成 | 1d? | 2012-05-15 A | 2012-05-15 A |  | 100% |  |  |  | start no earlier than 2012-05-15 |  |  |  |
| 165 | 2.6.2 | **工作台-剩余4个** | 3d | 2012-06-20 A | 2012-06-22 |  | 33% | 2d | 71d |  |  | 蒋德仁 | 48h | 20h |
| 166 | 2.6.2.1 | 灶台，书桌，试剂台，珠宝加工台 | 3d | 2012-06-20 A | 2012-06-22 |  | 33% | 2d | 71d |  | finish no earlier than 2012-05-30 | 蒋德仁 | 24h | 8h |
| 167 | 2.6.3 | **任务道具-信、材料之类** | 2d? | 2012-06-14 | 2012-06-15 |  |  |  | 76d |  |  |  | 8h |  |
| 168 | 2.6.3.1 | 策划需求 | 1d? | 2012-06-14 | 2012-06-14 |  |  |  | 76d | 0d | start no earlier than 2012-06-14 | 姜浩 | 8h |  |
| 169 | 2.6.3.2 | 美术制作 | 1d? | 2012-06-15 | 2012-06-15 | 168 |  |  | 76d |  | start no earlier than 2012-05-25 |  |  |  |

Notes:
- 146: 美术进度初步核对已完成，预计在 23号， / 周一需要跟张琦再次核对，同步进度 -- 5.18
- 147: 大强安排王晔参加，配合修改
- 151: 表现力不强，需要优化
- 153: 2周完成70个技能特效
- 158: 5月30日 NPC全部完成， / 赵子敬每天做2个，每周四上一批人物，节点为 5月 17/24/31 。 / 超级佣兵 6月20日完成 。 -- 5.15
- 161: 外包已完成，需要大强安排加一下类名，把新版的素材上传到服务器 - 5.29
- 162: 战斗动作已完成，但希望表现可以更强，动作幅度，战斗动作，人物死亡动作 等 能够继续优化
- 164: 已经全部替换上去了
- 166: 排到墨堡的概念图出完
- 168: 分布在各个场景和副本里面，从矿洞开始有

| ID | WBS | Task | Duration | Start | Finish | Predecessors | Complete | Remaining | Total slack | Free slack | Constraint | Resources | Work | Actual work |
| --- | --- | --- | --- | --- | --- | --- | --- | --- | --- | --- | --- | --- | --- | --- |
| 170 | 2.7 | **世界地图** | 3d | 2012-06-12 A | 2012-06-14 |  | 20% | 2.4d | 77d |  |  |  | 4h | 4h |
| 171 | 2.7.1 | 世界地图优化方案（其余图标都需要上去） | 0.5d | 2012-06-12 A | 2012-06-12 A |  | 100% |  |  |  | start no earlier than 2012-06-12 | 大强 | 4h | 4h |
| 172 | 2.7.2 | 制作 | 2d | 2012-06-13 | 2012-06-14 | 171 |  |  | 77d |  | start no earlier than 2012-06-13 |  |  |  |
| 173 | 2.8 | **场景** | 97d? | 2012-05-18 A | 2012-10-01 |  |  | 96.53d? | 0d |  |  |  | 1480h | 36h |
| 174 | 2.8.1 | **前期场景整体优化** | 11d | 2012-05-18 | 2012-06-01 |  |  |  | 86d |  |  |  | 232h |  |
| 175 | 2.8.1.1 | 场景整体优化核对方案 | 2d | 2012-05-31 | 2012-06-01 |  |  |  | 86d |  | start no earlier than 2012-05-31 | 梁新强; 卢靖; 邹慧; 蒋德仁 | 64h |  |
| 176 | 2.8.1.2 | **美术调整** | 7d | 2012-05-18 | 2012-05-28 |  |  |  | 90d |  |  |  | 168h |  |
| 177 | 2.8.1.2.1 | 地形块 | 7d | 2012-05-18 | 2012-05-28 |  |  |  | 90d |  | finish no earlier than 2012-05-28 | 邹慧 | 56h |  |
| 178 | 2.8.1.2.2 | 颜色 | 7d | 2012-05-18 | 2012-05-28 |  |  |  | 90d |  | finish no earlier than 2012-05-28 | 邹慧 | 56h |  |
| 179 | 2.8.1.2.3 | 装饰 | 7d | 2012-05-18 | 2012-05-28 |  |  |  | 90d |  | finish no earlier than 2012-05-28 | 蒋德仁 | 56h |  |
| 180 | 2.8.2 | **副本场景** | 77d? | 2012-06-15 | 2012-10-01 |  |  |  | 0d |  |  | 卢靖 | 1232h | 32h |
| 181 | 2.8.2.1 | **墨堡** | 6d? | 2012-06-15 | 2012-06-22 |  |  |  | 71d |  |  | 卢靖 | 144h |  |
| 182 | 2.8.2.1.1 | 副本概念策划（包括副本描述，怪的种类，NPC，副本掉落的配方，道具） | 0.25d? | 2012-06-15 | 2012-06-15 |  |  |  | 71.75d | 0d | start no earlier than 2012-06-15 | 姜浩; 卢靖; 大强; 陈志荣 | 8h |  |
| 183 | 2.8.2.1.2 | 场景概念图 | 1d? | 2012-06-18 | 2012-06-18 | 182 |  |  | 71d | 0d | start no earlier than 2012-06-18 | 卢靖 | 8h |  |
| 184 | 2.8.2.1.3 | 详细美术需求分析，文档（装饰物，地形块，战斗背景） | 1d? | 2012-06-19 | 2012-06-19 | 183 |  |  | 71d | 0d | start no earlier than 2012-06-01 | 大强 | 8h |  |
| 185 | 2.8.2.1.4 | 美术制作和导出 | 3d | 2012-06-20 | 2012-06-22 | 184 |  |  | 71d |  | start no earlier than 2012-06-01 | 卢靖; 蒋德仁; 邹慧 | 72h |  |
| 186 | 2.8.2.2 | 古代遗迹 | 5d | 2012-06-25 | 2012-06-29 |  |  |  | 66d |  | start no earlier than 2012-06-25 | 卢靖 | 40h |  |
| 187 | 2.8.2.3 | 龙顶山 | 5d | 2012-07-02 | 2012-07-06 |  |  |  | 61d |  | start no earlier than 2012-07-02 | 卢靖 | 40h |  |
| 188 | 2.8.2.4 | 修改和修正时间 | 5d | 2012-07-09 | 2012-07-13 |  |  |  | 56d |  | start no earlier than 2012-07-09 | 卢靖 | 40h |  |
| 189 | 2.8.2.5 | 黑森林（待定） | 5d | 2012-07-16 | 2012-07-20 |  |  |  | 51d |  | start no earlier than 2012-07-16 | 卢靖 | 40h |  |
| 190 | 2.8.2.6 | 兽人码头（待定） | 5d | 2012-07-23 | 2012-07-27 |  |  |  | 46d |  | start no earlier than 2012-07-23 | 卢靖 | 40h |  |
| 191 | 2.8.2.7 | 雪漫镇（待定） | 5d | 2012-07-30 | 2012-08-03 |  |  |  | 41d |  | start no earlier than 2012-07-30 | 卢靖 | 40h |  |
| 192 | 2.8.2.8 | 修改和修正时间 | 5d | 2012-08-06 | 2012-08-10 |  |  |  | 36d |  | start no earlier than 2012-08-06 |  |  |  |
| 193 | 2.8.2.9 | 黑暗村（待定） | 5d | 2012-08-13 | 2012-08-17 |  |  |  | 31d |  | start no earlier than 2012-08-13 | 卢靖 | 40h |  |
| 194 | 2.8.2.10 | 冰之墙堡（待定） | 5d | 2012-08-20 | 2012-08-24 |  |  |  | 26d |  | start no earlier than 2012-08-20 | 卢靖 | 40h |  |
| 195 | 2.8.2.11 | 尼玛神庙（待定） | 5d | 2012-08-27 | 2012-08-31 |  |  |  | 21d |  | start no earlier than 2012-08-27 | 卢靖 | 40h |  |
| 196 | 2.8.2.12 | 修改和修正时间 | 5d | 2012-09-03 | 2012-09-07 |  |  |  | 16d |  | start no earlier than 2012-09-03 |  |  |  |
| 197 | 2.8.2.13 | 精灵城（待定） | 5d | 2012-09-10 | 2012-09-14 |  |  |  | 11d |  | start no earlier than 2012-09-10 | 卢靖 | 40h |  |
| 198 | 2.8.2.14 | 黑河谷（待定） | 5d | 2012-09-17 | 2012-09-21 |  |  |  | 6d |  | start no earlier than 2012-09-17 | 卢靖 | 40h |  |
| 199 | 2.8.2.15 | 龙骨墓园（待定） | 5d | 2012-09-24 | 2012-09-28 |  |  |  | 1d |  | start no earlier than 2012-09-24 | 卢靖 | 40h |  |
| 200 | 2.8.2.16 | 修改和修正时间 | 2d | 2012-09-28 | 2012-10-01 |  |  |  | 0d |  | start no earlier than 2012-09-28 |  |  |  |

Notes:
- 171: 17个地点的图标要出来（第一区图标）,?图标
- 182: 核对下怪，NPC，掉落物品，图鉴等

| ID | WBS | Task | Duration | Start | Finish | Predecessors | Complete | Remaining | Total slack | Free slack | Constraint | Resources | Work | Actual work |
| --- | --- | --- | --- | --- | --- | --- | --- | --- | --- | --- | --- | --- | --- | --- |
| 201 | 2.8.3 | **铁匠铺** | 1d? | 2012-05-28 A | 2012-05-28 |  | 50% | 0.5d? | 90d |  |  |  | 8h | 4h |
| 202 | 2.8.3.1 | 美术制作-放村子 | 1d? | 2012-05-28 A | 2012-05-28 |  | 50% | 0.5d? | 90d |  | start no earlier than 2012-05-15 | 卢靖 | 8h | 4h |
| 203 | 2.8.4 | 竞技场 | 1d? | 2012-06-01 | 2012-06-01 |  |  |  | 86d |  | start no earlier than 2012-06-01 | 卢靖 | 8h |  |
| 204 | 2.8.5 | 三个酒馆(需要2个策划确认） | 1d? | 2012-06-01 | 2012-06-01 |  |  |  | 86d |  | start no earlier than 2012-06-01 |  |  |  |
| 205 | 3 | **其他** | 40d? | 2012-05-29 A | 2012-07-23 |  | 17% | 33.2d? | 50d |  |  |  | 406h | 112h |
| 206 | 3.1 | 长连接和整体系统的核对-周一 | 1d? | 2012-06-11 | 2012-06-11 |  |  |  | 80d |  | start no earlier than 2012-06-11 | 老大 | 8h |  |
| 207 | 3.2 | **剧情编辑器的开发（技术）** | 14d? | 2012-05-29 A | 2012-06-15 |  | 76% | 3.29d? | 76d |  |  |  | 112h | 96h |
| 208 | 3.2.1 | 需求核对 | 1d? | 2012-05-29 A | 2012-05-29 A |  | 100% |  |  |  | start no earlier than 2012-05-29 | 张琦 | 8h | 8h |
| 209 | 3.2.2 | 第二期内容 | 2d | 2012-06-14 | 2012-06-15 |  |  |  | 76d |  | start no earlier than 2012-06-14 | 张琦 | 16h |  |
| 210 | 3.2.3 | 开发 | 5.5d | 2012-05-29 A | 2012-06-05 A |  | 100% |  |  |  | start no earlier than 2012-05-29 | 张琦; 夏俊杰 | 88h | 88h |
| 211 | 3.3 | **副本编辑器的修改（技术）** | 1.25d? | 2012-06-12 | 2012-06-13 |  |  |  | 78.75d |  |  |  | 12h |  |
| 212 | 3.3.1 | 编辑器的快捷键 | 2eh | 2012-06-12 | 2012-06-12 |  |  |  | 333.88d |  | start no earlier than 2012-06-12 | 张琦 | 2h |  |
| 213 | 3.3.2 | 撤销 | 1d? | 2012-06-12 | 2012-06-13 | 214 |  |  | 78.75d |  |  | 张琦 | 8h |  |
| 214 | 3.3.3 | 扩展地图功能 | 2eh | 2012-06-12 | 2012-06-12 |  |  |  | 332.75d | 0d | start no earlier than 2012-06-12 | 张琦 | 2h |  |
| 215 | 3.4 | **技能编辑器的开发（技术）** | 3d | 2012-06-12 | 2012-06-14 |  |  |  | 77d |  |  |  | 26h |  |
| 216 | 3.4.1 | 需求 | 2eh | 2012-06-12 | 2012-06-12 |  |  |  | 333.88d |  | start no earlier than 2012-06-12 | Eric | 2h |  |
| 217 | 3.4.2 | 技术开发 | 3d | 2012-06-12 | 2012-06-14 |  |  |  | 77d |  | start no earlier than 2012-06-12 | 夏俊杰 | 24h |  |
| 218 | 3.5 | **音乐 (30号之后)** | 22d? | 2012-06-22 | 2012-07-23 |  |  |  | 50d |  |  | Eric | 208h |  |
| 219 | 3.5.1 | 一个副本一个音乐，7个 | 4d? | 2012-06-22 | 2012-06-27 |  |  |  | 68d |  | start no earlier than 2012-06-22 | 姜浩 | 32h |  |
| 220 | 3.5.2 | 剧情音乐（讨论中，第二期） | 17d? | 2012-06-29 | 2012-07-23 |  |  |  | 50d |  | start no earlier than 2012-06-29 |  |  |  |
| 221 | 3.6 | **音效 (30号之后)** | 3d | 2012-06-12 | 2012-06-14 |  |  |  | 0d | 77d |  | Eric | 40h | 16h |
| 222 | 3.6.1 | 6月15日前出列表 | 3d | 2012-06-12 | 2012-06-14 |  |  |  | 77d |  | start no earlier than 2012-06-12 | Eric | 24h |  |
| 223 | 4 | **新版策划内容和美术（VERSION 1.1版本）** | 23d? | 2012-05-25 A | 2012-06-26 |  | 9% | 20.91d? | 69d |  |  |  | 208h | 13.37h |
| 224 | 4.1 | **佣兵系统新功能(VERSION1.1.2)** | 11d? | 2012-06-01 A | 2012-06-15 |  | 1% | 10.91d? | 76d |  |  | Eric | 120h | 1.36h |
| 225 | 4.1.1 | **策划** | 2d | 2012-06-11 | 2012-06-12 |  |  |  | 79d |  |  |  | 32h |  |
| 226 | 4.1.1.1 | **佣兵修炼** | 2d | 2012-06-11 | 2012-06-12 |  |  |  | 79d |  |  | Eric | 16h |  |
| 227 | 4.1.1.1.1 | 信赖度（出战的佣兵和主角间，动态提升一部分的属性值，花费时间） | 2d | 2012-06-11 | 2012-06-12 |  |  |  | 79d |  | start no earlier than 2012-06-11 |  |  |  |

Notes:
- 203: 需要确认UI是否策划需求已经OK？
- 209: 插入和预览
- 218: 最后一周前核对进度

| ID | WBS | Task | Duration | Start | Finish | Complete | Remaining | Total slack | Constraint | Resources | Work | Actual work |
| --- | --- | --- | --- | --- | --- | --- | --- | --- | --- | --- | --- | --- |
| 228 | 4.1.1.2 | **洗点** | 2d | 2012-06-11 | 2012-06-12 |  |  | 79d |  | Eric | 16h |  |
| 229 | 4.1.1.2.1 | 转职（花费声望） | 2d | 2012-06-11 | 2012-06-12 |  |  | 79d | start no earlier than 2012-06-11 |  |  |  |
| 230 | 4.1.1.2.2 | 换属性（花费声望） | 2d | 2012-06-11 | 2012-06-12 |  |  | 79d | start no earlier than 2012-06-11 |  |  |  |
| 231 | 4.1.1.2.3 | 随机基础属性点（花费声望,宝石花费） | 2d | 2012-06-11 | 2012-06-12 |  |  | 79d | start no earlier than 2012-06-11 |  |  |  |
| 232 | 4.1.2 | 佣兵合成 | 2d | 2012-06-11 | 2012-06-12 |  |  | 79d | start no earlier than 2012-06-11 | Eric | 16h |  |
| 233 | 4.1.3 | 地图随机事件和随机宝箱 | 2d | 2012-06-14 A | 2012-06-15 | 7% | 1.87d | 76d |  | Eric | 16h | 1.04h |
| 234 | 4.1.4 | 新技能（有部分功能开发） | 2d | 2012-06-14 | 2012-06-15 |  |  | 76d | start no earlier than 2012-06-14 | Eric | 16h |  |
| 235 | 4.1.5 | 美术和技术核对 | 1d? | 2012-06-01 | 2012-06-01 |  |  | 86d | start no earlier than 2012-06-01 |  |  |  |
| 236 | 4.1.6 | UI美术完成 | 1d? | 2012-06-01 | 2012-06-01 |  |  | 86d | start no earlier than 2012-06-01 |  |  |  |
| 237 | 4.2 | **交互第二期** | 23d? | 2012-05-25 A | 2012-06-26 | 16% | 19.27d? | 69d |  |  | 88h | 12h |
| 238 | 4.2.1 | **功能完成-P1（VERSION1.1.1)** | 18d? | 2012-06-01 A | 2012-06-26 | 22% | 14d? | 69d |  |  | 8h | 8h |
| 239 | 4.2.1.1 | 竞技场1V1策划 | 1d? | 2012-06-01 A | 2012-06-01 A | 100% |  |  | start no earlier than 2012-06-01 | 八代 | 8h | 8h |
| 240 | 4.2.1.2 | 资源抢占策划 | 1d? | 2012-06-01 A | 2012-06-01 A | 100% |  |  | start no earlier than 2012-06-01 |  |  |  |
| 241 | 4.2.1.3 | 神勇店策划 | 3d? | 2012-06-04 | 2012-06-06 |  |  | 83d | finish no earlier than 2012-06-06 |  |  |  |
| 242 | 4.2.1.4 | 美术技术核对 | 1d? | 2012-06-01 | 2012-06-01 |  |  | 86d | start no earlier than 2012-06-01 |  |  |  |
| 243 | 4.2.1.5 | UI美术 | 3d? | 2012-06-22 | 2012-06-26 |  |  | 69d | finish no earlier than 2012-06-26 |  |  |  |
| 244 | 4.2.2 | **策划-P2(VERSION2.0)** | 3d? | 2012-05-25 A | 2012-05-29 | 29% | 2.14d? | 89d |  |  | 32h | 4h |
| 245 | 4.2.2.1 | **竞技场3V3（先策划完成，技术做准备，长连接）** | 1d? | 2012-05-25 A | 2012-05-25 | 50% | 0.5d? | 91d |  | 八代 | 16h | 4h |
| 246 | 4.2.2.1.1 | 初期第一稿 | 1d? | 2012-05-25 A | 2012-05-25 A | 100% |  |  | start no earlier than 2012-05-25 |  |  |  |
| 247 | 4.2.2.1.2 | 第二稿修改 | 1d? | 2012-05-25 | 2012-05-25 |  |  | 91d | start no earlier than 2012-05-25 | 八代 | 8h |  |
| 248 | 4.2.2.2 | 声望店 | 0.5d? | 2012-05-28 | 2012-05-28 |  |  | 90.5d | start no earlier than 2012-05-28 | 八代; Eric | 8h |  |
| 249 | 4.2.2.3 | 详细策划优化 | 1d? | 2012-05-29 | 2012-05-29 |  |  | 89d | start no earlier than 2012-05-29 | 八代 | 8h |  |
| 250 | 4.2.3 | **策划-P3(VERSION2.1.1)** | 6d? | 2012-06-11 | 2012-06-18 |  |  | 75d |  |  | 48h |  |
| 251 | 4.2.3.1 | 世界BOSS | 4d | 2012-06-11 | 2012-06-14 |  |  | 77d | finish no earlier than 2012-06-14 | 八代 | 32h |  |
| 252 | 4.2.3.2 | 训练营 | 2d? | 2012-06-15 | 2012-06-18 |  |  | 75d | finish no earlier than 2012-06-18 | 八代 | 16h |  |

Notes:
- 234: 分5个级别，王城之后，随着新副本而逐步放出

| ID | WBS | Task | Duration | Start | Finish | Complete | Remaining | Total slack | Constraint | Resources | Work | Actual work |
| --- | --- | --- | --- | --- | --- | --- | --- | --- | --- | --- | --- | --- |
| 253 | 5 | **运营前准备** | 31d? | 2012-05-15 A | 2012-06-26 | 11% | 27.56d? | 69d |  |  | 272h | 19.33h |
| 254 | 5.1 | **产品准备** | 21d? | 2012-05-15 A | 2012-06-12 | 25% | 15.75d? | 79d |  |  | 40h | 8h |
| 255 | 5.1.1 | **每日登陆奖励** | 1d? | 2012-05-15 | 2012-05-15 |  |  | 99d |  | 柱子 | 32h |  |
| 256 | 5.1.1.1 | 审评 | 1d? | 2012-05-15 | 2012-05-15 |  |  | 99d | start no earlier than 2012-05-15 | Eric; 柱子 | 16h |  |
| 257 | 5.1.1.2 | 移植 | 1d? | 2012-05-15 | 2012-05-15 |  |  | 99d | start no earlier than 2012-05-15 | 张诚 | 8h |  |
| 258 | 5.1.1.3 | 导入礼物的内容 | 1d? | 2012-05-15 | 2012-05-15 |  |  | 99d | start no earlier than 2012-05-15 |  |  |  |
| 259 | 5.1.1.4 | 测试 | 1d? | 2012-05-15 | 2012-05-15 |  |  | 99d | start no earlier than 2012-05-15 |  |  |  |
| 260 | 5.1.2 | **平台FEED** | 1d? | 2012-05-16 | 2012-05-16 |  |  | 98d |  |  |  |  |
| 261 | 5.1.2.1 | 策划需求 | 1d? | 2012-05-16 | 2012-05-16 |  |  | 98d | start no earlier than 2012-05-16 |  |  |  |
| 262 | 5.1.3 | 礼物系统内容需求 | 1d? | 2012-06-01 | 2012-06-01 |  |  | 86d | start no earlier than 2012-06-01 |  |  |  |
| 263 | 5.1.4 | 数值评估 | 1d? | 2012-06-01 | 2012-06-01 |  |  | 86d | start no earlier than 2012-06-01 |  |  |  |
| 264 | 5.1.5 | 竞品分析 | 1d? | 2012-06-01 | 2012-06-01 |  |  | 86d | start no earlier than 2012-06-01 |  |  |  |
| 265 | 5.1.6 | **统计后台准备** | 8d? | 2012-06-01 A | 2012-06-12 | 67% | 2.67d? | 79d |  |  | 8h | 8h |
| 266 | 5.1.6.1 | 基本数据 | 1d? | 2012-06-01 A | 2012-06-01 A | 100% |  |  | start no earlier than 2012-06-01 | 李钊 | 8h | 8h |
| 267 | 5.1.6.2 | 核心数据，数值LOG后台 | 1d? | 2012-06-01 A | 2012-06-01 A | 100% |  |  | start no earlier than 2012-06-01 |  |  |  |
| 268 | 5.1.6.3 | 再次核对详细需求 | 1d? | 2012-06-12 | 2012-06-12 |  |  | 79d | start no earlier than 2012-06-12 |  |  |  |
| 269 | 5.1.7 | **运营后台准备** | 1d? | 2012-06-01 A | 2012-06-01 A | 100% |  |  |  |  |  |  |
| 270 | 5.1.7.1 | 剧情编辑器的核对和准备 | 1d? | 2012-06-01 A | 2012-06-01 A | 100% |  |  | start no earlier than 2012-06-01 |  |  |  |
| 271 | 5.2 | **运营准备** | 31d? | 2012-05-15 A | 2012-06-26 | 4% | 29.71d? | 69d |  |  | 232h | 11.33h |
| 272 | 5.2.1 | 产品说明 | 3d? | 2012-05-28 A | 2012-05-30 | 17% | 2.5d? | 88d |  | 柱子 | 24h | 4h |
| 273 | 5.2.2 | **发行计划-准备** | 24d? | 2012-05-15 A | 2012-06-15 | 7% | 22.29d? | 76d |  | 柱子 | 112h | 7.33h |
| 274 | 5.2.2.1 | **竞品分析** | 1d? | 2012-06-14 | 2012-06-14 |  |  | 77d |  |  | 16h |  |
| 275 | 5.2.2.1.1 | 萌三国 | 1d? | 2012-06-14 | 2012-06-14 |  |  | 77d | start no earlier than 2012-06-14 | 桃子 | 8h |  |
| 276 | 5.2.2.1.2 | 玫瑰骑士团 | 1d? | 2012-06-14 | 2012-06-14 |  |  | 77d | start no earlier than 2012-06-14 | 八代 | 8h |  |

Notes:
- 257: 具体包括： 1个场景，一个人物，1个UI初稿
- 263: 每次评估用新号
- 273: 针对游戏的类型，和各平台，我们手里的资源，比较优势和最终方案

| ID | WBS | Task | Duration | Start | Finish | Predecessors | Complete | Remaining | Total slack | Free slack | Constraint | Resources | Work | Actual work |
| --- | --- | --- | --- | --- | --- | --- | --- | --- | --- | --- | --- | --- | --- | --- |
| 277 | 5.2.2.2 | **平台数据** | 24d? | 2012-05-15 A | 2012-06-15 |  | 10% | 21.6d? | 76d |  |  | 柱子 | 64h | 5.33h |
| 278 | 5.2.2.2.1 | 需求 | 1d? | 2012-06-12 A | 2012-06-12 |  | 50% | 0.5d? | 79d |  |  |  |  |  |
| 279 | 5.2.2.2.2 | 打LOG标注 | 1d? | 2012-05-15 | 2012-05-15 |  |  |  | 99d |  |  |  |  |  |
| 280 | 5.2.2.2.3 | 核对数据需求确认页面内容 | 1d? | 2012-06-13 | 2012-06-13 |  |  |  | 76d |  | start no earlier than 2012-06-13 | 李钊; 立军 | 16h |  |
| 281 | 5.2.2.2.4 | 技术完成页面 | 2d | 2012-06-14 | 2012-06-15 | 280 |  |  | 76d |  |  | 李钊 | 16h |  |
| 282 | 5.2.3 | 运营修改建议 | 5d | 2012-06-20 | 2012-06-26 |  |  |  | 69d |  | start no earlier than 2012-06-20 | 柱子 | 40h |  |
| 283 | 5.2.4 | 初期活动需求（活动模块） | 2d | 2012-06-11 | 2012-06-12 |  |  |  | 76d | 0d | start no earlier than 2012-06-11 | 柱子 | 16h |  |
| 284 | 5.2.5 | 公司网站（项目网站） | 1d? | 2012-06-13 | 2012-06-13 | 283 |  |  | 78d |  | start no earlier than 2012-05-07 | 柱子 | 8h |  |
| 285 | 5.2.6 | **删档内测上线准备（人人平台）** | 1d? | 2012-06-13 | 2012-06-13 | 283 |  |  | 78d |  |  | 柱子 | 8h |  |
| 286 | 5.2.6.1 | 基本的内容和BANNER需求 | 1d? | 2012-06-13 | 2012-06-13 |  |  |  | 78d |  | start no earlier than 2012-06-12 |  |  |  |
| 287 | 5.2.6.2 | 反馈信息的NPC和链接栏目 | 1d? | 2012-06-13 | 2012-06-13 |  |  |  | 78d |  | start no earlier than 2012-06-12 |  |  |  |
| 288 | 5.2.6.3 | 升级礼包 | 1d? | 2012-06-13 | 2012-06-13 |  |  |  | 78d |  | start no earlier than 2012-06-12 |  |  |  |
| 289 | 5.2.7 | 宣传 | 3d | 2012-06-13 | 2012-06-15 | 283 |  |  | 76d |  | start no earlier than 2012-05-07 | 柱子 | 24h |  |
| 290 | 6 | **副本模块制作流程（每个副本）** | 23d? | 2012-05-15 | 2012-06-14 |  |  |  | 77d |  |  |  | 40h |  |
| 291 | 6.1 | **制作流程** | 23d? | 2012-05-15 | 2012-06-14 |  |  |  | 77d |  |  |  | 40h |  |
| 292 | 6.1.1 | 副本概念策划（包括副本描述，怪的种类，NPC，副本掉落的配方，道具） | 2d? | 2012-05-15 | 2012-05-16 |  |  |  | 85d | 8d |  |  |  |  |
| 293 | 6.1.2 | **简单核对** | 11d? | 2012-05-29 | 2012-06-12 |  |  |  | 79d |  |  |  | 40h |  |
| 294 | 6.1.2.1 | 场景概念图 | 1d? | 2012-05-29 | 2012-05-29 |  |  |  | 89d |  | start no earlier than 2012-05-29 | 卢靖 | 8h |  |
| 295 | 6.1.2.2 | 详细美术需求分析，文档（装饰物，地形块，战斗背景） | 2d | 2012-05-29 | 2012-05-30 |  |  |  | 88d |  | start no earlier than 2012-05-29 | 卢靖; 大强 | 32h |  |
| 296 | 6.1.2.3 | **剧情和任务的文字（主线和支线）** | 10d? | 2012-05-30 | 2012-06-12 |  |  |  | 79d |  |  |  |  |  |
| 297 | 6.1.2.3.1 | 主线剧情文字编辑 | 5d | 2012-05-30 | 2012-06-05 |  |  |  | 79d | 0d | start no earlier than 2012-05-30 |  |  |  |
| 298 | 6.1.2.3.2 | 支线剧情文字编辑 | 3d | 2012-06-06 | 2012-06-08 | 297 |  |  | 79d | 0d | start no earlier than 2012-05-30 |  |  |  |
| 299 | 6.1.2.3.3 | 主线任务文字 | 1d? | 2012-06-11 | 2012-06-11 | 298 |  |  | 79d | 0d | start no earlier than 2012-05-30 |  |  |  |
| 300 | 6.1.2.3.4 | 支线任务文字 | 1d? | 2012-06-12 | 2012-06-12 | 299 |  |  | 79d |  | start no earlier than 2012-05-30 |  |  |  |

Notes:
- 289: 图片，文档，帖子，论坛，用户调查，导入用户
- 298: 目前时间点不确定，因为没有做修改时间，本身文字外包

| ID | WBS | Task | Duration | Start | Finish | Predecessors | Total slack | Free slack | Constraint |
| --- | --- | --- | --- | --- | --- | --- | --- | --- | --- |
| 301 | 6.1.3 | **美术** | 6d | 2012-05-29 | 2012-06-05 | 292 | 77d | 0d |  |
| 302 | 6.1.3.1 | 美术制作 | 6d | 2012-05-29 | 2012-06-05 |  | 77d |  | start no earlier than 2012-05-29 |
| 303 | 6.1.4 | **策划** | 4d | 2012-06-06 | 2012-06-11 | 301 | 77d | 0d |  |
| 304 | 6.1.4.1 | 副本编辑 | 4d | 2012-06-06 | 2012-06-11 |  | 77d |  | start no earlier than 2012-05-29 |
| 305 | 6.1.4.2 | 怪物摆放 | 2d | 2012-06-06 | 2012-06-07 |  | 79d |  | start no earlier than 2012-05-29 |
| 306 | 6.1.4.3 | 任务和剧情的编辑 | 4d | 2012-06-06 | 2012-06-11 |  | 77d |  | start no earlier than 2012-05-29 |
| 307 | 6.1.5 | 调试 | 3d | 2012-06-12 | 2012-06-14 | 303 | 77d |  | start no earlier than 2012-05-29 |
