Schedule from MS Project, 2012-02-09 to 2012-06-21, A marks actual dates.

## Calendars

- 标准: Mon-Fri 08:00-12:00, 13:00-17:00; Sat-Sun off. Exceptions (off unless hours are given): 2012-03-31 to 2012-04-01 08:00-12:00, 13:00-17:00, 2012-04-02 to 2012-04-04 (dd), 2012-04-28 08:00-12:00, 13:00-17:00, 2012-04-29 to 2012-05-01.

## Resources

| Resource |
| --- |
| 琦 |
| 夏 |
| 诚 |
| 庆 |
| 。2 |
| .2 |
| .3 |
| 1 |
| 钊 |
| 荣 |
| ERIC |

## Schedule

| ID | WBS | Task | Duration | Start | Finish | Predecessors | Complete | Remaining | Total slack | Free slack | Constraint | Resources | Work | Actual work |
| --- | --- | --- | --- | --- | --- | --- | --- | --- | --- | --- | --- | --- | --- | --- |
| 1 | 1 | **20号完成版本** | 56d? | 2012-02-09 08:00 A | 2012-04-27 17:00 |  | 5% | 52.99d? | 38d |  |  |  | 1756h | 56h |
| 2 | 1.1 | **战斗系统** | 18d? | 2012-02-09 08:00 A | 2012-03-05 17:00 |  | 8% | 16.5d? | 7d | 0d |  |  | 360h | 24h |
| 3 | 1.1.1 | 接口与数据结构 | 1d | 2012-02-09 08:00 | 2012-02-09 17:00 |  |  |  | 1d | 0d | start no earlier than 2012-02-09 08:00 | 琦; 夏 | 16h |  |
| 4 | 1.1.2 | 代码设计与ui需求 | 1d? | 2012-02-10 08:00 | 2012-02-10 17:00 | 3 |  |  | 1d | 0d |  | 琦; 夏 | 16h |  |
| 5 | 1.1.3 | **场景实现** | 1d? | 2012-02-13 08:00 | 2012-02-13 17:00 | 4 |  |  | 16d | 0d |  | 夏 | 32h |  |
| 6 | 1.1.3.1 | 素材与UI | 1d? | 2012-02-13 08:00 | 2012-02-13 17:00 |  |  |  | 16d | 0d |  |  |  |  |
| 7 | 1.1.3.2 | 项目搭建 | 1d? | 2012-02-13 08:00 | 2012-02-13 17:00 |  |  |  | 1d |  |  | 夏 | 8h |  |
| 8 | 1.1.3.3 | 初始数据重整，假数据准备 | 1d? | 2012-02-13 08:00 | 2012-02-13 17:00 |  |  |  | 1d |  |  | 琦 | 8h |  |
| 9 | 1.1.3.4 | 场景表现实现 | 1d? | 2012-02-13 08:00 | 2012-02-13 17:00 |  |  |  | 1d |  |  | 夏 | 8h |  |
| 10 | 1.1.4 | **角色显示实现** | 1d? | 2012-02-14 08:00 | 2012-02-14 17:00 | 6, 5 |  |  | 16d | 0d |  | 夏 | 48h |  |
| 11 | 1.1.4.1 | 素材与UI | 1d? | 2012-02-14 08:00 | 2012-02-14 17:00 |  |  |  | 16d |  |  | 夏 | 8h |  |
| 12 | 1.1.4.2 | 角色表现与站位实现 | 1d? | 2012-02-14 08:00 | 2012-02-14 17:00 |  |  |  | 1d |  |  | 夏 | 8h |  |
| 13 | 1.1.4.3 | 角色动作表现与队列功能 | 1d? | 2012-02-14 08:00 | 2012-02-14 17:00 |  |  |  | 1d |  |  | 夏 | 8h |  |
| 14 | 1.1.4.4 | 角色说话实现 | 1d? | 2012-02-14 08:00 | 2012-02-14 17:00 |  |  |  | 1d |  |  | 夏 | 8h |  |
| 15 | 1.1.4.5 | 角色相关ui实现 | 1d? | 2012-02-14 08:00 | 2012-02-14 17:00 |  |  |  | 1d |  |  | 夏 | 8h |  |
| 16 | 1.1.5 | **操作面板** | 1d? | 2012-02-14 08:00 | 2012-02-14 17:00 |  |  |  | 19d | 0d |  | 琦 | 48h |  |
| 17 | 1.1.5.1 | 素材UI | 1d? | 2012-02-14 08:00 | 2012-02-14 17:00 |  |  |  | 19d |  | start no earlier than 2012-02-14 08:00 | 琦 | 8h |  |
| 18 | 1.1.5.2 | 操作面板 | 1d? | 2012-02-14 08:00 | 2012-02-14 17:00 |  |  |  | 19d |  | start no earlier than 2012-02-14 08:00 | 琦 | 8h |  |
| 19 | 1.1.5.3 | 道具列表 | 1d? | 2012-02-14 08:00 | 2012-02-14 17:00 |  |  |  | 19d |  | start no earlier than 2012-02-14 08:00 | 琦 | 8h |  |
| 20 | 1.1.5.4 | 技能列表 | 1d? | 2012-02-14 08:00 | 2012-02-14 17:00 |  |  |  | 19d |  | start no earlier than 2012-02-14 08:00 | 琦 | 8h |  |
| 21 | 1.1.5.5 | 自动战斗面板 | 1d? | 2012-02-14 08:00 | 2012-02-14 17:00 |  |  |  | 19d |  | start no earlier than 2012-02-14 08:00 | 琦 | 8h |  |
| 22 | 1.1.6 | **顺序进程** | 1d? | 2012-02-15 08:00 | 2012-02-15 17:00 | 16 |  |  | 19d | 0d |  | 琦 | 32h |  |
| 23 | 1.1.6.1 | 素材ui | 1d? | 2012-02-15 08:00 | 2012-02-15 17:00 |  |  |  | 19d |  | start no earlier than 2012-02-14 08:00 | 琦 | 8h |  |
| 24 | 1.1.6.2 | 顺序面板 | 1d? | 2012-02-15 08:00 | 2012-02-15 17:00 |  |  |  | 19d |  | start no earlier than 2012-02-14 08:00 | 琦 | 8h |  |
| 25 | 1.1.6.3 | 顺序排序进程实现 | 1d? | 2012-02-15 08:00 | 2012-02-15 17:00 |  |  |  | 19d |  | start no earlier than 2012-02-14 08:00 | 琦 | 8h |  |

| ID | WBS | Task | Duration | Start | Finish | Predecessors | Complete | Remaining | Total slack | Free slack | Constraint | Resources | Work | Actual work |
| --- | --- | --- | --- | --- | --- | --- | --- | --- | --- | --- | --- | --- | --- | --- |
| 26 | 1.1.7 | **攻击实现** | 3d? | 2012-02-15 08:00 | 2012-02-17 17:00 | 10 |  |  | 16d | 0d |  | 夏 | 64h |  |
| 27 | 1.1.7.1 | 素材ui | 1d? | 2012-02-15 08:00 | 2012-02-15 17:00 |  |  |  | 18d | 2d |  | 夏 | 8h |  |
| 28 | 1.1.7.2 | 动作脚本 | 1d? | 2012-02-15 08:00 | 2012-02-15 17:00 |  |  |  | 1d | 0d |  | 夏 | 8h |  |
| 29 | 1.1.7.3 | 操作实现 | 1d? | 2012-02-16 08:00 | 2012-02-16 17:00 | 28 |  |  | 1d | 0d |  | 夏 | 8h |  |
| 30 | 1.1.7.4 | 攻击判定实现，距离、范围 | 1d? | 2012-02-17 08:00 | 2012-02-17 17:00 | 29 |  |  | 1d |  |  | 夏 | 8h |  |
| 31 | 1.1.7.5 | 攻击相关ui | 1d? | 2012-02-15 08:00 | 2012-02-15 17:00 |  |  |  | 3d |  |  | 琦 | 8h |  |
| 32 | 1.1.8 | 技能实现 | 2d | 2012-02-20 08:00 | 2012-02-21 17:00 | 27, 26 |  |  | 1d |  |  | 夏 | 16h |  |
| 33 | 1.1.9 | 物品使用实现 | 1d | 2012-02-22 08:00 A | 2012-02-22 17:00 A | 32 | 100% |  |  |  |  | 夏 | 8h | 8h |
| 34 | 1.1.10 | AI实现 | 2d | 2012-02-23 08:00 A | 2012-02-24 17:00 A | 33 | 100% |  |  |  |  | 夏 | 16h | 16h |
| 35 | 1.1.11 | 逃跑实现 | 0.5d | 2012-02-27 08:00 | 2012-02-27 12:00 | 34 |  |  | 7d | 0d |  | 夏 | 4h |  |
| 36 | 1.1.12 | 防守实现 | 0.5d | 2012-02-27 13:00 | 2012-02-27 17:00 | 35 |  |  | 7d | 0d |  | 夏 | 4h |  |
| 37 | 1.1.13 | 操作数据记录实现 | 0.5d | 2012-02-28 08:00 | 2012-02-28 12:00 | 36 |  |  | 7d | 0d |  | 夏 | 4h |  |
| 38 | 1.1.14 | 战斗结束实现 | 0.5d | 2012-02-28 13:00 | 2012-02-28 17:00 | 37 |  |  | 7d | 0d |  | 夏 | 4h |  |
| 39 | 1.1.15 | 自动战斗实现 | 2d | 2012-02-29 08:00 | 2012-03-01 17:00 | 38 |  |  | 7d | 0d |  | 夏 | 16h |  |
| 40 | 1.1.16 | **其余信息ui** | 1d? | 2012-02-16 08:00 | 2012-02-16 17:00 | 22 |  |  | 19d |  |  | 夏 | 16h |  |
| 41 | 1.1.16.1 | 战斗中攻击力飘字 | 1d? | 2012-02-16 08:00 | 2012-02-16 17:00 |  |  |  | 19d |  |  | 夏 | 8h |  |
| 42 | 1.1.17 | 整体调试 | 2d | 2012-03-02 08:00 | 2012-03-05 17:00 | 39 |  |  | 7d |  |  | 夏 | 16h |  |
| 43 | 1.2 | **合成系统** | 9d? | 2012-02-14 08:00 A | 2012-02-24 17:00 |  | 8% | 8.31d? | 76d | 0d |  | 庆 | 176h | 24h |
| 44 | 1.2.1 | 图鉴 | 2d | 2012-02-21 08:00 A | 2012-02-22 17:00 |  | 50% | 1d | 76d | 0d | start no earlier than 2012-02-21 08:00 | 庆 | 16h | 8h |
| 45 | 1.2.2 | 仓库 | 2d | 2012-02-23 08:00 | 2012-02-24 17:00 | 44 |  |  | 43.3d |  | start no earlier than 2012-02-14 08:00 | 庆 | 16h |  |
| 46 | 1.2.3 | 合成面板 | 2d | 2012-02-14 08:00 | 2012-02-15 17:00 |  |  |  | 76d | 0d | start no earlier than 2012-02-14 08:00 | 庆 | 16h |  |
| 47 | 1.2.4 | 合成信息面板 | 1d | 2012-02-16 08:00 | 2012-02-16 17:00 | 46 |  |  | 43.3d | 0d |  | 庆 | 8h |  |
| 48 | 1.2.5 | 场景中工作台实现 | 1d? | 2012-02-17 08:00 | 2012-02-17 17:00 | 47 |  |  | 43.3d | 0d |  | 庆 | 8h |  |
| 49 | 1.2.6 | 工作台tips信息 | 1d? | 2012-02-20 08:00 | 2012-02-20 17:00 | 48 |  |  | 43.3d | 0d |  | 庆 | 8h |  |
| 50 | 1.2.7 | 合成收取 | 1d? | 2012-02-21 08:00 | 2012-02-21 17:00 | 49 |  |  | 43.3d | 0d |  | 庆 | 8h |  |
| 51 | 1.2.8 | 整体调试 | 3d | 2012-02-22 08:00 | 2012-02-24 17:00 | 50 |  |  | 43.3d |  |  | 庆 | 24h |  |
| 52 | 1.3 | 初始化实现 | 2d | 2012-03-01 08:00 | 2012-03-02 17:00 |  |  |  | 44.3d |  | start no earlier than 2012-03-01 08:00 | 琦 | 16h |  |

Notes:
- 31: 1. 飘字 / 2.

| ID | WBS | Task | Duration | Start | Finish | Predecessors | Total slack | Free slack | Constraint | Resources | Work |
| --- | --- | --- | --- | --- | --- | --- | --- | --- | --- | --- | --- |
| 53 | 1.4 | **经营系统** | 6d? | 2012-02-27 08:00 | 2012-03-05 17:00 | 43 | 76d |  |  | 庆 | 152h |
| 54 | 1.4.1 | 需求分析 | 2d? | 2012-02-27 08:00 | 2012-02-28 17:00 |  | 43.3d | 0d |  | 庆; 琦 | 32h |
| 55 | 1.4.2 | 顾客表现 | 1d? | 2012-02-29 08:00 | 2012-02-29 17:00 | 54 | 46.3d |  | start no earlier than 2012-02-26 08:00 | 庆 | 8h |
| 56 | 1.4.3 | 定时请求顾客与顾客定时离开 | 1d? | 2012-02-29 08:00 | 2012-02-29 17:00 | 54 | 46.3d |  |  | 庆 | 8h |
| 57 | 1.4.4 | 订单状态检测 | 1d? | 2012-02-29 08:00 | 2012-02-29 17:00 | 54 | 43.3d | 0d | start no earlier than 2012-02-26 08:00 | 庆 | 8h |
| 58 | 1.4.5 | 订单面板 | 1d | 2012-03-01 08:00 | 2012-03-01 17:00 | 57 | 45.3d |  | start no earlier than 2012-02-28 08:00 | 庆 | 8h |
| 59 | 1.4.6 | 订单详细信息面板 | 1d? | 2012-03-01 08:00 | 2012-03-01 17:00 | 57 | 45.3d |  | start no earlier than 2012-02-28 08:00 | 庆 | 8h |
| 60 | 1.4.7 | 接收\拒绝\完成订单 | 1d? | 2012-03-01 08:00 | 2012-03-01 17:00 | 57 | 43.3d | 0d | start no earlier than 2012-02-28 08:00 | 庆 | 8h |
| 61 | 1.4.8 | 完成订单表现,包括小费的表现 | 1d? | 2012-03-02 08:00 | 2012-03-02 17:00 | 60 | 44.3d |  | start no earlier than 2012-02-29 08:00 | 庆 | 8h |
| 62 | 1.4.9 | 满意度面板 | 1d? | 2012-03-02 08:00 | 2012-03-02 17:00 | 60 | 43.3d | 0d | start no earlier than 2012-02-29 08:00 | 庆 | 8h |
| 63 | 1.4.10 | 联调 | 1d | 2012-03-05 08:00 | 2012-03-05 17:00 | 62 | 43.3d |  | start no earlier than 2012-03-01 08:00 | 庆 | 8h |
| 64 | 1.5 | **世界地图** | 6d? | 2012-03-02 08:00 | 2012-03-09 17:00 |  | 72d |  |  | 诚 | 112h |
| 65 | 1.5.1 | 需求分析 | 1d? | 2012-03-02 08:00 | 2012-03-02 17:00 |  | 44.3d |  | start no earlier than 2012-03-02 08:00 | 诚 | 8h |
| 66 | 1.5.2 | 地图及地图上场景ICON表现 | 2d | 2012-03-05 08:00 | 2012-03-06 17:00 |  | 39.3d | 0d | start no earlier than 2012-03-05 08:00 | 诚 | 16h |
| 67 | 1.5.3 | 可拖动地图 | 1d? | 2012-03-06 08:00 | 2012-03-06 17:00 |  | 42.3d |  | start no earlier than 2012-03-06 08:00 | 诚 | 8h |
| 68 | 1.5.4 | 场景间移动，扣体力 | 1d? | 2012-03-07 08:00 | 2012-03-07 17:00 | 66 | 74d |  | start no earlier than 2012-03-07 08:00 | 诚 | 8h |
| 69 | 1.5.5 | 场景间寻路实现 | 1d? | 2012-03-07 08:00 | 2012-03-07 17:00 | 66 | 72d | 0d | start no earlier than 2012-03-07 08:00 | 诚 | 8h |
| 70 | 1.5.6 | 新解锁场景提示,未进入过场景发光 | 1d? | 2012-03-08 08:00 | 2012-03-08 17:00 | 69 | 72d | 0d | start no earlier than 2012-03-08 08:00 | 诚 | 8h |
| 71 | 1.5.7 | 联调 | 1d? | 2012-03-09 08:00 | 2012-03-09 17:00 | 70 | 39.3d |  | start no earlier than 2012-03-08 08:00 | 诚 | 8h |
| 72 | 1.6 | **副本探险** | 13.5d? | 2012-03-06 08:00 | 2012-03-23 12:00 | 2 | 4.5d | 0.5d |  | 夏 | 228h |
| 73 | 1.6.1 | 需求分析 | 1d? | 2012-03-06 08:00 | 2012-03-06 17:00 |  | 17d |  | start no earlier than 2012-03-05 08:00 | 夏 | 8h |
| 74 | 1.6.2 | 挖矿 | 0.5d | 2012-03-06 08:00 | 2012-03-06 12:00 |  | 7d | 2.5d |  | 夏 | 4h |
| 75 | 1.6.3 | 场景实现 | 0.5d | 2012-03-09 08:00 | 2012-03-09 12:00 | 74 | 4.5d | 0d | start no earlier than 2012-03-09 08:00 | 夏 | 4h |
| 76 | 1.6.4 | 怪的碰撞 | 0.5d | 2012-03-09 13:00 | 2012-03-09 17:00 | 75 | 4.5d | 0d |  | 夏 | 4h |
| 77 | 1.6.5 | 传送门相关逻辑 | 0.5d | 2012-03-12 08:00 | 2012-03-12 12:00 | 76 | 4.5d | 0d |  | 夏 | 4h |
| 78 | 1.6.6 | 场景刷新 | 1d? | 2012-03-12 13:00 | 2012-03-13 12:00 | 77 | 4.5d | 0d |  | 夏 | 8h |
| 79 | 1.6.7 | 双层地板与编辑器 | 3d | 2012-03-12 08:00 | 2012-03-14 17:00 | 89 | 11d | 0d |  | 琦 | 24h |
| 80 | 1.6.8 | 联调 | 8d | 2012-03-13 13:00 | 2012-03-23 12:00 | 78 | 4.5d |  |  | 夏 | 64h |

| ID | WBS | Task | Duration | Start | Finish | Predecessors | Total slack | Free slack | Constraint | Resources | Work |
| --- | --- | --- | --- | --- | --- | --- | --- | --- | --- | --- | --- |
| 81 | 1.7 | **佣兵与装备** | 10d? | 2012-03-13 08:00 | 2012-03-26 17:00 |  | 49d | 0d |  | 庆 | 80h |
| 82 | 1.7.1 | 需求分析 | 1d? | 2012-03-13 08:00 | 2012-03-13 17:00 |  | 11d | 0d | start no earlier than 2012-03-13 08:00 |  |  |
| 83 | 1.7.2 | 佣兵面板 | 2d | 2012-03-14 08:00 | 2012-03-15 17:00 | 82 | 11d | 0d |  |  |  |
| 84 | 1.7.3 | 阵型设置 | 1d | 2012-03-16 08:00 | 2012-03-16 17:00 | 83 | 11d | 0d |  |  |  |
| 85 | 1.7.4 | 酒吧模块 | 1d? | 2012-03-19 08:00 | 2012-03-19 17:00 | 84 | 11d | 0d |  |  |  |
| 86 | 1.7.5 | 佣兵数量升级 | 1d | 2012-03-20 08:00 | 2012-03-20 17:00 | 85 | 11d | 0d |  |  |  |
| 87 | 1.7.6 | 酒吧入口与升级 | 2d | 2012-03-15 08:00 | 2012-03-16 17:00 | 79 | 17d |  | start no earlier than 2012-03-13 08:00 |  |  |
| 88 | 1.7.7 | 联调 | 4d | 2012-03-21 08:00 | 2012-03-26 17:00 | 86 | 11d |  |  |  |  |
| 89 | 1.8 | 场景与DIY | 4d | 2012-03-06 08:00 | 2012-03-09 17:00 |  | 11d | 0d | start no earlier than 2012-03-06 08:00 | 琦 | 32h |
| 90 | 1.9 | **任务** | 8d? | 2012-03-27 08:00 | 2012-04-06 17:00 | 81 | 49d | 0d |  | 庆 | 120h |
| 91 | 1.9.1 | 需求分析 | 1d? | 2012-03-27 08:00 | 2012-03-27 17:00 |  | 11d | 0d |  |  |  |
| 92 | 1.9.2 | 任务列表与图标 | 2d | 2012-03-28 08:00 | 2012-03-29 17:00 | 91 | 16.3d | 0d | start no earlier than 2012-03-26 08:00 | 庆 | 16h |
| 93 | 1.9.3 | 任务信息面板 | 1d? | 2012-03-30 08:00 | 2012-03-30 17:00 | 92 | 16.3d | 0d |  | 庆 | 8h |
| 94 | 1.9.4 | 任务更新自动处理 | 1d? | 2012-03-31 08:00 | 2012-03-31 17:00 | 93 | 16.3d | 0d |  | 庆 | 8h |
| 95 | 1.9.5 | 任务引导 | 1d | 2012-04-01 08:00 | 2012-04-01 17:00 | 94 | 16.3d | 0d |  | 庆 | 8h |
| 96 | 1.9.6 | npc相关 | 1d? | 2012-03-27 08:00 | 2012-03-27 17:00 |  | 56d |  | start no earlier than 2012-03-27 08:00 | 琦 | 8h |
| 97 | 1.9.7 | 世界地图任务提示 | 1d? | 2012-03-30 08:00 | 2012-03-30 17:00 |  | 53d |  | start no earlier than 2012-03-30 08:00 | 诚 | 8h |
| 98 | 1.9.8 | 联调 | 2d | 2012-04-05 08:00 | 2012-04-06 17:00 | 95 | 11d |  |  |  |  |
| 99 | 1.10 | **剧情** | 6d? | 2012-03-26 08:00 | 2012-03-31 17:00 | 72 | 4d | 0d |  | 夏 | 104h |
| 100 | 1.10.1 | npc相关 | 1d? | 2012-03-26 08:00 | 2012-03-26 17:00 |  | 9d |  | start no earlier than 2012-03-26 08:00 | 琦 | 8h |
| 101 | 1.10.2 | 对白表现 | 1d? | 2012-03-26 08:00 | 2012-03-26 17:00 |  | 4d | 0d | start no earlier than 2012-03-26 08:00 | 夏 | 8h |
| 102 | 1.10.3 | 剧情自动处理流程 | 1d? | 2012-03-27 08:00 | 2012-03-27 17:00 | 101 | 4d | 0d |  | 夏 | 8h |
| 103 | 1.10.4 | 剧情表现过程 | 1d | 2012-03-28 08:00 | 2012-03-28 17:00 | 102 | 4d | 0d |  | 夏 | 8h |
| 104 | 1.10.5 | 剧情中奖励表现 | 1d? | 2012-03-29 08:00 | 2012-03-29 17:00 | 103 | 4d | 0d |  | 夏 | 8h |
| 105 | 1.10.6 | 联调 | 2d | 2012-03-30 08:00 | 2012-03-31 17:00 | 104 | 4d |  |  | 夏 | 16h |

| ID | WBS | Task | Duration | Start | Finish | Predecessors | Total slack | Free slack | Constraint | Resources | Work |
| --- | --- | --- | --- | --- | --- | --- | --- | --- | --- | --- | --- |
| 106 | 1.11 | **其它模块** | 31d? | 2012-03-15 08:00 | 2012-04-27 17:00 |  | 38d |  |  |  | 40h |
| 107 | 1.11.1 | 主UI | 2d | 2012-03-15 08:00 | 2012-03-16 17:00 | 79 | 31.3d | 0d |  | 琦 | 16h |
| 108 | 1.11.2 | npc | 2d | 2012-03-19 08:00 | 2012-03-20 17:00 | 107 | 31.3d | 0d |  | 琦 | 16h |
| 109 | 1.11.3 | 好友面板 | 1d? | 2012-03-21 08:00 | 2012-03-21 17:00 | 108 | 31.3d |  |  | 琦 | 8h |
| 110 | 1.11.4 | 村内建筑升级面板 | 2d | 2012-04-19 08:00 | 2012-04-20 17:00 |  | 38d | 0d | start no earlier than 2012-04-19 08:00 |  |  |
| 111 | 1.11.5 | 用户升级面板 | 1d | 2012-04-23 08:00 | 2012-04-23 17:00 | 110 | 1d | 0d |  |  |  |
| 112 | 1.11.6 | 人物创建 | 2d | 2012-04-24 08:00 | 2012-04-25 17:00 | 111 | 1d | 0d |  |  |  |
| 113 | 1.11.7 | 场景底图填充 | 1d? | 2012-04-26 08:00 | 2012-04-26 17:00 | 112 | 1d | 0d |  |  |  |
| 114 | 1.11.8 | 系统设置菜单 | 1d? | 2012-04-27 08:00 | 2012-04-27 17:00 | 113 | 1d |  |  |  |  |
| 115 | 1.12 | **战斗模块优化** | 6d? | 2012-04-01 08:00 | 2012-04-11 17:00 | 99 | 0d |  |  |  | 136h |
| 116 | 1.12.1 | 调整需求分析 | 1d | 2012-04-01 08:00 | 2012-04-01 17:00 |  | 5d |  | start no earlier than 2012-03-30 08:00 |  |  |
| 117 | 1.12.2 | 脚本说明文档 | 1d | 2012-04-01 08:00 | 2012-04-01 17:00 |  | 5d |  |  | 夏 | 8h |
| 118 | 1.12.3 | 砍完怪立刻跳回 | 1d? | 2012-04-01 08:00 | 2012-04-01 17:00 |  | 5d |  |  | 夏 | 8h |
| 119 | 1.12.4 | 经验升级&显示 | 1d? | 2012-04-06 08:00 | 2012-04-06 17:00 |  | 3d |  | start no earlier than 2012-04-06 08:00 | 琦 | 8h |
| 120 | 1.12.5 | 人物顺序时间轴 | 1d? | 2012-04-06 08:00 | 2012-04-06 17:00 |  | 3d |  | start no earlier than 2012-04-06 08:00 | 琦 | 8h |
| 121 | 1.12.6 | 物品与技能点击打开 | 1d? | 2012-04-06 08:00 | 2012-04-06 17:00 |  | 3d |  | start no earlier than 2012-04-06 08:00 | 琦 | 8h |
| 122 | 1.12.7 | 鼠标划上时出现血条 | 1d? | 2012-04-05 08:00 | 2012-04-05 17:00 |  | 4d |  | start no earlier than 2012-04-05 08:00 | 夏 | 8h |
| 123 | 1.12.8 | 血条，魔法条UI更换 | 1d? | 2012-04-05 08:00 | 2012-04-05 17:00 |  | 4d |  | start no earlier than 2012-04-05 08:00 | 夏 | 8h |
| 124 | 1.12.9 | 掉出的物品延长至8秒后自动回收 | 1d? | 2012-04-05 08:00 | 2012-04-05 17:00 |  | 4d |  | start no earlier than 2012-04-05 08:00 | 夏 | 8h |
| 125 | 1.12.10 | 行动开始时自动选择攻击 | 1d? | 2012-04-05 08:00 | 2012-04-05 17:00 |  | 4d |  | start no earlier than 2012-04-05 08:00 | 夏 | 8h |
| 126 | 1.12.11 | 职业加成、属性加成、修正动态范围 | 1d | 2012-04-06 08:00 | 2012-04-06 17:00 |  | 2d | 0d | start no earlier than 2012-04-06 08:00 | 夏 | 8h |
| 127 | 1.12.12 | 行动者以外的人物需要变暗 | 1d? | 2012-04-09 08:00 | 2012-04-09 17:00 | 126 | 2d |  |  | 夏 | 8h |
| 128 | 1.12.13 | 开场对话 | 1d? | 2012-04-09 08:00 | 2012-04-09 17:00 |  | 2d |  | start no earlier than 2012-04-09 08:00 | 夏 | 8h |
| 129 | 1.12.14 | 音效和背景音乐 | 1d? | 2012-04-10 08:00 | 2012-04-10 17:00 |  | 1d |  | start no earlier than 2012-04-10 08:00 | 夏 | 8h |
| 130 | 1.12.15 | 鼠标手型 | 1d? | 2012-04-09 08:00 | 2012-04-09 17:00 |  | 2d |  | start no earlier than 2012-04-09 08:00 | 琦 | 8h |
| 131 | 1.12.16 | 技能震动 | 1d | 2012-04-10 08:00 | 2012-04-10 17:00 |  | 1d |  | start no earlier than 2012-04-10 08:00 | 夏 | 8h |
| 132 | 1.12.17 | 场景与顺序条人物OVER时互相显示 | 1d | 2012-04-10 08:00 | 2012-04-10 17:00 |  | 0d |  | start no earlier than 2012-04-10 08:00 | 夏; 琦 | 16h |
| 133 | 1.12.18 | 整体调试 | 1d? | 2012-04-11 08:00 | 2012-04-11 17:00 | 132 | 0d |  |  |  |  |

| ID | WBS | Task | Duration | Start | Finish | Predecessors | Complete | Remaining | Total slack | Free slack | Constraint | Resources | Work | Actual work |
| --- | --- | --- | --- | --- | --- | --- | --- | --- | --- | --- | --- | --- | --- | --- |
| 134 | 1.13 | **副本系统优化** | 2d? | 2012-04-12 08:00 A | 2012-04-13 17:00 | 115 | 67% | 0.67d? | 45d | 0d |  |  | 24h | 8h |
| 135 | 1.13.1 | 矿点手型 | 1d? | 2012-04-12 08:00 | 2012-04-12 17:00 |  |  |  | 13.3d |  |  | 夏; 琦 | 16h |  |
| 136 | 1.13.2 | 增加副本倒计时刷新的表现 | 1d? | 2012-04-12 08:00 | 2012-04-12 17:00 |  |  |  | 8d |  |  |  |  |  |
| 137 | 1.13.3 | 增加当前副本名字 | 1d? | 2012-04-12 08:00 | 2012-04-12 17:00 |  |  |  | 8d |  |  |  |  |  |
| 138 | 1.13.4 | 鼠标滑过怪时，手型为一把剑。 | 1d? | 2012-04-12 08:00 A | 2012-04-12 17:00 A |  | 100% |  |  |  |  |  |  |  |
| 139 | 1.13.5 | 点击门，或者矿，再点击空地之前操作消除 | 1d? | 2012-04-12 08:00 A | 2012-04-12 17:00 A |  | 100% |  |  |  |  |  |  |  |
| 140 | 1.13.6 | 鼠标滑过怪时，显示怪等级和名字。不需要血条 | 1d? | 2012-04-12 08:00 A | 2012-04-12 17:00 A |  | 100% |  |  |  |  |  |  |  |
| 141 | 1.13.7 | 无遇怪表现，怪头顶感叹号语泡 | 1d? | 2012-04-13 08:00 A | 2012-04-13 17:00 A |  | 100% |  |  |  | start no earlier than 2012-04-13 08:00 |  |  |  |
| 142 | 1.13.8 | 人物走到目标npc处后，再弹出对话框 | 1d? | 2012-04-12 08:00 A | 2012-04-12 17:00 A |  | 100% |  |  |  |  | 琦 | 8h | 8h |
| 143 | 1.13.9 | 矿不要血条，数字放到名称后 | 1d? | 2012-04-13 08:00 A | 2012-04-13 17:00 A |  | 100% |  |  |  | start no earlier than 2012-04-13 08:00 |  |  |  |
| 144 | 1.14 | 经营系统优化 | 4d | 2012-04-09 08:00 | 2012-04-12 17:00 | 90 |  |  | 16.3d |  |  | 庆 | 32h |  |
| 145 | 1.15 | **合成系统优化** | 1d? | 2012-04-13 08:00 | 2012-04-13 17:00 |  |  |  | 48d |  |  | 庆 | 8h |  |
| 146 | 1.15.1 | 收获时，就是进度条读取的时候，需屏蔽点击炼金炉弹出的界面 | 1d? | 2012-04-13 08:00 | 2012-04-13 17:00 |  |  |  | 48d |  | start no earlier than 2012-04-13 08:00 |  |  |  |
| 147 | 1.15.2 | 列表标签 “药剂”改为“全部” | 1d? | 2012-04-13 08:00 | 2012-04-13 17:00 |  |  |  | 48d |  | start no earlier than 2012-04-13 08:00 |  |  |  |
| 148 | 1.15.3 | 合成所需材料显示名称 | 1d? | 2012-04-13 08:00 | 2012-04-13 17:00 |  |  |  | 48d |  | start no earlier than 2012-04-13 08:00 |  |  |  |
| 149 | 1.15.4 | 合成物品名称字体大些位置往下点 | 1d? | 2012-04-13 08:00 | 2012-04-13 17:00 |  |  |  | 48d |  | start no earlier than 2012-04-13 08:00 |  |  |  |
| 150 | 1.15.5 | 成功率与倒计时时间的不同颜色效果 | 1d? | 2012-04-13 08:00 | 2012-04-13 17:00 |  |  |  | 48d |  | start no earlier than 2012-04-13 08:00 |  |  |  |
| 151 | 1.16 | 任务联调 | 2d | 2012-04-13 08:00 | 2012-04-16 17:00 |  |  |  | 42d | 0d | start no earlier than 2012-04-13 08:00 | 庆 | 16h |  |
| 152 | 1.17 | **经营新修改** | 0.7d | 2012-04-17 08:00 | 2012-04-17 14:36 | 151 |  |  | 42d |  |  | 庆 | 5.6h |  |
| 153 | 1.17.1 | 随机走--停下说话,说话时不顶图标--随机走 | 0.1d | 2012-04-17 08:00 | 2012-04-17 08:48 |  |  |  | 42d | 0d | start no earlier than 2012-04-17 08:00 |  |  |  |
| 154 | 1.17.2 | 点完以后就消失，下次有新的状态更新的时候再出现 | 0.3d | 2012-04-17 08:48 | 2012-04-17 11:12 | 153 |  |  | 42d | 0d | start no earlier than 2012-04-17 08:00 |  |  |  |
| 155 | 1.17.3 | UI更换 | 0.3d | 2012-04-17 11:12 | 2012-04-17 14:36 | 154 |  |  | 42d | 0d | start no earlier than 2012-04-17 08:00 |  |  |  |
| 156 | 1.18 | **UI更换** | 0.2d | 2012-04-23 15:24 | 2012-04-23 17:00 |  |  |  | 42d |  |  |  | 1.6h |  |
| 157 | 1.18.1 | 合成 | 0.2d | 2012-04-23 15:24 | 2012-04-23 17:00 | 158 |  |  | 42d |  | start no earlier than 2012-04-17 08:00 | 庆 | 1.6h |  |

Notes:
- 135: l采集过程中，鼠标手型为工具。（跟随鼠标，鼠标右侧显示图标和需求数量）/ 扣除工具数量-2，绿色代表有工具，红色-2代表工具不足。
- 140: n怪等级超过主角的冒险等级3级以上（含3级）为红色字样/ n怪等级低于主角的冒险等级为绿色字样。/ 怪等级等于主角等级，并且不超过主角等级3级以上为白色字样

| ID | WBS | Task | Duration | Start | Finish | Predecessors | Total slack | Free slack | Constraint | Resources | Work |
| --- | --- | --- | --- | --- | --- | --- | --- | --- | --- | --- | --- |
| 158 | 1.19 | **佣兵系统优化** | 4.1d | 2012-04-17 14:36 | 2012-04-23 15:24 | 155 | 42d | 0d |  | 庆 | 32.8h |
| 159 | 1.19.1 | 阵型设置，直接摆放就保存，去除阵型确定按钮 | 0.1d | 2012-04-17 14:36 | 2012-04-17 15:24 |  | 42d | 0d | start no earlier than 2012-04-13 08:00 |  |  |
| 160 | 1.19.2 | 人物要动 | 0.1d | 2012-04-17 15:24 | 2012-04-17 16:12 | 159 | 42d | 0d | start no earlier than 2012-04-13 08:00 |  |  |
| 161 | 1.19.3 | 回家后，所有血补满 村里有牧师花费金币加血 | 0.5d | 2012-04-17 16:12 | 2012-04-18 11:12 | 160 | 4d | 0d | start no earlier than 2012-04-13 08:00 |  |  |
| 162 | 1.19.4 | 佣兵系统UI替换 | 0.8d | 2012-04-18 11:12 | 2012-04-19 09:36 | 161 | 4d | 0d | start no earlier than 2012-04-13 08:00 |  |  |
| 163 | 1.19.5 | 佣兵数量的数据错误 | 0.1d | 2012-04-19 09:36 | 2012-04-19 10:24 | 162 | 42d | 0d | start no earlier than 2012-04-13 08:00 |  |  |
| 164 | 1.19.6 | 武器属性加减没显示，按加的最高的优先排前 | 0.5d | 2012-04-19 10:24 | 2012-04-19 15:24 | 163 | 42d | 0d | start no earlier than 2012-04-13 08:00 |  |  |
| 165 | 1.19.7 | 耐久和永久提示 | 0.1d | 2012-04-19 15:24 | 2012-04-19 16:12 | 164 | 42d | 0d | start no earlier than 2012-04-13 08:00 |  |  |
| 166 | 1.19.8 | 这个UI规定是几排几个的？ | 0.1d | 2012-04-19 16:12 | 2012-04-19 17:00 | 165 | 4d | 0d | start no earlier than 2012-04-13 08:00 |  |  |
| 167 | 1.19.9 | 等级不足，直接盖字上面，需要X级 | 0.1d | 2012-04-20 08:00 | 2012-04-20 08:48 | 166 | 4d | 0d | start no earlier than 2012-04-13 08:00 |  |  |
| 168 | 1.19.10 | 已装备栏,划上时显示属性TIPS | 0.2d | 2012-04-20 08:48 | 2012-04-20 10:24 | 167 | 42d | 0d | start no earlier than 2012-04-13 08:00 |  |  |
| 169 | 1.19.11 | 扩展需要跳出提示面板 名字改成增加佣兵数 | 0.5d | 2012-04-20 10:24 | 2012-04-20 15:24 | 168 | 42d | 0d | start no earlier than 2012-04-13 08:00 |  |  |
| 170 | 1.19.12 | 在副本时不可设置出战和退战 | 0.3d | 2012-04-20 15:24 | 2012-04-23 08:48 | 169 | 42d | 0d | start no earlier than 2012-04-13 08:00 |  |  |
| 171 | 1.19.13 | 卸装错字 | 0.1d | 2012-04-23 08:48 | 2012-04-23 09:36 | 170 | 42d | 0d | start no earlier than 2012-04-13 08:00 |  |  |
| 172 | 1.19.14 | 显示技能名称 拥有的技能TIPS显示技能描述 | 0.1d | 2012-04-23 09:36 | 2012-04-23 10:24 | 171 | 42d | 0d | start no earlier than 2012-04-13 08:00 |  |  |
| 173 | 1.19.15 | 速度的值不对 | 0.1d | 2012-04-23 10:24 | 2012-04-23 11:12 | 172 | 42d | 0d | start no earlier than 2012-04-13 08:00 |  |  |
| 174 | 1.19.16 | 人物动作节奏慢点，现在太快 | 0.1d | 2012-04-23 11:12 | 2012-04-23 12:00 | 173 | 42d | 0d | start no earlier than 2012-04-13 08:00 |  |  |
| 175 | 1.19.17 | 宝石解锁需要宝石图片和数量和按钮 | 0.3d | 2012-04-23 13:00 | 2012-04-23 15:24 | 174 | 4d |  | start no earlier than 2012-04-13 08:00 |  |  |
| 176 | 1.20 | **世界地图优化** | 5d? | 2012-04-11 08:00 | 2012-04-17 17:00 |  | 46d |  |  | 诚 | 48h |
| 177 | 1.20.1 | 行走路线改为鼠标滑过场景时出现 | 1d? | 2012-04-11 08:00 | 2012-04-11 17:00 |  | 12d |  | start no earlier than 2012-04-11 08:00 |  |  |
| 178 | 1.20.2 | 路线除了点之外，增加线路，且点和线慢慢出现 | 1d? | 2012-04-11 08:00 | 2012-04-11 17:00 |  | 12d |  | start no earlier than 2012-04-11 08:00 |  |  |
| 179 | 1.20.3 | 鼠标滑过场景时，无tips显示 | 1d? | 2012-04-11 08:00 | 2012-04-11 17:00 |  | 12d |  | start no earlier than 2012-04-11 08:00 |  |  |
| 180 | 1.20.4 | 鼠标滑过场景图标时，图标做被选中的高亮 | 1d? | 2012-04-11 08:00 | 2012-04-11 17:00 |  | 12d |  | start no earlier than 2012-04-11 08:00 |  |  |
| 181 | 1.20.5 | 关闭按钮UI更换 | 1d? | 2012-04-11 08:00 | 2012-04-11 17:00 |  | 12d |  | start no earlier than 2012-04-11 08:00 |  |  |
| 182 | 1.20.6 | 任务图标 | 1d? | 2012-04-17 08:00 | 2012-04-17 17:00 |  | 8d |  | start no earlier than 2012-04-17 08:00 |  |  |
| 183 | 1.20.7 | 新解锁场景 MENU图标动画 | 1d? | 2012-04-17 08:00 | 2012-04-17 17:00 |  | 13.3d |  | start no earlier than 2012-04-17 08:00 | 琦 | 8h |

| ID | WBS | Task | Duration | Start | Finish | Predecessors | Complete | Remaining | Total slack | Free slack | Constraint | Resources | Work | Actual work |
| --- | --- | --- | --- | --- | --- | --- | --- | --- | --- | --- | --- | --- | --- | --- |
| 184 | 1.21 | **剧情系统优化** | 1d? | 2012-04-16 08:00 | 2012-04-16 17:00 | 134 |  |  | 45d | 0d |  | 夏 | 8h |  |
| 185 | 1.21.1 | 人物做倒地动作后，不再爬起来 | 1d? | 2012-04-16 08:00 | 2012-04-16 17:00 |  |  |  | 45d |  |  |  |  |  |
| 186 | 1.21.2 | 表情语泡未对齐 | 1d? | 2012-04-16 08:00 | 2012-04-16 17:00 |  |  |  | 7d |  |  |  |  |  |
| 187 | 1.21.3 | 文字切换时，文字播放时间设置了5000毫秒，但还是很快的就跳过了 | 1d? | 2012-04-16 08:00 | 2012-04-16 17:00 |  |  |  | 7d |  |  |  |  |  |
| 188 | 1.22 | 人物创建模块 | 1d? | 2012-04-17 08:00 | 2012-04-17 17:00 |  |  |  | 46d |  | start no earlier than 2012-04-17 08:00 | 琦 | 8h |  |
| 189 | 1.23 | 商城系统 | 2d | 2012-04-17 08:00 | 2012-04-18 17:00 | 184 |  |  | 12.3d |  | start no earlier than 2012-04-13 08:00 | 夏 | 16h |  |
| 190 | 2 | **上线前功能** | 38.5d? | 2012-04-24 08:00 A | 2012-06-18 12:00 |  | 7% | 35.75d? | 3.5d |  |  |  | 439.2h | 24h |
| 191 | 2.1 | 副本时战斗角色信息栏 | 0.5d | 2012-04-25 08:00 | 2012-04-25 12:00 |  |  |  | 7.8d |  | start no earlier than 2012-04-25 08:00 | 琦 | 4h |  |
| 192 | 2.2 | 取消自动战斗 | 1d? | 2012-04-26 08:00 | 2012-04-26 17:00 | 330 |  |  | 24.5d | 0d | start no earlier than 2012-04-25 08:00 | 夏; 琦 | 16h |  |
| 193 | 2.3 | **援助交互系统** | 3d? | 2012-05-03 08:00 | 2012-05-07 17:00 | 192 |  |  | 30.3d |  |  | 夏 | 48h |  |
| 194 | 2.3.1 | 援助功能 | 2d? | 2012-05-03 08:00 | 2012-05-04 17:00 |  |  |  | 5d | 0d | start no earlier than 2012-05-03 08:00 | 夏 | 16h |  |
| 195 | 2.3.2 | UI功能替换，新需求修改 | 1d? | 2012-05-07 08:00 | 2012-05-07 17:00 |  |  |  | 3.8d | 0d | start no earlier than 2012-05-07 08:00 | 夏 | 8h |  |
| 196 | 2.4 | **占领功能** | 3.7d? | 2012-05-07 08:00 | 2012-05-10 14:36 | 194 |  |  | 30.3d |  |  |  | 73.6h |  |
| 197 | 2.4.1 | 好友栏 | 1d? | 2012-05-07 08:00 | 2012-05-07 17:00 |  |  |  | 22.5d | 1.7d | start no earlier than 2012-05-04 08:00 | 琦 | 8h |  |
| 198 | 2.4.2 | 保护时间UI | 0.2d | 2012-05-08 08:00 | 2012-05-08 09:36 | 195 |  |  | 20.8d | 0d | start no earlier than 2012-05-04 08:00 | 夏 | 1.6h |  |
| 199 | 2.4.3 | 战斗修改 | 0.5d | 2012-05-08 09:36 | 2012-05-08 14:36 | 198 |  |  | 30.3d | 0d | start no earlier than 2012-05-04 08:00 | 夏 | 4h |  |
| 200 | 2.4.4 | **村内建筑** | 1d | 2012-05-08 14:36 | 2012-05-09 14:36 | 199 |  |  | 30.3d | 0d |  | 夏 | 16h |  |
| 201 | 2.4.4.1 | 酒馆TIPS及交互 | 0.5d | 2012-05-08 14:36 | 2012-05-09 09:36 |  |  |  | 4.3d | 0d | start no earlier than 2012-05-07 08:00 | 夏 | 4h |  |
| 202 | 2.4.4.2 | 自宅TIPS及交互 | 0.5d | 2012-05-09 09:36 | 2012-05-09 14:36 | 201 |  |  | 4.3d |  | start no earlier than 2012-05-07 08:00 | 夏 | 4h |  |
| 203 | 2.4.5 | 佣兵面板修改 | 0.5d | 2012-05-07 16:12 | 2012-05-08 11:12 | 210 |  |  | 32.6d |  | start no earlier than 2012-05-04 08:00 | 庆 | 4h |  |
| 204 | 2.4.6 | 老虎机 | 2d | 2012-05-07 13:00 | 2012-05-09 12:00 | 213 |  |  | 21d | 0.2d | start no earlier than 2012-05-04 08:00 | 诚 | 16h |  |
| 205 | 2.4.7 | 联调 | 1d? | 2012-05-09 14:36 | 2012-05-10 14:36 | 204, 197, 200 |  |  | 30.3d |  | start no earlier than 2012-05-04 08:00 | 诚; 琦; 夏 | 24h |  |
| 206 | 2.5 | 建筑升级功能 | 3d | 2012-04-25 13:00 | 2012-04-28 12:00 | 248 |  |  | 23.6d | 0d | start no earlier than 2012-04-25 08:00 | 庆 | 24h |  |
| 207 | 2.6 | 牧师功能 | 1d | 2012-04-28 13:00 | 2012-05-02 12:00 | 206 |  |  | 23.6d | 0.5d | start no earlier than 2012-04-25 08:00 | 庆 | 8h |  |
| 208 | 2.7 | 订单修改 | 1.5d | 2012-05-03 08:00 | 2012-05-04 12:00 | 207 |  |  | 32.6d | 0d | start no earlier than 2012-05-03 08:00 | 庆 | 12h |  |
| 209 | 2.8 | 佣兵交互 | 1d? | 2012-05-04 13:00 | 2012-05-07 12:00 | 208 |  |  | 23.1d | 0d | start no earlier than 2012-05-02 08:00 | 庆 | 8h |  |
| 210 | 2.9 | 订单交互 | 0.4d | 2012-05-07 13:00 | 2012-05-07 16:12 | 209 |  |  | 23.1d | 0d | start no earlier than 2012-05-02 08:00 | 庆 | 3.2h |  |
| 211 | 2.10 | 体力不足面板 | 0.5d | 2012-05-04 08:00 | 2012-05-04 12:00 |  |  |  | 30.5d | 0d | start no earlier than 2012-05-04 08:00 | 诚 | 4h |  |
| 212 | 2.11 | 宝石不足面板 | 0.5d | 2012-05-04 13:00 | 2012-05-04 17:00 | 211 |  |  | 4.5d | 0d | start no earlier than 2012-04-25 08:00 | 诚 | 4h |  |
| 213 | 2.12 | 经营等级升级面板 | 0.5d | 2012-05-07 08:00 | 2012-05-07 12:00 | 212 |  |  | 4.5d | 0d | start no earlier than 2012-04-25 08:00 | 诚 | 4h |  |
| 214 | 2.13 | 礼物 | 2d | 2012-04-24 08:00 A | 2012-04-25 17:00 A |  | 100% |  |  |  | start no earlier than 2012-04-24 08:00 | 诚 | 16h | 16h |
| 215 | 2.14 | 战斗特效文件分拆 | 1d? | 2012-05-10 14:36 A | 2012-05-11 14:36 A | 205 | 100% |  |  |  | start no earlier than 2012-05-08 08:00 | 夏 | 8h | 8h |

| ID | WBS | Task | Duration | Start | Finish | Predecessors | Total slack | Free slack | Constraint | Resources | Work |
| --- | --- | --- | --- | --- | --- | --- | --- | --- | --- | --- | --- |
| 216 | 2.15 | **维修装备** | 3.5d? | 2012-05-16 08:00 | 2012-05-21 12:00 |  | 21d | 0d |  |  | 28h |
| 217 | 2.15.1 | Ui与策划 | 1d? | 2012-05-16 08:00 | 2012-05-16 17:00 |  | 16d | 0d | start no earlier than 2012-05-16 08:00 |  |  |
| 218 | 2.15.2 | 耐久减少，减光时通知与ROLE属性变化 | 0.5d | 2012-05-17 08:00 | 2012-05-17 12:00 | 217 | 18d |  | start no earlier than 2012-05-16 08:00 | 夏 | 4h |
| 219 | 2.15.3 | 道具箱与装备面板相关修改 | 0.5d | 2012-05-17 08:00 | 2012-05-17 12:00 | 217 | 18d |  | start no earlier than 2012-05-16 08:00 | 诚; 庆 | 8h |
| 220 | 2.15.4 | 铁匠铺模块 | 1.5d | 2012-05-17 08:00 | 2012-05-18 12:00 | 217 | 16d | 0d | start no earlier than 2012-05-16 08:00 | 庆 | 12h |
| 221 | 2.15.5 | 铁匠铺升级相关 | 0.5d | 2012-05-17 08:00 | 2012-05-17 12:00 | 217 | 18d |  | start no earlier than 2012-05-16 08:00 | 琦 | 4h |
| 222 | 2.15.6 | 联调 | 1d? | 2012-05-18 13:00 | 2012-05-21 12:00 | 220 | 16d |  | start no earlier than 2012-05-16 08:00 |  |  |
| 223 | 2.16 | **强化模块** | 2d? | 2012-05-21 08:00 | 2012-05-22 17:00 |  | 22d |  |  | 诚 | 16h |
| 224 | 2.16.1 | 开发 | 1d? | 2012-05-21 08:00 | 2012-05-21 17:00 |  | 17d | 0d | start no earlier than 2012-05-21 08:00 |  |  |
| 225 | 2.16.2 | 联调 | 1d? | 2012-05-22 08:00 | 2012-05-22 17:00 | 224 | 17d |  | start no earlier than 2012-05-21 08:00 |  |  |
| 226 | 2.17 | **佣兵打工模块** | 2.5d? | 2012-06-04 08:00 | 2012-06-06 12:00 |  | 11.5d |  |  | 诚 | 20h |
| 227 | 2.17.1 | 地图表现 | 0.5d | 2012-06-04 08:00 | 2012-06-04 12:00 |  | 6.5d | 0d | start no earlier than 2012-06-04 08:00 |  |  |
| 228 | 2.17.2 | 相关面板 | 1d? | 2012-06-04 13:00 | 2012-06-05 12:00 | 227 | 6.5d | 0d | start no earlier than 2012-06-01 08:00 |  |  |
| 229 | 2.17.3 | 掉落奖品 | 0.5d | 2012-06-05 13:00 | 2012-06-05 17:00 | 228 | 6.5d | 0d | start no earlier than 2012-06-01 08:00 |  |  |
| 230 | 2.17.4 | 联调 | 0.5d | 2012-06-06 08:00 | 2012-06-06 12:00 | 229 | 6.5d |  | start no earlier than 2012-06-01 08:00 |  |  |
| 231 | 2.18 | **新手引导** | 7.4d? | 2012-06-05 08:00 | 2012-06-14 11:12 |  | 5.6d |  |  | 庆 | 122.4h |
| 232 | 2.18.1 | **第一次出村** | 1.5d? | 2012-06-05 08:00 | 2012-06-06 12:00 |  | 5.6d |  |  |  | 16h |
| 233 | 2.18.1.1 | 剧情触发战斗 | 0.5d | 2012-06-05 08:00 | 2012-06-05 12:00 |  | 7.5d |  | start no earlier than 2012-06-05 08:00 | 夏 | 4h |
| 234 | 2.18.1.2 | 菜单的激活 | 0.5d | 2012-06-05 08:00 | 2012-06-05 12:00 |  | 1.2d | 0d | start no earlier than 2012-06-05 08:00 | 庆 | 4h |
| 235 | 2.18.1.3 | 相关引导 | 1d? | 2012-06-05 13:00 | 2012-06-06 12:00 | 234 | 1.2d | 0d | start no earlier than 2012-06-05 08:00 | 庆 | 8h |
| 236 | 2.18.2 | 炼金 | 0.5d | 2012-06-06 13:00 | 2012-06-06 17:00 | 235 | 6.2d | 0d | start no earlier than 2012-06-05 08:00 | 庆 | 4h |
| 237 | 2.18.3 | 完成订单 | 0.5d | 2012-06-07 08:00 | 2012-06-07 12:00 | 236 | 6.2d | 0d | start no earlier than 2012-06-05 08:00 | 庆 | 4h |
| 238 | 2.18.4 | 第二次出村 | 0.5d | 2012-06-07 13:00 | 2012-06-07 17:00 | 237 | 6.2d | 0d | start no earlier than 2012-06-05 08:00 | 庆 | 4h |
| 239 | 2.18.5 | 使用配方 | 0.2d | 2012-06-08 08:00 | 2012-06-08 09:36 | 238 | 6.2d | 0d | start no earlier than 2012-06-05 08:00 | 庆 | 1.6h |
| 240 | 2.18.6 | 冒险 | 0.5d | 2012-06-08 09:36 | 2012-06-08 14:36 | 239 | 6.2d | 0d | start no earlier than 2012-06-05 08:00 | 庆 | 4h |
| 241 | 2.18.7 | 设置角色 | 0.5d | 2012-06-08 14:36 | 2012-06-11 09:36 | 240 | 6.2d | 0d | start no earlier than 2012-06-05 08:00 | 庆 | 4h |
| 242 | 2.18.8 | 使用医药箱 | 0.2d | 2012-06-11 09:36 | 2012-06-11 11:12 | 241 | 6.2d | 0d | start no earlier than 2012-06-05 08:00 | 庆 | 1.6h |
| 243 | 2.18.9 | 测试联调 | 2d | 2012-06-11 11:12 | 2012-06-13 11:12 | 242 | 5.6d | 0d | start no earlier than 2012-06-05 08:00 | 庆 | 16h |
| 244 | 2.18.10 | 引导调整 | 1d? | 2012-06-13 11:12 | 2012-06-14 11:12 | 243 | 5.6d |  | start no earlier than 2012-06-12 08:00 | 庆 | 8h |
| 245 | 2.19 | 日志 | 1.5d | 2012-06-14 08:00 | 2012-06-15 12:00 |  | 3.5d | 0d | start no earlier than 2012-06-14 08:00 | 诚 | 12h |
| 246 | 2.20 | 每日登入 | 1d? | 2012-06-15 13:00 | 2012-06-18 12:00 | 245 | 3.5d |  | start no earlier than 2012-05-21 08:00 | 诚 | 8h |

| ID | WBS | Task | Duration | Start | Finish | Predecessors | Complete | Remaining | Total slack | Free slack | Constraint | Resources | Work | Actual work |
| --- | --- | --- | --- | --- | --- | --- | --- | --- | --- | --- | --- | --- | --- | --- |
| 247 | 3 | **上线前优化\UI与支持** | 41d? | 2012-04-25 08:00 A | 2012-06-21 17:00 |  | 38% | 25.56d? | 0d |  |  |  | 428h | 166.4h |
| 248 | 3.1 | tooltips优化 | 0.5d | 2012-04-25 08:00 A | 2012-04-25 12:00 A |  | 100% |  |  |  | start no earlier than 2012-04-25 08:00 | 庆 | 4h | 4h |
| 249 | 3.2 | 人物创建新UI | 0.2d | 2012-05-15 08:00 A | 2012-05-15 09:36 A |  | 100% |  |  |  | start no earlier than 2012-05-15 08:00 |  |  |  |
| 250 | 3.3 | UI素材优化更换 | 2d | 2012-05-15 08:00 A | 2012-05-16 17:00 A |  | 100% |  |  |  | start no earlier than 2012-05-15 08:00 | 诚; 庆; 琦 | 48h | 48h |
| 251 | 3.4 | 主菜单条增加new标签之类的控制机制 | 1d | 2012-05-16 08:00 A | 2012-05-16 17:00 A |  | 100% |  |  |  | start no earlier than 2012-05-16 08:00 | 琦 | 8h | 8h |
| 252 | 3.5 | 主菜单标记功能 | 1d? | 2012-05-17 08:00 A | 2012-05-17 17:00 A | 251 | 100% |  |  |  | start no earlier than 2012-05-16 08:00 | 琦; 诚 | 16h | 16h |
| 253 | 3.6 | 初始静态接口做压缩处理 | 0.3d | 2012-05-18 08:00 | 2012-05-18 10:24 | 252 |  |  | 15.2d |  | start no earlier than 2012-05-15 08:00 | 琦 | 2.4h |  |
| 254 | 3.7 | 英勇值改为道具 | 1d | 2012-05-17 08:00 A | 2012-05-17 17:00 |  | 75% | 0.25d | 25d |  | start no earlier than 2012-05-17 08:00 | 琦 | 8h | 6h |
| 255 | 3.8 | 页码组件 | 1d? | 2012-05-21 08:00 A | 2012-05-21 17:00 A | 253 | 100% |  |  |  | start no earlier than 2012-05-21 08:00 | 琦 | 8h | 8h |
| 256 | 3.9 | 战斗初始化优化 | 1d? | 2012-05-16 08:00 A | 2012-05-16 17:00 |  | 75% | 0.25d? | 16.5d |  | start no earlier than 2012-05-16 08:00 | 夏 | 8h | 6h |
| 257 | 3.10 | 迷雾修改与优化 | 0.5d | 2012-05-17 08:00 A | 2012-05-17 12:00 A | 256 | 100% |  |  |  | start no earlier than 2012-05-15 08:00 | 夏 | 4h | 4h |
| 258 | 3.11 | 援助技能表现数据 | 2d | 2012-05-22 08:00 A | 2012-05-23 17:00 |  | 50% | 1d | 19d | 0d | start no earlier than 2012-05-22 08:00 | 夏 | 16h | 8h |
| 259 | 3.12 | 技能表现数据 | 2d | 2012-05-24 08:00 | 2012-05-25 17:00 | 258 |  |  | 9.5d |  | start no earlier than 2012-05-16 08:00 | 夏 | 16h |  |
| 260 | 3.13 | BOSS怪打完回家 | 0.3d | 2012-05-16 08:00 | 2012-05-16 10:24 |  |  |  | 17.2d |  | start no earlier than 2012-05-16 08:00 | 夏 | 2.4h |  |
| 261 | 3.14 | 迷雾开关 | 0.5d | 2012-05-24 08:00 | 2012-05-24 12:00 | 258 |  |  | 11d |  | start no earlier than 2012-05-22 08:00 |  |  |  |
| 262 | 3.15 | **UI表现优化** | 2.9d? | 2012-05-21 13:00 | 2012-05-24 11:12 |  |  |  | 20.6d |  |  |  | 84.8h |  |
| 263 | 3.15.1 | **佣兵面板** | 0.7d | 2012-05-21 13:00 | 2012-05-22 09:36 | 216 |  |  | 21d | 0d |  | 庆 | 11.2h |  |
| 264 | 3.15.1.1 | 解锁时有解锁的特效 | 0.2d | 2012-05-21 13:00 | 2012-05-21 14:36 |  |  |  | 11.5d | 0d | start no earlier than 2012-05-17 08:00 | 庆 | 1.6h |  |
| 265 | 3.15.1.2 | 解雇确认面板内会有佣兵头像和一句话 | 0.2d | 2012-05-21 14:36 | 2012-05-21 16:12 | 264 |  |  | 11.5d | 0d | start no earlier than 2012-05-17 08:00 | 庆 | 1.6h |  |
| 266 | 3.15.1.3 | 布阵面板人放入一个格子时会在该格播放一个动效 | 0.3d | 2012-05-21 16:12 | 2012-05-22 09:36 | 265 |  |  | 11.5d |  | start no earlier than 2012-05-17 08:00 | 庆 | 2.4h |  |
| 267 | 3.15.2 | **订单面板** | 1d? | 2012-05-22 09:36 | 2012-05-23 09:36 | 263 |  |  | 21d | 0d |  | 庆 | 16h |  |
| 268 | 3.15.2.1 | 满意度面板移入订单面板，增加满意度时面板会闪一下 | 1d? | 2012-05-22 09:36 | 2012-05-23 09:36 |  |  |  | 11.5d |  | start no earlier than 2012-05-17 08:00 | 庆 | 8h |  |
| 269 | 3.15.3 | **合成模块** | 0.8d | 2012-05-23 09:36 | 2012-05-23 17:00 | 267 |  |  | 21d |  |  | 庆 | 12.8h |  |
| 270 | 3.15.3.1 | 合成面板上的标题换成工作台的名字 | 0.2d | 2012-05-23 09:36 | 2012-05-23 11:12 |  |  |  | 11.5d | 0d | start no earlier than 2012-05-17 08:00 | 庆 | 1.6h |  |
| 271 | 3.15.3.2 | 材料足时会有动效叠在合成物上，合成物上下飘动 | 0.2d | 2012-05-23 11:12 | 2012-05-23 13:48 | 270 |  |  | 11.5d | 0d | start no earlier than 2012-05-17 08:00 | 庆 | 1.6h |  |
| 272 | 3.15.3.3 | 开始合成时有一个动画 | 0.1d | 2012-05-23 13:48 | 2012-05-23 14:36 | 271 |  |  | 11.5d | 0d | start no earlier than 2012-05-17 08:00 | 庆 | 0.8h |  |
| 273 | 3.15.3.4 | 合成中面板里的合成物图标太大了，顶框了 | 0.1d | 2012-05-23 14:36 | 2012-05-23 15:24 | 272 |  |  | 21d | 0d | start no earlier than 2012-05-17 08:00 | 庆 | 0.8h |  |
| 274 | 3.15.3.5 | 合成完成的收取图标上下飘动，代码实现 | 0.2d | 2012-05-23 15:24 | 2012-05-23 17:00 | 273 |  |  | 21d |  | start no earlier than 2012-05-17 08:00 | 庆 | 1.6h |  |

| ID | WBS | Task | Duration | Start | Finish | Predecessors | Complete | Total slack | Free slack | Constraint | Resources | Work | Actual work |
| --- | --- | --- | --- | --- | --- | --- | --- | --- | --- | --- | --- | --- | --- |
| 275 | 3.15.4 | **图鉴面板** | 1d? | 2012-05-22 08:00 | 2012-05-22 17:00 |  |  | 20.6d | 0d |  | 诚 | 16h |  |
| 276 | 3.15.4.1 | 目录与内页之间切换时增加翻页动画 | 1d? | 2012-05-22 08:00 | 2012-05-22 17:00 |  |  | 11.1d |  | start no earlier than 2012-05-22 08:00 | 诚 | 8h |  |
| 277 | 3.15.5 | **仓库面板** | 0.3d | 2012-05-23 08:00 | 2012-05-23 10:24 | 275 |  | 20.6d | 0d |  | 诚 | 4.8h |  |
| 278 | 3.15.5.1 | 格子内道具的图标位置固定对齐 | 0.3d | 2012-05-23 08:00 | 2012-05-23 10:24 |  |  | 11.1d |  | start no earlier than 2012-05-17 08:00 | 诚 | 2.4h |  |
| 279 | 3.15.6 | 人物升级动画 | 0.2d | 2012-05-23 10:24 | 2012-05-23 12:00 | 277 |  | 20.6d | 0d | start no earlier than 2012-05-17 08:00 | 诚 | 1.6h |  |
| 280 | 3.15.7 | 所有建筑升级动画 | 0.2d | 2012-05-23 13:00 | 2012-05-23 14:36 | 279 |  | 11.1d | 0d | start no earlier than 2012-05-17 08:00 | 诚 | 1.6h |  |
| 281 | 3.15.8 | 人物晋级完成时有动画 | 0.2d | 2012-05-23 14:36 | 2012-05-23 16:12 | 280 |  | 20.6d | 0d | start no earlier than 2012-05-17 08:00 | 诚 | 1.6h |  |
| 282 | 3.15.9 | **场景相关** | 0.5d | 2012-05-23 16:12 | 2012-05-24 11:12 | 281 |  | 20.6d |  |  | 诚 | 8h |  |
| 283 | 3.15.9.1 | 场景切换打开幕布后，显示场景名动画 | 0.5d | 2012-05-23 16:12 | 2012-05-24 11:12 |  |  | 20.6d |  | start no earlier than 2012-05-17 08:00 | 诚 | 4h |  |
| 284 | 3.15.10 | **人物创建** | 0.5d | 2012-05-22 08:00 | 2012-05-22 12:00 | 255 |  | 22.3d | 0d |  | 琦 | 8h |  |
| 285 | 3.15.10.1 | 人物切进作效果，文字从右侧滑入 | 0.5d | 2012-05-22 08:00 | 2012-05-22 12:00 |  |  | 12.8d |  | start no earlier than 2012-05-17 08:00 | 琦 | 4h |  |
| 286 | 3.15.11 | **战斗模块** | 0.2d | 2012-05-22 13:00 | 2012-05-22 14:36 | 284 |  | 22.3d |  |  | 琦 | 3.2h |  |
| 287 | 3.15.11.1 | 战斗胜利、失败动画 | 0.2d | 2012-05-22 13:00 | 2012-05-22 14:36 |  |  | 12.8d |  | start no earlier than 2012-05-17 08:00 | 琦 | 1.6h |  |
| 288 | 3.16 | 得到新物品自动表现 | 0.5d | 2012-06-01 08:00 | 2012-06-01 12:00 |  |  | 5d |  | start no earlier than 2012-06-01 08:00 | 庆 | 4h |  |
| 289 | 3.17 | 场景切换动画 | 0.5d | 2012-05-28 08:00 | 2012-05-28 12:00 |  |  | 18d | 0d | start no earlier than 2012-05-28 08:00 | 琦 | 4h |  |
| 290 | 3.18 | loading外壳UI更换 | 0.5d | 2012-05-28 13:00 | 2012-05-28 17:00 | 289 |  | 8.5d |  | start no earlier than 2012-05-15 08:00 | 琦 | 4h |  |
| 291 | 3.19 | 剧情触发战斗 | 0.5d | 2012-06-04 08:00 | 2012-06-04 12:00 |  |  | 4d |  | start no earlier than 2012-06-04 08:00 | 夏 | 4h |  |
| 292 | 3.20 | 战斗胜利和失败的时候随机显示文字 | 0.2d | 2012-06-08 08:00 A | 2012-06-08 09:36 A |  | 100% |  |  | start no earlier than 2012-06-08 08:00 | 夏 | 1.6h | 1.6h |
| 293 | 3.21 | 战斗失败的时候，关闭后音乐不结束 | 0.2d | 2012-06-08 09:36 A | 2012-06-08 11:12 A | 292 | 100% |  |  | start no earlier than 2012-06-07 08:00 | 夏 | 1.6h | 1.6h |
| 294 | 3.22 | 战斗中好友援助技能的TIPS显示 | 0.1d | 2012-06-08 11:12 A | 2012-06-08 12:00 A | 293 | 100% |  |  | start no earlier than 2012-06-07 08:00 | 夏 | 0.8h | 0.8h |
| 295 | 3.23 | 保护开关点击后面板消失 | 0.2d | 2012-06-08 13:00 A | 2012-06-08 14:36 A | 294 | 100% |  |  | start no earlier than 2012-06-07 08:00 | 夏 | 1.6h | 1.6h |
| 296 | 3.24 | 战斗好友援助面板6级以上再显示 | 0.2d | 2012-06-08 14:36 A | 2012-06-08 16:12 A | 295 | 100% |  |  | start no earlier than 2012-06-07 08:00 | 夏 | 1.6h | 1.6h |
| 297 | 3.25 | 迷雾的记录刷新问题 | 0.5d | 2012-06-08 16:12 A | 2012-06-11 11:12 A | 296 | 100% |  |  | start no earlier than 2012-06-08 08:00 | 夏 | 4h | 4h |
| 298 | 3.26 | 战斗自动后，保持自动10回合，恢复手动后面有次数记录 | 1d? | 2012-06-11 08:00 A | 2012-06-11 17:00 A |  | 100% |  |  | start no earlier than 2012-06-11 08:00 | 夏 | 8h | 8h |
| 299 | 3.27 | 拖动地图增加距离判断，小拖动时仍能走动 | 0.3d | 2012-06-08 08:00 A | 2012-06-08 10:24 A |  | 100% |  |  | start no earlier than 2012-06-08 08:00 | 琦 | 2.4h | 2.4h |
| 300 | 3.28 | 菜单条UI更换 | 0.5d | 2012-06-08 10:24 A | 2012-06-08 15:24 A | 299 | 100% |  |  | start no earlier than 2012-06-07 08:00 | 琦 | 4h | 4h |
| 301 | 3.29 | 村庄的建筑TIPS 显示名字 | 0.1d | 2012-06-08 15:24 A | 2012-06-08 16:12 A | 300 | 100% |  |  | start no earlier than 2012-06-07 08:00 | 琦 | 0.8h | 0.8h |
| 302 | 3.30 | 自己村里需要出现雇佣的佣兵跑来跑去 | 0.2d | 2012-06-08 16:12 A | 2012-06-11 08:48 A | 301 | 100% |  |  | start no earlier than 2012-06-07 08:00 | 琦 | 1.6h | 1.6h |
| 303 | 3.31 | 主角站立不动5秒以上，会做随机休闲动作 | 0.2d | 2012-06-11 08:48 | 2012-06-11 10:24 | 302 |  | 2.2d | 0d | start no earlier than 2012-06-07 08:00 | 琦 | 1.6h |  |
| 304 | 3.32 | 战斗UI在战斗胜利或者失败的时候，立刻全部消失 | 0.2d | 2012-06-11 10:24 A | 2012-06-11 12:00 A | 303 | 100% |  |  | start no earlier than 2012-06-07 08:00 | 琦 | 1.6h | 1.6h |
| 305 | 3.33 | 战斗胜利面板奖品列表减少一位 | 0.2d | 2012-06-11 13:00 A | 2012-06-11 14:36 A | 304 | 100% |  |  | start no earlier than 2012-06-07 08:00 | 琦 | 1.6h | 1.6h |
| 306 | 3.34 | 入侵时好友家佣兵顶感叹泡 | 0.2d | 2012-06-11 14:36 A | 2012-06-11 16:12 A | 305 | 100% |  |  | start no earlier than 2012-06-07 08:00 | 琦 | 1.6h | 1.6h |
| 307 | 3.35 | 入侵时好友建筑OVER时红框，加手型 | 0.4d | 2012-06-11 16:12 A | 2012-06-12 10:24 A | 306 | 100% |  |  | start no earlier than 2012-06-07 08:00 | 琦 | 3.2h | 3.2h |
| 308 | 3.36 | 右侧中菜单条全屏时靠右 | 0.2d | 2012-06-12 10:24 A | 2012-06-12 12:00 A | 307 | 100% |  |  | start no earlier than 2012-06-07 08:00 | 琦 | 1.6h | 1.6h |
| 309 | 3.37 | 副本中体力为零时，停在原地表现无力，不可行动,等UI | 2d | 2012-06-12 13:00 | 2012-06-14 12:00 | 308 |  | 5.5d |  | start no earlier than 2012-06-12 08:00 | 琦 | 16h |  |
| 310 | 3.38 | 副本传送门增加进入条件（道具需求），条件不足飘字提示 | 0.25d | 2012-06-12 13:00 | 2012-06-12 15:00 | 308 |  | 2.25d |  | start no earlier than 2012-06-11 08:00 | 琦; 荣 | 4h |  |
| 311 | 3.39 | 副本洞穴的传送门TIPS增加等级范围 | 0.3d | 2012-06-12 13:00 | 2012-06-12 15:24 | 308 |  | 2.2d |  | start no earlier than 2012-06-07 08:00 | 荣; 琦 | 4.8h |  |
| 312 | 3.40 | 自动处理增加缓存后，之后再触发处理机制 | 0.5d | 2012-06-12 15:24 | 2012-06-13 10:24 | 311 |  | 1.7d |  | start no earlier than 2012-06-11 08:00 | 琦 | 4h |  |
| 313 | 3.41 | 老虎机拉杆动画 | 0.2d | 2012-06-08 08:00 A | 2012-06-08 09:36 A |  | 100% |  |  | start no earlier than 2012-06-08 08:00 | 诚 | 1.6h | 1.6h |
| 314 | 3.42 | 点击地图上的副本，鼠标划上时候，需要TIPS显示地名 | 0.2d | 2012-06-08 09:36 A | 2012-06-08 11:12 A | 313 | 100% |  |  | start no earlier than 2012-06-07 08:00 | 诚 | 1.6h | 1.6h |
| 315 | 3.43 | 战斗血包（急救箱）道具设置，血瓶、魔力瓶禁止在战斗外使用 | 0.8d | 2012-06-08 11:12 A | 2012-06-11 09:36 A | 314 | 100% |  |  | start no earlier than 2012-06-07 08:00 | 庆; 诚 | 12.8h | 12.8h |
| 316 | 3.44 | 世界地图的副本，进入条件：佣兵最低等级、经营等级、指定道具 | 0.6d | 2012-06-11 08:00 A | 2012-06-11 13:48 A |  | 100% |  |  | start no earlier than 2012-06-11 08:00 | 诚 | 4.8h | 4.8h |
| 317 | 3.45 | 血库系统,等UI，周四给 | 4d? | 2012-06-11 08:00 | 2012-06-14 17:00 |  |  | 5d |  | start no earlier than 2012-06-11 08:00 | 诚 | 32h |  |
| 318 | 3.46 | 佣兵面板CD时间未显示 | 0.2d | 2012-06-14 08:00 | 2012-06-14 09:36 | 242 |  | 3.6d | 0d | start no earlier than 2012-06-14 08:00 | 庆 | 1.6h |  |
| 319 | 3.47 | 培养佣兵面板，属性减时用-号显示 | 0.2d | 2012-06-14 09:36 | 2012-06-14 11:12 | 318 |  | 3.6d | 0d | start no earlier than 2012-06-07 08:00 | 庆 | 1.6h |  |
| 320 | 3.48 | 佣兵晋升面板条件不足的文字显红 | 0.1d | 2012-06-14 11:12 | 2012-06-14 12:00 | 319 |  | 3.6d | 0d | start no earlier than 2012-06-07 08:00 | 庆 | 0.8h |  |
| 321 | 3.49 | 立即刷新的订单的顾客立即出现，并订单面板不关闭 | 0.8d | 2012-06-14 13:00 | 2012-06-15 10:24 | 320 |  | 3.6d | 0d | start no earlier than 2012-06-07 08:00 | 庆 | 6.4h |  |
| 322 | 3.50 | 酒馆面板内两种刷新按钮位置换下 | 0.1d | 2012-06-15 10:24 | 2012-06-15 11:12 | 321 |  | 3.6d | 0d | start no earlier than 2012-06-07 08:00 | 庆 | 0.8h |  |
| 323 | 3.51 | 在物品装备里点装备，选人，然后跳到人物面板（详细需求） | 1d? | 2012-06-15 11:12 | 2012-06-18 11:12 | 322 |  | 3.6d |  | start no earlier than 2012-06-07 08:00 | 庆; 诚 | 16h |  |
| 324 | 3.52 | 装备的属性数据改为实例数据 | 0.5d | 2012-06-14 09:36 | 2012-06-14 14:36 | 318 |  | 5.3d |  | start no earlier than 2012-06-12 08:00 | 庆; 诚 | 8h |  |
| 325 | 3.53 | 大攻击时击飞 | 1d? | 2012-06-21 08:00 | 2012-06-21 17:00 |  |  | 0d |  | start no earlier than 2012-06-21 08:00 | 夏 | 8h |  |
| 326 | 3.54 | 采矿道具随机损坏 | 1d? | 2012-06-21 08:00 | 2012-06-21 17:00 |  |  | 0d |  | start no earlier than 2012-06-21 08:00 | 琦; 夏 | 16h |  |

| ID | WBS | Task | Duration | Start | Finish | Predecessors | Total slack | Free slack | Constraint | Resources | Work |
| --- | --- | --- | --- | --- | --- | --- | --- | --- | --- | --- | --- |
| 327 | 3.55 | **UI优化的更换** | 0.8d | 2012-06-12 08:00 | 2012-06-12 15:24 |  | 7.2d |  |  |  | 6.4h |
| 328 | 3.55.1 | loading与场景切换更换 | 0.8d | 2012-06-12 08:00 | 2012-06-12 15:24 |  | 7.2d |  | start no earlier than 2012-06-12 08:00 | 琦 | 6.4h |
| 329 | 4 | **运维支持功能** | 38d? | 2012-04-24 08:00 | 2012-06-15 17:00 |  | 4d |  |  |  | 220.8h |
| 330 | 4.1 | 战斗脚本数据 | 2d | 2012-04-24 08:00 | 2012-04-25 17:00 |  | 24.5d | 0d | start no earlier than 2012-04-24 08:00 | 夏 | 16h |
| 331 | 4.2 | 场景编辑器增加移动物体 | 0.5d | 2012-04-27 08:00 | 2012-04-27 12:00 | 192 | 25.5d | 0d | start no earlier than 2012-04-25 08:00 | 琦 | 4h |
| 332 | 4.3 | 地板的自动转角 | 1.5d | 2012-04-27 13:00 | 2012-04-28 17:00 | 331 | 25.5d | 0d | start no earlier than 2012-04-25 08:00 | 琦 | 12h |
| 333 | 4.4 | 编辑器功能增强 | 2d? | 2012-05-02 08:00 | 2012-05-03 17:00 | 332 | 35d |  | start no earlier than 2012-05-02 08:00 | 琦 | 16h |
| 334 | 4.5 | **剧情编辑器** | 7.5d? | 2012-05-30 08:00 | 2012-06-08 12:00 |  | 9.5d |  |  |  | 72h |
| 335 | 4.5.1 | 需求分析 | 1d? | 2012-05-30 08:00 | 2012-05-30 17:00 |  | 9.5d | 0d | start no earlier than 2012-05-30 08:00 |  |  |
| 336 | 4.5.2 | **功能开发** | 6.5d? | 2012-05-31 08:00 | 2012-06-08 12:00 | 335 | 9.5d |  |  |  | 72h |
| 337 | 4.5.2.1 | 整体UI | 0.5d | 2012-05-31 08:00 | 2012-05-31 12:00 |  | 9.5d | 0d | start no earlier than 2012-05-30 08:00 | 琦 | 4h |
| 338 | 4.5.2.2 | 脚本的解析与生成 | 1.5d | 2012-05-31 13:00 | 2012-06-01 17:00 | 337 | 9.5d | 0d | start no earlier than 2012-05-30 08:00 | 琦 | 12h |
| 339 | 4.5.2.3 | 脚本grid与脚本操作 | 1.5d | 2012-06-04 08:00 | 2012-06-05 12:00 | 338 | 9.5d | 0d | start no earlier than 2012-05-30 08:00 | 琦 | 12h |
| 340 | 4.5.2.4 | 单个动作编辑与角色编辑 | 1d | 2012-06-05 13:00 | 2012-06-06 12:00 | 339 | 9.5d | 0d | start no earlier than 2012-05-30 08:00 | 琦 | 8h |
| 341 | 4.5.2.5 | 数据输出保存 | 0.5d | 2012-06-06 13:00 | 2012-06-06 17:00 | 340 | 9.5d | 0d | start no earlier than 2012-05-30 08:00 | 琦 | 4h |
| 342 | 4.5.2.6 | 场景显示 | 0.5d | 2012-06-05 08:00 | 2012-06-05 12:00 |  | 10.5d | 0d | start no earlier than 2012-06-05 08:00 | 夏 | 4h |
| 343 | 4.5.2.7 | 剧情播放 | 0.5d | 2012-06-05 13:00 | 2012-06-05 17:00 | 342 | 10.5d | 1d | start no earlier than 2012-05-30 08:00 | 夏 | 4h |
| 344 | 4.5.2.8 | 整体联调 | 1d? | 2012-06-07 08:00 | 2012-06-07 17:00 | 343, 341 | 9.5d | 0d | start no earlier than 2012-05-30 08:00 | 琦; 夏 | 16h |
| 345 | 4.5.2.9 | 脚本中途角色状态显示 | 0.5d | 2012-06-08 08:00 | 2012-06-08 12:00 | 344 | 9.5d |  | start no earlier than 2012-05-30 08:00 | 夏; 琦 | 8h |
| 346 | 4.6 | **战斗脚本编辑器** | 4d? | 2012-06-12 08:00 | 2012-06-15 17:00 |  | 4d |  |  | 夏 | 72h |
| 347 | 4.6.1 | 脚本的数据读取与保存 | 1d? | 2012-06-12 08:00 | 2012-06-12 17:00 |  | 5d | 0d | start no earlier than 2012-06-12 08:00 | 夏 | 8h |
| 348 | 4.6.2 | 技能表现脚本编辑 | 1d? | 2012-06-13 08:00 | 2012-06-13 17:00 | 347 | 5d | 0d | start no earlier than 2012-06-12 08:00 | 夏 | 8h |
| 349 | 4.6.3 | 技术表现的预览 | 1d | 2012-06-14 08:00 | 2012-06-14 17:00 | 348 | 5d |  | start no earlier than 2012-06-12 08:00 | 夏 | 8h |
| 350 | 4.6.4 | 修改与数据编辑 | 1d? | 2012-06-15 08:00 | 2012-06-15 17:00 | 349 | 4d |  | start no earlier than 2012-06-12 08:00 | 夏; ERIC | 16h |

| ID | WBS | Task | Duration | Start | Finish | Predecessors | Total slack | Free slack | Constraint | Resources | Work |
| --- | --- | --- | --- | --- | --- | --- | --- | --- | --- | --- | --- |
| 351 | 4.7 | **地图编辑器** | 1.8d | 2012-06-12 08:00 | 2012-06-13 15:24 |  | 6.2d |  |  | 琦 | 28.8h |
| 352 | 4.7.1 | 拖动快捷键 | 0.5d | 2012-06-12 08:00 | 2012-06-12 12:00 |  | 6.2d | 0d | start no earlier than 2012-06-12 08:00 | 琦 | 4h |
| 353 | 4.7.2 | 撤消 | 0.8d | 2012-06-12 13:00 | 2012-06-13 10:24 | 352 | 6.2d | 0d | start no earlier than 2012-06-12 08:00 | 琦 | 6.4h |
| 354 | 4.7.3 | 扩展地图 | 0.5d | 2012-06-13 10:24 | 2012-06-13 15:24 | 353 | 6.2d |  | start no earlier than 2012-06-12 08:00 | 琦 | 4h |
